# PROJECT GENERICO

Schedule from MS Project XML, 2025-07-23 to 2026-01-08, A marks actual dates.

## Calendars

- Calendario Argentino 2024: Mon-Fri 09:00-13:00, 15:00-19:00; Sat-Sun off. Exceptions (off unless hours are given): 2024-12-25 to 2033-12-25 (Navidad, recurring), 2025-01-01 to 2034-01-01 (Año nuevo 2025, recurring), 2025-02-10 to 2034-02-10 (Carnaval 2025, recurring), 2025-03-24 to 2034-03-24 (Día Nacional de la Memoria por la Verdad y la Justicia, recurring), 2025-04-02 to 2034-04-02 (Día del Veterano y de los Caídos en la Guerra de Malvinas, recurring), 2025-05-01 to 2034-05-01 (Día del Trabajador, recurring), 2025-05-25 to 2034-05-25 (Dia de la revolucion de Mayo, recurring), 2025-06-20 to 2034-06-20 (Día de la Bandera, recurring), 2025-07-09 to 2034-07-09 (Día de la Independencia, recurring), 2025-08-18 to 2034-08-18 (Paso a la Inmortalidad del Gral. José de San Martín (17/08), recurring), 2025-10-13 to 2034-10-13 (Día del Respeto a la Diversidad Cultural (12/10), recurring), 2025-11-18 to 2034-11-18 (Día de la Soberanía Nacional (20/11), recurring), 2025-12-08 to 2034-12-08 (Día de la Virgen, recurring).

## Resources

| Resource |
| --- |
| Mariana V |

## Schedule

| ID | WBS | Task | Duration | Start | Finish | Predecessors | Complete | Baseline start | Baseline finish | Baseline duration | Constraint | Resources | Work | Actual work |
| --- | --- | --- | --- | --- | --- | --- | --- | --- | --- | --- | --- | --- | --- | --- |
| 1 | 1 | **LOSA HERRERA** | 116d? | 2025-07-23 A | 2026-01-08 A |  | 100% | 2025-07-23 | 2026-01-08 | 116d? |  |  | 4784h | 4784h |
| 2 | 1.1 | **✔Obra Losa Herrera** | 30d | 2025-07-23 A | 2025-09-03 A |  | 100% | 2025-07-23 | 2025-09-03 | 30d |  |  | 2872h | 2872h |
| 3 | 1.1.1 | **Pases plomería** | 9d | 2025-08-18 A | 2025-08-29 A |  | 100% | 2025-08-18 | 2025-08-29 | 9d |  |  | 176h | 176h |
| 4 | 1.1.1.1 | ✔Pases Cloacales PB | 10d | 2025-08-18 A | 2025-08-29 A | 29 | 100% | 2025-08-18 | 2025-08-29 | 10d | start no earlier than 2025-08-18 | Mariana V | 80h | 80h |
| 5 | 1.1.1.2 | ✔Pases Agua PB | 10d | 2025-08-18 A | 2025-08-29 A | 29 | 100% | 2025-08-18 | 2025-08-29 | 10d |  | Mariana V | 80h | 80h |
| 6 | 1.1.1.3 | ✔Pases A°A° PB | 2d | 2025-08-18 A | 2025-08-19 A | 29 | 100% | 2025-08-18 | 2025-08-19 | 2d |  | Mariana V | 16h | 16h |
| 7 | 1.1.2 | **Pases Electricidad** | 2d | 2025-08-18 A | 2025-08-20 A |  | 100% | 2025-08-18 | 2025-08-20 | 2d |  |  | 24h | 24h |
| 8 | 1.1.2.1 | ✔Pases Electricidad PB | 3d | 2025-08-18 A | 2025-08-20 A | 29 | 100% | 2025-08-18 | 2025-08-20 | 3d |  | Mariana V | 24h | 24h |
| 9 | 1.1.3 | **Vigas H°A° PB** | 25d | 2025-07-23 A | 2025-08-27 A |  | 100% | 2025-07-23 | 2025-08-27 | 25d |  |  | 1728h | 1728h |
| 10 | 1.1.3.1 | ✔Viga 1 - 0,80*0,40 | 8d | 2025-07-23 A | 2025-08-01 A |  | 100% | 2025-07-23 | 2025-08-01 | 8d | start no earlier than 2025-07-23 | Mariana V | 64h | 64h |
| 11 | 1.1.3.2 | ✔Viga 2 - 0,80 * 0,35 | 8d | 2025-07-23 A | 2025-08-01 A |  | 100% | 2025-07-23 | 2025-08-01 | 8d | start no earlier than 2025-07-23 | Mariana V | 64h | 64h |
| 12 | 1.1.3.3 | ✔Viga 3 - 0,80 * 0,35 | 8d | 2025-07-23 A | 2025-08-01 A |  | 100% | 2025-07-23 | 2025-08-01 | 8d | start no earlier than 2025-07-23 | Mariana V | 64h | 64h |
| 13 | 1.1.3.4 | ✔Viga 5 - 0,60 * 0,30 | 8d | 2025-08-06 A | 2025-08-15 A | 12FS+2d | 100% | 2025-08-06 | 2025-08-15 | 8d |  | Mariana V | 64h | 64h |
| 14 | 1.1.3.5 | ✔Viga 6 - 0,70 * 0,35 | 8d | 2025-08-06 A | 2025-08-15 A | 12FS+2d | 100% | 2025-08-06 | 2025-08-15 | 8d |  | Mariana V | 64h | 64h |
| 15 | 1.1.3.6 | ✔Viga 7 - 0,35 * 0,30 | 8d | 2025-08-06 A | 2025-08-15 A | 12FS+2d | 100% | 2025-08-06 | 2025-08-15 | 8d |  | Mariana V | 64h | 64h |
| 16 | 1.1.3.7 | ✔Viga 8 - 0,18 * 0,30 | 8d | 2025-08-06 A | 2025-08-15 A | 12FS+2d | 100% | 2025-08-06 | 2025-08-15 | 8d |  | Mariana V | 64h | 64h |
| 17 | 1.1.3.8 | ✔Viga 10 - 0,12 * 0,22 | 8d | 2025-08-06 A | 2025-08-15 A | 12FS+2d | 100% | 2025-08-06 | 2025-08-15 | 8d |  | Mariana V | 64h | 64h |
| 18 | 1.1.3.9 | ✔Viga 13 - 0,30 * 0,30 | 8d | 2025-08-06 A | 2025-08-15 A | 12FS+2d | 100% | 2025-08-06 | 2025-08-15 | 8d |  | Mariana V | 64h | 64h |
| 19 | 1.1.3.10 | ✔Viga 14 - 0,14 * 0,30 | 8d | 2025-08-06 A | 2025-08-15 A | 12FS+2d | 100% | 2025-08-06 | 2025-08-15 | 8d |  | Mariana V | 64h | 64h |
| 20 | 1.1.3.11 | ✔Viga 15 - 0,28 * 1,10 | 8d | 2025-08-06 A | 2025-08-15 A | 12FS+2d | 100% | 2025-08-06 | 2025-08-15 | 8d |  | Mariana V | 64h | 64h |
| 21 | 1.1.3.12 | ✔Viga 16 - 0,25 * 0,30 | 8d | 2025-08-06 A | 2025-08-15 A | 12FS+2d | 100% | 2025-08-06 | 2025-08-15 | 8d |  | Mariana V | 64h | 64h |
| 22 | 1.1.3.13 | ✔Viga 17 - 0,25 * 0,30 | 8d | 2025-08-06 A | 2025-08-15 A | 12FS+2d | 100% | 2025-08-06 | 2025-08-15 | 8d |  | Mariana V | 64h | 64h |
| 23 | 1.1.3.14 | ✔Viga 18 - 0,18 * 0,30 | 8d | 2025-08-06 A | 2025-08-15 A | 12FS+2d | 100% | 2025-08-06 | 2025-08-15 | 8d |  | Mariana V | 64h | 64h |
| 24 | 1.1.3.15 | ✔Viga 19 - 0,30 * 0,30 | 8d | 2025-08-06 A | 2025-08-15 A | 12FS+2d | 100% | 2025-08-06 | 2025-08-15 | 8d |  | Mariana V | 64h | 64h |
| 25 | 1.1.3.16 | ✔Viga 20 - 0,60 * 0,30 | 8d | 2025-08-06 A | 2025-08-15 A | 12FS+2d | 100% | 2025-08-06 | 2025-08-15 | 8d |  | Mariana V | 64h | 64h |
| 26 | 1.1.3.17 | ✔Viga 21 - 0,40 * 0,30 | 8d | 2025-08-06 A | 2025-08-15 A | 12FS+2d | 100% | 2025-08-06 | 2025-08-15 | 8d |  | Mariana V | 64h | 64h |
| 27 | 1.1.3.18 | ✔Viga 22 - 0,80 * 0,45 | 8d | 2025-08-06 A | 2025-08-15 A | 12FS+2d | 100% | 2025-08-06 | 2025-08-15 | 8d |  | Mariana V | 64h | 64h |
| 28 | 1.1.3.19 | ✔Viga 23 - 0,18 * 0,30 | 8d | 2025-08-06 A | 2025-08-15 A | 12FS+2d | 100% | 2025-08-06 | 2025-08-15 | 8d |  | Mariana V | 64h | 64h |
| 29 | 1.1.3.20 | ✔Viga 24 - 0,18 * 0,30 | 8d | 2025-08-06 A | 2025-08-15 A | 12FS+2d | 100% | 2025-08-06 | 2025-08-15 | 8d |  | Mariana V | 64h | 64h |
| 30 | 1.1.3.21 | ✔NB1 - 0,15 * 0,45 | 8d | 2025-08-18 A | 2025-08-27 A | 29 | 100% | 2025-08-18 | 2025-08-27 | 8d |  | Mariana V | 64h | 64h |
| 31 | 1.1.3.22 | ✔NB4 - 0,20 * 0,35 | 8d | 2025-08-18 A | 2025-08-27 A | 29 | 100% | 2025-08-18 | 2025-08-27 | 8d |  | Mariana V | 64h | 64h |
| 32 | 1.1.3.23 | ✔EH - 0,18 * 0,30 | 8d | 2025-08-18 A | 2025-08-27 A | 29 | 100% | 2025-08-18 | 2025-08-27 | 8d |  | Mariana V | 64h | 64h |
| 33 | 1.1.3.24 | ✔EH1 - 0,18 * 0,30 | 8d | 2025-08-18 A | 2025-08-27 A | 29 | 100% | 2025-08-18 | 2025-08-27 | 8d |  | Mariana V | 64h | 64h |
| 34 | 1.1.3.25 | ✔EH2 - 0,18 * 0,30 | 8d | 2025-08-18 A | 2025-08-27 A | 29 | 100% | 2025-08-18 | 2025-08-27 | 8d |  | Mariana V | 64h | 64h |
| 35 | 1.1.3.26 | ✔EH3 - 0,35 * 0,30 | 8d | 2025-08-18 A | 2025-08-27 A | 29 | 100% | 2025-08-18 | 2025-08-27 | 8d |  | Mariana V | 64h | 64h |
| 36 | 1.1.3.27 | ✔EH3 - 0,18 * 0,30 | 8d | 2025-08-18 A | 2025-08-27 A | 29 | 100% | 2025-08-18 | 2025-08-27 | 8d |  | Mariana V | 64h | 64h |

| ID | WBS | Task | Type | Duration | Start | Finish | Predecessors | Complete | Baseline start | Baseline finish | Baseline duration | Constraint | Resources | Work | Actual work |
| --- | --- | --- | --- | --- | --- | --- | --- | --- | --- | --- | --- | --- | --- | --- | --- |
| 37 | 1.1.4 | **Losa PB** |  | 27d | 2025-07-28 A | 2025-09-03 A |  | 100% | 2025-07-28 | 2025-09-03 | 27d |  |  | 896h | 896h |
| 38 | 1.1.4.1 | ✔LOSAS MACIZAS DE HORMIGON VISTO e:10cm. |  | 28d | 2025-07-28 A | 2025-09-03 A | 43SS+2d | 100% | 2025-07-28 | 2025-09-03 | 28d |  | Mariana V | 224h | 224h |
| 39 | 1.1.4.2 | ✔LOSAS MACIZAS DE HORMIGON VISTO e:15cm. |  | 28d | 2025-07-28 A | 2025-09-03 A | 43SS+2d | 100% | 2025-07-28 | 2025-09-03 | 28d |  | Mariana V | 224h | 224h |
| 40 | 1.1.4.3 | ✔LOSA NERVURADA 30 CM. VISTA |  | 28d | 2025-07-28 A | 2025-09-03 A | 43SS+2d | 100% | 2025-07-28 | 2025-09-03 | 28d |  | Mariana V | 224h | 224h |
| 41 | 1.1.4.4 | ✔LOSA NERVURADA 35 CM. VISTA |  | 28d | 2025-07-28 A | 2025-09-03 A | 43SS+2d | 100% | 2025-07-28 | 2025-09-03 | 28d |  | Mariana V | 224h | 224h |
| 42 | 1.1.5 | **Encofrados** |  | 6d | 2025-07-24 A | 2025-07-31 A |  | 100% | 2025-07-24 | 2025-07-31 | 6d |  |  | 48h | 48h |
| 43 | 1.1.5.1 | ✔ENCOFRADOS PARA TODA LA LOSA |  | 6d | 2025-07-24 A | 2025-07-31 A |  | 100% | 2025-07-24 | 2025-07-31 | 6d | start no earlier than 2025-07-24 | Mariana V | 48h | 48h |
| 44 | 1.2 | ✔Inicio Obra adicional | milestone | 0d | 2025-10-01 A | 2025-10-01 A |  | 100% | 2025-10-01 | 2025-10-01 |  | start no earlier than 2025-10-01 | Mariana V |  |  |
| 45 | 1.3 | **✔Adicional Tabiques** |  | 67d? | 2025-10-01 A | 2026-01-08 A |  | 100% | 2025-10-01 | 2026-01-08 | 67d? |  |  | 1912h | 1912h |
| 46 | 1.3.1 | **VIGAS Y ENCADENADOS** |  | 33d | 2025-10-01 A | 2025-11-17 A |  | 100% | 2025-10-01 | 2025-11-17 | 33d |  |  | 1256h | 1256h |
| 47 | 1.3.1.1 | Viga 32 - 0,18 * 0,55 |  | 13d | 2025-10-30 A | 2025-11-17 A | 63SS+5d | 100% | 2025-10-30 | 2025-11-17 | 13d |  | Mariana V | 104h | 104h |
| 48 | 1.3.1.2 | Viga 34 - 0,18 * 0,22 |  | 13d | 2025-10-30 A | 2025-11-17 A | 63SS+5d | 100% | 2025-10-30 | 2025-11-17 | 13d |  | Mariana V | 104h | 104h |
| 49 | 1.3.1.3 | Viga 36 - 0,25 * 0,22 |  | 13d | 2025-10-30 A | 2025-11-17 A | 63SS+5d | 100% | 2025-10-30 | 2025-11-17 | 13d |  | Mariana V | 104h | 104h |
| 50 | 1.3.1.4 | Viga 39 - 0,18 * 0,55 |  | 13d | 2025-10-30 A | 2025-11-17 A | 63SS+5d | 100% | 2025-10-30 | 2025-11-17 | 13d |  | Mariana V | 104h | 104h |
| 51 | 1.3.1.5 | Viga 41 - 0,40 * 0,55 |  | 13d | 2025-10-30 A | 2025-11-17 A | 63SS+5d | 100% | 2025-10-30 | 2025-11-17 | 13d |  | Mariana V | 104h | 104h |
| 52 | 1.3.1.6 | Viga 42 - 0,18 * 0,55 |  | 13d | 2025-10-30 A | 2025-11-17 A | 63SS+5d | 100% | 2025-10-30 | 2025-11-17 | 13d |  | Mariana V | 104h | 104h |
| 53 | 1.3.1.7 | Viga 43 - 0,25 * 0,22 |  | 13d | 2025-10-30 A | 2025-11-17 A | 63SS+5d | 100% | 2025-10-30 | 2025-11-17 | 13d |  | Mariana V | 104h | 104h |
| 54 | 1.3.1.8 | Viga 44 - 0,18 * 0,40 |  | 13d | 2025-10-30 A | 2025-11-17 A | 63SS+5d | 100% | 2025-10-30 | 2025-11-17 | 13d |  | Mariana V | 104h | 104h |
| 55 | 1.3.1.9 | NB2 - 0,15*0,55 |  | 13d | 2025-10-30 A | 2025-11-17 A | 63SS+5d | 100% | 2025-10-30 | 2025-11-17 | 13d |  | Mariana V | 104h | 104h |
| 56 | 1.3.1.10 | NB3 - 0,15*0,40 |  | 13d | 2025-10-30 A | 2025-11-17 A | 63SS+5d | 100% | 2025-10-30 | 2025-11-17 | 13d |  | Mariana V | 104h | 104h |
| 57 | 1.3.1.11 | EH - 0,18*0,30 |  | 27d | 2025-10-01 A | 2025-11-06 A | 44 | 100% | 2025-10-01 | 2025-11-07 | 27d |  | Mariana V | 216h | 216h |
| 58 | 1.3.2 | **LOSAS** |  | 17d | 2025-11-10 A | 2025-12-03 A |  | 100% | 2025-11-10 | 2025-12-03 | 17d |  |  | 144h | 144h |
| 59 | 1.3.2.1 | LOSA NERVURADA 30 CM. VISTA |  | 18d | 2025-11-10 A | 2025-12-03 A | 57 | 100% | 2025-11-10 | 2025-12-03 | 18d |  | Mariana V | 144h | 144h |
| 60 | 1.3.3 | **LOSAS** |  | 31d | 2025-10-01 A | 2025-11-13 A |  | 100% | 2025-10-01 | 2025-11-13 | 31d |  |  | 264h | 264h |
| 61 | 1.3.3.1 | ✔TAB 1. H° esp. - 35cm |  | 12d | 2025-10-01 A | 2025-10-16 A | 44 | 100% | 2025-10-01 | 2025-10-17 | 12d |  | Mariana V | 96h | 96h |
| 62 | 1.3.3.2 | Demora de H° |  | 5d | 2025-11-07 A | 2025-11-13 A |  | 100% | 2025-11-07 | 2025-11-13 | 5d | start no earlier than 2025-11-07 | Mariana V | 40h | 40h |
| 63 | 1.3.3.3 | TAB 2 H° esp - 13cm |  | 16d | 2025-10-23 A | 2025-11-13 A | 62FF | 100% | 2025-10-23 | 2025-11-13 | 16d | start no earlier than 2025-10-22 | Mariana V | 128h | 128h |

| ID | WBS | Task | Duration | Start | Finish | Predecessors | Complete | Baseline start | Baseline finish | Baseline duration | Resources | Work | Actual work |
| --- | --- | --- | --- | --- | --- | --- | --- | --- | --- | --- | --- | --- | --- |
| 64 | 1.3.4 | **REPLANTEO Y UBICACIÓN DE COLUMNAS** | 31d? | 2025-10-01 A | 2025-11-13 A |  | 100% | 2025-10-01 | 2025-11-13 | 31d? |  | 232h | 232h |
| 65 | 1.3.4.1 | ARRANQUES DE COLUMNAS DE HORMIGON | 1d? | 2025-10-01 A | 2025-10-01 A | 57SS | 100% | 2025-10-01 | 2025-10-01 | 1d? | Mariana V | 8h | 8h |
| 66 | 1.3.4.2 | ARRANQUES DE COLUMNAS METÁLICAS | 1d? | 2025-10-01 A | 2025-10-01 A | 67SS | 100% | 2025-10-01 | 2025-10-01 | 1d? | Mariana V | 8h | 8h |
| 67 | 1.3.4.3 | COLUMNAS Ce3 | 27d | 2025-10-01 A | 2025-11-13 A | 63FF | 100% | 2025-10-01 | 2025-11-13 | 27d | Mariana V | 216h | 216h |
| 68 | 1.3.5 | **ENCOFRADOS** | 31d? | 2025-11-24 A | 2026-01-08 A |  | 100% | 2025-11-24 | 2026-01-08 | 31d? |  | 16h | 16h |
| 69 | 1.3.5.1 | ENCOFRADOS PARA TABIQUES | 1d? | 2025-11-24 A | 2025-11-24 A | 60FS+5d | 100% | 2025-11-24 | 2025-11-24 | 1d? | Mariana V | 8h | 8h |
| 70 | 1.3.5.2 | ENCOFRADOS PARA TODA LA LOSA | 1d? | 2026-01-08 A | 2026-01-08 A | 59FS+35ed | 100% | 2026-01-08 | 2026-01-08 | 1d? | Mariana V | 8h | 8h |
