# Loteo - La Vicenta

Schedule from MS Project XML, 2024-12-01 to 2029-09-25, A marks actual dates.

## Calendars

- Calendario Argentino 2024: Mon-Fri 09:00-13:00, 15:00-19:00; Sat-Sun off. Exceptions (off unless hours are given): 2024-12-25 to 2033-12-25 (Navidad, recurring), 2025-01-01 to 2034-01-01 (Año nuevo 2025, recurring), 2025-02-10 to 2034-02-10 (Carnaval 2025, recurring), 2025-03-24 to 2034-03-24 (Día Nacional de la Memoria por la Verdad y la Justicia, recurring), 2025-03-28 (Viernes Santo), 2025-04-02 to 2034-04-02 (Día del Veterano y de los Caídos en la Guerra de Malvinas, recurring), 2025-05-01 to 2034-05-01 (Día del Trabajador, recurring), 2025-05-25 to 2034-05-25 (Dia de la revolucion de Mayo, recurring), 2025-06-20 to 2034-06-20 (Día de la Bandera, recurring), 2025-07-09 to 2034-07-09 (Día de la Independencia, recurring), 2025-08-18 to 2034-08-18 (Paso a la Inmortalidad del Gral. José de San Martín (17/08), recurring), 2025-10-13 to 2034-10-13 (Día del Respeto a la Diversidad Cultural (12/10), recurring), 2025-11-18 to 2034-11-18 (Día de la Soberanía Nacional (20/11), recurring), 2025-12-08 to 2034-12-08 (Día de la Virgen, recurring).

## Resources

| Resource |
| --- |
| Proyectos |
| Gabriela Rojo |
| Obras |

## Schedule

| ID | WBS | Task | Duration | Start | Finish | Predecessors | Complete | Remaining | Total slack | Free slack | Constraint | Resources | Work | Actual work |
| --- | --- | --- | --- | --- | --- | --- | --- | --- | --- | --- | --- | --- | --- | --- |
| 1 | 1 | **LOTEO LA VINCENTA** | 1200d | 2024-12-01 A | 2029-09-25 |  | 38% | 738.08d | 0d |  |  |  | 31304h | 20138.4h |
| 2 | 1.1 | **Loteo** | 808d | 2024-12-02 A | 2028-03-06 |  | 30% | 561.77d | 392d |  |  |  | 6832h | 698.4h |
| 3 | 1.1.1 | **Anteproyecto** | 403d | 2024-12-02 A | 2026-07-25 |  | 45% | 221.65d | 0d |  |  | Proyectos | 1552h | 698.4h |
| 4 | 1.1.1.1 | ✔Armado de Anteproyecto Loteo | 9emo | 2024-12-02 A | 2025-08-29 A |  | 100% |  |  |  | start no earlier than 2024-12-02 |  |  |  |
| 5 | 1.1.1.2 | StandBy por Dueño de Loteo | 11emo | 2025-08-29 | 2026-07-25 | 4 |  |  | 6d |  |  |  |  |  |
| 6 | 1.1.2 | **Redes Infraestructura** | 405d | 2026-07-27 | 2028-03-06 |  |  |  | 0d |  |  |  | 5280h |  |
| 7 | 1.1.2.1 | **Red Vial** | 235d | 2026-07-27 | 2027-07-02 |  |  |  | 0d |  |  |  | 1760h |  |
| 8 | 1.1.2.1.1 | **Proyecto Red Vial** | 137d | 2026-07-27 | 2027-02-11 |  |  |  | 0d |  |  |  | 880h |  |
| 9 | 1.1.2.1.1.1 | Contratación Proyectista Red Vial | 33d | 2026-07-27 | 2026-09-10 | 5 |  |  | 0d |  |  |  |  |  |
| 10 | 1.1.2.1.1.2 | Armado de proyecto de Red Vial | 66d | 2026-09-11 | 2026-12-11 | 9 |  |  | 0d |  |  | Proyectos | 528h |  |
| 11 | 1.1.2.1.1.3 | Aprobación de Proyecto en Ente Red Vial | 44d | 2026-12-14 | 2027-02-11 | 10 |  |  | 657d |  |  | Proyectos | 352h |  |
| 12 | 1.1.2.1.2 | **Obra Red Vial** | 139d | 2026-12-14 | 2027-07-02 |  |  |  | 0d |  |  |  | 880h |  |
| 13 | 1.1.2.1.2.1 | Contratación Proveedor - Obra Red Vial | 33d | 2026-12-14 | 2027-01-29 | 10 |  |  | 0d |  |  |  |  |  |
| 14 | 1.1.2.1.2.2 | "Obra Red Vial" | 88d | 2027-02-01 | 2027-06-02 | 13 |  |  | 0d |  |  | Proyectos | 704h |  |
| 15 | 1.1.2.1.2.3 | Final de Obra en Ente Red Vial | 22d | 2027-06-03 | 2027-07-02 | 14 |  |  | 562d |  |  | Obras | 176h |  |
| 16 | 1.1.2.2 | **Agua** | 320d | 2026-07-27 | 2027-11-03 |  |  |  | 84d |  |  |  | 1760h |  |
| 17 | 1.1.2.2.1 | **Proyecto Agua** | 140d | 2026-07-27 | 2027-02-16 |  |  |  | 84d |  |  |  | 880h |  |
| 18 | 1.1.2.2.1.1 | Contratación Proyectista Agua | 33d | 2026-07-27 | 2026-09-10 | 5 |  |  | 84d | 0d |  |  |  |  |
| 19 | 1.1.2.2.1.2 | Armado de proyecto de Agua | 66d | 2026-09-11 | 2026-12-11 | 18 |  |  | 84d | 0d |  | Proyectos | 528h |  |
| 20 | 1.1.2.2.1.3 | Aprobación de Proyecto de Agua en Ente | 44d | 2026-12-14 | 2027-02-16 | 19 |  |  | 657d |  |  | Gabriela Rojo | 352h |  |
| 21 | 1.1.2.2.2 | **Obra Agua** | 224d | 2026-12-14 | 2027-11-03 |  |  |  | 84d |  |  |  | 880h |  |
| 22 | 1.1.2.2.2.1 | Contratación Proveedor - Obra Agua | 33d | 2026-12-14 | 2027-01-29 | 19 |  |  | 84d |  |  |  |  |  |
| 23 | 1.1.2.2.2.2 | "Obra Red de Agua" | 88d | 2027-06-03 | 2027-10-04 | 22, 14 |  |  | 0d |  |  | Obras | 704h |  |
| 24 | 1.1.2.2.2.3 | Final de Obra en Ente Red de Agua | 22d | 2027-10-05 | 2027-11-03 | 23 |  |  | 476d |  |  | Obras | 176h |  |

| ID | WBS | Task | Duration | Start | Finish | Predecessors | Complete | Remaining | Total slack | Free slack | Constraint | Resources | Work | Actual work |
| --- | --- | --- | --- | --- | --- | --- | --- | --- | --- | --- | --- | --- | --- | --- |
| 25 | 1.1.2.3 | **Red Eléctrica y Alumbrado Público** | 405d | 2026-07-27 | 2028-03-06 |  |  |  | 170d |  |  |  | 1760h |  |
| 26 | 1.1.2.3.1 | **Proyecto Red Eléctrica y Alumbrado Público** | 137d | 2026-07-27 | 2027-02-11 |  |  |  | 170d |  |  |  | 880h |  |
| 27 | 1.1.2.3.1.1 | Contratación Proyectista Red Eléctrica y Alumbrado Público | 33d | 2026-07-27 | 2026-09-10 | 5 |  |  | 170d | 0d |  |  |  |  |
| 28 | 1.1.2.3.1.2 | Armado de proyecto de Red Eléctrica y Alumbrado Público | 66d | 2026-09-11 | 2026-12-11 | 27 |  |  | 170d | 0d |  | Proyectos | 528h |  |
| 29 | 1.1.2.3.1.3 | Aprobación de Proyecto de Red Eléctrica y Alumbrado Público en Ente | 44d | 2026-12-14 | 2027-02-11 | 28 |  |  | 657d |  |  | Proyectos | 352h |  |
| 30 | 1.1.2.3.2 | **Obra Red Eléctrica y Alumbrado Público** | 309d | 2026-12-14 | 2028-03-06 |  |  |  | 170d |  |  |  | 880h |  |
| 31 | 1.1.2.3.2.1 | Contratación Proveedor - Obra Red Eléctrica y Alumbrado Público | 33d | 2026-12-14 | 2027-01-29 | 28 |  |  | 170d |  |  |  |  |  |
| 32 | 1.1.2.3.2.2 | "Obra Red Eléctrica y Alumbrado Público" | 88d | 2027-10-05 | 2028-02-03 | 31, 23 |  |  | 0d |  |  | Obras | 704h |  |
| 33 | 1.1.2.3.2.3 | Final de Obra en Ente Red Eléctrica y Alumbrado Público | 22d | 2028-02-04 | 2028-03-06 | 32 |  |  | 391d |  |  | Obras | 176h |  |
| 35 | 1.2 | **Viviendas** | 1200d | 2024-12-01 A | 2029-09-25 |  | 42% | 693.66d | 0d |  |  |  | 24472h | 19440h |
| 36 | 1.2.1 | **Proyecto Viviendas** | 1200d | 2024-12-01 A | 2029-09-25 |  | 42% | 693.66d | 0d |  |  |  | 24472h | 19440h |
| 37 | 1.2.1.1 | **✔Anteproyecto** | 177d | 2024-12-01 A | 2025-08-28 A |  | 100% |  |  |  |  |  | 19440h | 19440h |
| 38 | 1.2.1.1.1 | ✔Anteproyecto Tipologia 1 (2 Dormitorios) | 9emo | 2024-12-01 A | 2025-08-28 A |  | 100% |  |  |  |  | Proyectos | 6480h | 6480h |
| 39 | 1.2.1.1.2 | ✔Anteproyecto Tipologia 2 (1 Dormitorio) | 9emo | 2024-12-01 A | 2025-08-28 A |  | 100% |  |  |  |  | Proyectos | 6480h | 6480h |
| 40 | 1.2.1.1.3 | ✔Anteproyecto Tipologia 3 (1 Dormitorio esquina) | 9emo | 2024-12-01 A | 2025-08-28 A |  | 100% |  |  |  |  | Proyectos | 6480h | 6480h |
| 41 | 1.2.1.2 | Diseño estructural Viviendas | 2emo | 2026-04-01 | 2026-05-31 |  |  |  | 1248d | 0d | start no earlier than 2026-04-01 | Proyectos | 1440h |  |
| 42 | 1.2.1.3 | **Legajo Ejecutivo** | 94d | 2026-05-31 | 2026-10-13 |  |  |  | 285d | 0d |  |  | 3240h |  |
| 43 | 1.2.1.3.1 | Legajo Ejecutivo Tipologia 1 (2 Dormitorios) | 1.5emo | 2026-05-31 | 2026-07-15 | 41 |  |  | 1248d | 0d |  | Proyectos | 1080h |  |
| 44 | 1.2.1.3.2 | Legajo Ejecutivo Tipologia 2 (1 Dormitorio) | 1.5emo | 2026-07-15 | 2026-08-29 | 43 |  |  | 1248d | 0d |  | Proyectos | 1080h |  |
| 45 | 1.2.1.3.3 | Legajo Ejecutivo Tipologia 3 (1 Dormitorio esquina) | 1.5emo | 2026-08-29 | 2026-10-13 | 44 |  |  | 1248d |  |  | Proyectos | 1080h |  |
| 46 | 1.2.1.4 | Gestiones y Aprobaciones de Viviendas | 44d | 2026-10-14 | 2026-12-16 | 42 |  |  | 285d |  |  | Gabriela Rojo | 352h |  |
| 47 | 1.2.1.5 | **Obra Viviendas** | 413d | 2028-02-03 | 2029-09-25 | 32 |  |  | 0d |  |  |  |  |  |
| 48 | 1.2.1.5.1 | Obra Tipologia 1 (2 Dormitorios) | 10emo | 2028-02-03 | 2028-11-29 | 46 |  |  | 0d |  |  |  |  |  |
| 49 | 1.2.1.5.2 | Obra Tipologia 2 (1 Dormitorio) | 10emo | 2028-07-02 | 2029-04-28 | 48SS+5% |  |  | 0d |  |  |  |  |  |
| 50 | 1.2.1.5.3 | Obra Tipologia 3 (1 Dormitorio esquina) | 10emo | 2028-11-29 | 2029-09-25 | 49SS+5% |  |  | 0d |  |  |  |  |  |
