# CRONOGRAMA

Schedule from MS Project XML, 2025-03-05 to 2025-10-17, A marks actual dates.

## Calendars

- Calendario Argentino 2024: Mon-Fri 09:00-13:00, 15:00-19:00; Sat-Sun off. Exceptions (off unless hours are given): 2024-12-25 to 2033-12-25 (Navidad, recurring), 2025-01-01 to 2034-01-01 (Año nuevo 2025, recurring), 2025-02-10 to 2034-02-10 (Carnaval 2025, recurring), 2025-03-24 to 2034-03-24 (Día Nacional de la Memoria por la Verdad y la Justicia, recurring), 2025-03-28 (Viernes Santo), 2025-04-02 to 2034-04-02 (Día del Veterano y de los Caídos en la Guerra de Malvinas, recurring), 2025-05-01 to 2034-05-01 (Día del Trabajador, recurring), 2025-05-25 to 2034-05-25 (Dia de la revolucion de Mayo, recurring), 2025-06-20 to 2034-06-20 (Día de la Bandera, recurring), 2025-07-09 to 2034-07-09 (Día de la Independencia, recurring), 2025-08-18 to 2034-08-18 (Paso a la Inmortalidad del Gral. José de San Martín (17/08), recurring), 2025-10-13 to 2034-10-13 (Día del Respeto a la Diversidad Cultural (12/10), recurring).

## Resources

| Resource |
| --- |
| Albañilería |
| Electricidad |
| Plomería |
| Externo |
| Herrería |
| Yeseros |
| Ceramistas |
| Terciarizado |
| Pintores |
| Durlock |
| Gabriela Rojo |
| Obras |
| Posventa |
| Mariana V |

## Schedule

| ID | WBS | Task | Duration | Start | Finish | Predecessors | Complete | Baseline start | Baseline finish | Baseline duration | Constraint | Resources | Work | Actual work | Texto1 | Lugar de trabajo |
| --- | --- | --- | --- | --- | --- | --- | --- | --- | --- | --- | --- | --- | --- | --- | --- | --- |
| 1 | 1 | **Quincho Andrea-Bonetto** | 154.38d | 2025-03-05 A | 2025-10-17 A |  | 100% | 2025-03-05 | 2025-09-14 | 130.38d |  |  | 3747.04h | 3747.04h |  |  |
| 2 | 1.1 | **✔Obra** | 133.38d | 2025-03-05 A | 2025-09-17 A |  | 100% | 2025-03-05 | 2025-07-16 | 89d |  |  | 3027.04h | 3027.04h |  |  |
| 3 | 1.1.1 | ✔Cerco de obra | 2d | 2025-03-05 A | 2025-03-07 A |  | 100% | 2025-03-05 | 2025-03-07 | 2d | finish no earlier than 2025-03-07 | Mariana V | 16h | 16h | Planta alta | Planta baja |
| 4 | 1.1.2 | ✔Apertura de vanos en nuevo baño | 4d | 2025-03-25 A | 2025-03-28 A |  | 100% | 2025-03-25 | 2025-03-28 | 4d | start no earlier than 2025-03-25 | Mariana V | 32h | 32h | Planta alta | Planta baja |
| 5 | 1.1.3 | ✔Demoler muros varios | 2.38d | 2025-03-10 A | 2025-03-21 A |  | 100% | 2025-03-10 | 2025-03-21 | 2.38d | start no earlier than 2025-03-10 | Mariana V | 19h | 19h | Planta baja | Planta baja |
| 6 | 1.1.4 | ✔Demoler contrapiso | 0.25d | 2025-03-10 A | 2025-03-14 A |  | 100% | 2025-03-10 | 2025-03-14 | 0.25d | start no earlier than 2025-03-10 | Mariana V | 2h | 2h | Planta alta | Planta baja |
| 7 | 1.1.5 | ✔Revestimiento de asadores/baño | 2.38d | 2025-03-10 A | 2025-03-21 A |  | 100% | 2025-03-10 | 2025-03-21 | 2.38d | start no earlier than 2025-03-10 | Mariana V | 19h | 19h | Planta alta | Planta baja |
| 8 | 1.1.6 | ✔Encadenado vertical | 4d | 2025-03-25 A | 2025-03-28 A |  | 100% | 2025-03-25 | 2025-03-28 | 4d | start no earlier than 2025-03-25 | Mariana V | 32h | 32h | Planta alta | Planta baja |
| 9 | 1.1.7 | ✔Encadenado horizontal | 4d | 2025-03-25 A | 2025-03-28 A |  | 100% | 2025-03-25 | 2025-03-28 | 4d | start no earlier than 2025-03-25 | Mariana V | 32h | 32h |  | Planta baja |
| 10 | 1.1.8 | ✔Cordon de soporte para aberturas | 10.13d | 2025-03-31 A | 2025-04-14 A |  | 100% | 2025-03-31 | 2025-04-14 | 10.13d | start no earlier than 2025-03-31 | Mariana V | 81.04h | 81.04h |  | Planta baja |
| 11 | 1.1.9 | ✔Mampostería ladrillo común | 10d | 2025-03-31 A | 2025-04-11 A | 9 | 100% | 2025-03-31 | 2025-04-11 | 10d | start no earlier than 2025-03-31 | Mariana V | 80h | 80h |  | Baño |
| 12 | 1.1.10 | ✔Losa maciza | 3d | 2025-04-14 A | 2025-04-16 A | 14 | 100% | 2025-04-14 | 2025-04-16 | 3d |  | Mariana V | 24h | 24h |  | Asador |
| 13 | 1.1.11 | ✔Mampostería portante 8 | 3d | 2025-03-31 A | 2025-04-02 A | 4 | 100% | 2025-03-31 | 2025-04-02 | 3d |  | Mariana V | 24h | 24h |  | Baño |
| 14 | 1.1.12 | ✔Mampostería portante 18 | 10d | 2025-03-31 A | 2025-04-11 A | 8 | 100% | 2025-03-31 | 2025-04-11 | 10d |  | Mariana V | 80h | 80h |  | Asador |
| 15 | 1.1.13 | ✔Bovedilla para asador | 5d | 2025-05-05 A | 2025-05-09 A |  | 100% | 2025-05-05 | 2025-05-09 | 5d | start no earlier than 2025-05-05 | Mariana V | 40h | 40h |  | Asador |
| 16 | 1.1.14 | ✔Capa aisladora vertical | 3d | 2025-04-07 A | 2025-04-09 A |  | 100% | 2025-04-07 | 2025-04-09 | 3d | start no earlier than 2025-04-07 | Mariana V | 24h | 24h |  | Planta baja |
| 17 | 1.1.15 | ✔Elaboración de contrapiso | 5d | 2025-04-14 A | 2025-04-18 A | 11, 14, 50 | 100% | 2025-04-14 | 2025-04-18 | 5d | start no earlier than 2025-04-14 | Mariana V | 40h | 40h |  | Interior |
| 18 | 1.1.16 | ✔Capa aisladora horizontal | 3d | 2025-04-07 A | 2025-04-09 A |  | 100% | 2025-04-07 | 2025-04-09 | 3d | start no earlier than 2025-04-07 | Mariana V | 24h | 24h |  | Planta baja |
| 19 | 1.1.17 | ✔Hormigon sector pergola | 15d | 2025-04-14 A | 2025-05-02 A |  | 100% | 2025-04-14 | 2025-05-02 | 15d | start no earlier than 2025-04-14 | Mariana V | 120h | 120h |  | Exterior |
| 20 | 1.1.18 | ✔Hormigon veredas perimetrales | 10d | 2025-04-14 A | 2025-04-25 A |  | 100% | 2025-04-14 | 2025-04-25 | 10d | start no earlier than 2025-04-14 | Mariana V | 80h | 80h |  | Exterior |
| 21 | 1.1.19 | ✔Bloques para losetas | 5d | 2025-04-29 A | 2025-05-05 A |  | 100% | 2025-04-29 | 2025-05-05 | 5d | start no earlier than 2025-04-29 | Mariana V | 40h | 40h |  | Exterior |
| 22 | 1.1.20 | ✔Zocalo de base sector televisor | 2d | 2025-04-28 A | 2025-04-29 A |  | 100% | 2025-04-28 | 2025-04-29 | 2d | start no earlier than 2025-04-28 | Mariana V | 16h | 16h |  | Interior |
| 23 | 1.1.21 | ✔Revoque grueso interior | 10d | 2025-04-28 A | 2025-05-09 A |  | 100% | 2025-04-28 | 2025-05-09 | 10d | start no earlier than 2025-04-28 | Mariana V | 80h | 80h |  | Interior |
| 24 | 1.1.22 | ✔Revestimiento baño | 10d | 2025-06-02 A | 2025-06-13 A |  | 100% | 2025-06-02 | 2025-06-13 | 10d | start no earlier than 2025-06-02 | Mariana V | 80h | 80h |  | Baño |
| 25 | 1.1.23 | ✔Banco de material sector pergola | 10d | 2025-05-05 A | 2025-05-16 A |  | 100% | 2025-05-05 | 2025-05-16 | 10d | start no earlier than 2025-05-05 | Mariana V | 80h | 80h |  | Exterior |
| 26 | 1.1.24 | ✔Soporte para madera cieloraso y pared | 10d | 2025-05-19 A | 2025-05-30 A |  | 100% | 2025-05-19 | 2025-05-30 | 10d | start no earlier than 2025-05-19 | Mariana V | 80h | 80h |  | Interior |
| 27 | 1.1.25 | ✔Solicitar premarcos | 10d | 2025-03-31 A | 2025-04-11 A |  | 100% | 2025-03-31 | 2025-04-11 | 10d | start no earlier than 2025-03-31 | Mariana V | 80h | 80h |  |  |
| 28 | 1.1.26 | ✔Colocación de pisos | 30d | 2025-05-19 A | 2025-08-07 A | 53FF | 100% | 2025-05-19 | 2025-06-13 | 20d | start no earlier than 2025-05-19 | Mariana V | 240h | 240h |  | Interior |
| 29 | 1.1.27 | ✔Anular instalación sanitarias de baño | 0.25d | 2025-03-20 A | 2025-03-20 A |  | 100% | 2025-03-20 | 2025-03-20 | 0.25d | start no earlier than 2025-03-20 | Mariana V | 2h | 2h |  | Baño |
| 30 | 1.1.28 | ✔Colocación de pisos | 20d | 2025-05-19 A | 2025-06-13 A |  | 100% | 2025-05-19 | 2025-06-13 | 20d | start no earlier than 2025-05-19 | Mariana V | 160h | 160h |  | Exterior |
| 31 | 1.1.29 | ✔Instalacion de sanitarios y grifería | 10d | 2025-07-25 A | 2025-08-07 A | 36, 53FF | 100% | 2025-06-25 | 2025-07-08 | 10d | start no earlier than 2025-06-16 | Mariana V | 80h | 80h |  | Interior |
| 32 | 1.1.30 | ✔Instalacion cloacal de baño nuevo | 15d | 2025-04-02 A | 2025-04-22 A |  | 100% | 2025-04-02 | 2025-04-22 | 15d | start no earlier than 2025-04-02 | Mariana V | 120h | 120h |  | Interior |
| 33 | 1.1.31 | ✔Revestimientos varios quincho | 15d | 2025-06-02 A | 2025-06-20 A |  | 100% | 2025-06-02 | 2025-06-20 | 15d | start no earlier than 2025-06-02 | Mariana V | 120h | 120h |  | Interior |
| 34 | 1.1.32 | ✔Carpeta de piso | 5d | 2025-04-29 A | 2025-05-06 A | 48 | 100% | 2025-04-29 | 2025-05-06 | 5d |  | Mariana V | 40h | 40h |  | Interior |
| 35 | 1.1.33 | ✔Instalacion de agua fria y caliente | 15d | 2025-04-02 A | 2025-04-22 A |  | 100% | 2025-04-02 | 2025-04-22 | 15d | start no earlier than 2025-04-02 | Mariana V | 120h | 120h |  | Cocina/ baño |
| 36 | 1.1.34 | ✔Colocación de mesadas | 2d | 2025-06-23 A | 2025-06-24 A | 33 | 100% | 2025-06-23 | 2025-06-24 | 2d |  | Mariana V | 16h | 16h |  |  |
| 37 | 1.1.35 | ✔Instalacion de termotanque | 2d | 2025-07-09 A | 2025-07-10 A | 31 | 100% | 2025-07-09 | 2025-07-10 | 2d |  | Mariana V | 16h | 16h |  | Planta baja y alta |
| 38 | 1.1.36 | ✔Desague pluviales de canaletas y techo de chapa | 10d | 2025-04-02 A | 2025-04-16 A |  | 100% | 2025-04-02 | 2025-04-16 | 10d | finish no earlier than 2025-04-16 | Mariana V | 80h | 80h |  | Exterior |
| 39 | 1.1.37 | ✔Desague pluviales | 5d | 2025-04-16 A | 2025-04-23 A | 38 | 100% | 2025-04-16 | 2025-04-23 | 5d |  | Mariana V | 40h | 40h |  | Exterior |
| 40 | 1.1.38 | ✔Canalizacion de cañeria y bocas en losa | 10d | 2025-04-14 A | 2025-04-25 A |  | 100% | 2025-04-14 | 2025-04-25 | 10d | start no earlier than 2025-04-14 | Mariana V | 80h | 80h |  | Interior |
| 41 | 1.1.39 | ✔Canalizacion de muros y amurado de cajas | 10d | 2025-04-14 A | 2025-04-25 A | 11, 14 | 100% | 2025-04-14 | 2025-04-25 | 10d | start no earlier than 2025-04-07 | Mariana V | 80h | 80h |  | Interior |
| 42 | 1.1.40 | ✔Armado de tablero general | 10d | 2025-06-16 A | 2025-06-27 A |  | 100% | 2025-06-16 | 2025-06-27 | 10d | start no earlier than 2025-06-16 | Mariana V | 80h | 80h |  | interior |
| 43 | 1.1.41 | ✔Cableado general | 10d | 2025-05-12 A | 2025-05-23 A |  | 100% | 2025-05-12 | 2025-05-23 | 10d | start no earlier than 2025-05-12 | Mariana V | 80h | 80h |  | Interior |
| 44 | 1.1.42 | ✔Armado de tomas y punto encendido | 10d | 2025-06-16 A | 2025-06-27 A |  | 100% | 2025-06-16 | 2025-06-27 | 10d | start no earlier than 2025-06-16 | Mariana V | 80h | 80h |  | Interior |
| 45 | 1.1.43 | ✔Pre instalacion de AA | 3d | 2025-04-21 A | 2025-04-23 A |  | 100% | 2025-04-21 | 2025-04-23 | 3d | start no earlier than 2025-04-21 | Mariana V | 24h | 24h |  | Interior |
| 46 | 1.1.44 | ✔Instalacion de extractor de asador | 2d | 2025-06-16 A | 2025-06-17 A |  | 100% | 2025-06-16 | 2025-06-17 | 2d | start no earlier than 2025-06-16 | Mariana V | 16h | 16h |  | Exterior |
| 47 | 1.1.45 | ✔Instalacion de anafe y campana | 3d | 2025-06-25 A | 2025-06-27 A | 36 | 100% | 2025-06-25 | 2025-06-27 | 3d |  | Mariana V | 24h | 24h |  | Interior |
| 48 | 1.1.46 | ✔Canalizacion y suministro de gas para anafe | 5d | 2025-04-23 A | 2025-04-29 A |  | 100% | 2025-04-23 | 2025-04-29 | 5d |  | Mariana V | 40h | 40h |  | Interior |
| 49 | 1.1.47 | ✔IPN 160 - colocacion y pintura | 3d | 2025-04-07 A | 2025-04-09 A |  | 100% | 2025-04-07 | 2025-04-09 | 3d |  | Mariana V | 24h | 24h |  | Interior |
| 50 | 1.1.48 | ✔Rejilla guardaganado para canaleta perimetral para recepcion de agua de lluvia | 5d | 2025-04-07 A | 2025-04-11 A |  | 100% | 2025-04-07 | 2025-04-11 | 5d |  | Mariana V | 40h | 40h |  | Exterior |
| 51 | 1.1.49 | ✔Instalación de AA | 5d | 2025-09-11 A | 2025-09-17 A |  | 100% | 2025-07-11 | 2025-07-16 | 3d | start no earlier than 2025-09-11 | Mariana V | 40h | 40h |  | Interior |
| 52 | 1.1.50 | ✔Revestimiento plastico - colocacion de revear | 10d | 2025-07-14 A | 2025-07-25 A |  | 100% | 2025-06-27 | 2025-07-11 | 10d | start no earlier than 2025-07-14 | Mariana V | 80h | 80h |  | Interior exterior |
| 53 | 1.1.51 | ✔Instalación de aberturas | 10d | 2025-07-25 A | 2025-08-07 A |  | 100% | 2025-06-04 | 2025-06-06 | 3d | start no earlier than 2025-07-25 | Mariana V | 80h | 80h |  | Interior/ exterior |
| 54 | 1.2 | Postobra Pasiva | 1emo | 2025-09-17 A | 2025-10-17 A | 2 | 100% | 2025-07-16 | 2025-09-14 | 2emo |  | Gabriela Rojo | 720h | 720h |  |  |
