# Vivienda AZ

Schedule from MS Project XML, 2025-10-01 to 2029-09-04, A marks actual dates.

## Calendars

- Calendario Argentino 2024: Mon-Fri 09:00-13:00, 15:00-19:00; Sat-Sun off. Exceptions (off unless hours are given): 2024-12-25 to 2033-12-25 (Navidad, recurring), 2025-01-01 to 2034-01-01 (Año nuevo 2025, recurring), 2025-02-10 to 2034-02-10 (Carnaval 2025, recurring), 2025-03-24 to 2034-03-24 (Día Nacional de la Memoria por la Verdad y la Justicia, recurring), 2025-04-02 to 2034-04-02 (Día del Veterano y de los Caídos en la Guerra de Malvinas, recurring), 2025-05-01 to 2034-05-01 (Día del Trabajador, recurring), 2025-05-25 to 2034-05-25 (Dia de la revolucion de Mayo, recurring), 2025-06-20 to 2034-06-20 (Día de la Bandera, recurring), 2025-07-09 to 2034-07-09 (Día de la Independencia, recurring), 2025-08-18 to 2034-08-18 (Paso a la Inmortalidad del Gral. José de San Martín (17/08), recurring), 2025-10-13 to 2034-10-13 (Día del Respeto a la Diversidad Cultural (12/10), recurring), 2025-11-18 to 2034-11-18 (Día de la Soberanía Nacional (20/11), recurring), 2025-12-08 to 2034-12-08 (Día de la Virgen, recurring).

## Resources

| Resource |
| --- |
| Gabriela Rojo |
| Julian Steib |
| Posventa |
| Proyectos |

## Schedule

| ID | WBS | Task | Type | Duration | Start | Finish | Predecessors | Complete | Remaining | Baseline start | Baseline finish | Baseline duration | Total slack | Free slack | Constraint | Resources | Work | Actual work |
| --- | --- | --- | --- | --- | --- | --- | --- | --- | --- | --- | --- | --- | --- | --- | --- | --- | --- | --- |
| 1 | 1 | **VIVIENDA AGUSTIN ZAMPOL** |  | 984d | 2025-10-01 A | 2029-09-04 |  | 2% | 963.42d | 2025-10-01 | 2028-12-30 | 813d | 0d |  |  |  | 26744h | 704h |
| 2 | 1.1 | **Proyecto Vivienda AZ** |  | 365d | 2025-10-01 A | 2027-03-19 |  | 14% | 312.17d | 2025-10-01 | 2026-07-14 | 194d | 0d |  |  |  | 5144h | 704h |
| 3 | 1.1.1 | **Presupuestación** |  | 365d | 2025-10-01 A | 2027-03-19 |  |  | 365d | 2025-10-01 | 2025-12-29 | 60d | 0d |  |  |  | 512h |  |
| 4 | 1.1.1.1 | Recepción de Legajo | milestone | 0d | 2025-10-01 A | 2025-10-01 A |  | 100% |  | 2025-10-01 | 2025-10-01 |  |  |  | start no earlier than 2025-10-01 | Gabriela Rojo |  |  |
| 5 | 1.1.1.2 | Cómputo Métrico |  | 33d | 2026-12-22 | 2027-02-04 | 16 |  |  | 2025-10-01 | 2025-11-14 | 33d | 0d |  |  | Proyectos | 264h |  |
| 6 | 1.1.1.3 | Cotización Mano de Obra |  | 16d | 2027-02-05 | 2027-02-26 | 5 |  |  | 2025-11-17 | 2025-12-08 | 16d | 0d |  |  | Proyectos | 128h |  |
| 7 | 1.1.1.4 | Aceptación Obra y Firma de Contrato |  | 15d | 2027-03-01 | 2027-03-19 | 6 |  |  | 2025-12-09 | 2025-12-29 | 15d | 0d |  |  | Proyectos | 120h |  |
| 8 | 1.1.2 | **Diseño** |  | 242d | 2026-01-01 A | 2026-12-21 |  | 26% | 178.87d | 2026-01-01 | 2026-05-04 | 83d | 0d |  |  |  | 3520h | 704h |
| 9 | 1.1.2.1 | **Diseño Vivienda AGUSTIN ZAMPOL** |  | 179d | 2026-01-01 A | 2026-09-18 |  | 35% | 115.82d | 2026-01-01 | 2026-01-30 | 21d | 0d |  |  | Proyectos | 2992h | 704h |
| 10 | 1.1.2.1.1 | Fase 1 Diseño Conceptual - Vivienda AGUSTIN ZAMPOL |  | 33d | 2026-01-01 A | 2026-02-16 A |  | 100% |  | 2026-01-01 | 2026-01-15 | 11d |  |  |  | Proyectos | 264h | 264h |
| 11 | 1.1.2.1.2 | Validacion Cliente - Vivienda AGUSTIN ZAMPOL |  | 33d | 2026-02-17 A | 2026-04-02 A | 10 | 100% |  | 2026-01-16 | 2026-01-30 | 11d |  |  |  | Proyectos | 264h | 264h |
| 12 | 1.1.2.1.3 | Fase 2 Diseño conceptual - Vivienda AGUSTIN ZAMPOL |  | 44d | 2026-04-03 | 2026-06-03 | 11 |  |  |  |  |  | 0d |  |  | Proyectos | 352h |  |
| 13 | 1.1.2.1.4 | Validación Cliente - Vivienda AGUSTIN ZAMPOL |  | 44d | 2026-06-04 | 2026-08-04 | 12 |  |  |  |  |  | 0d |  |  | Proyectos | 352h |  |
| 14 | 1.1.2.1.5 | Fase 3 - Diseño Final - Vivienda AGUSTIN ZAMPOL |  | 22d | 2026-08-05 | 2026-09-03 | 13 |  |  |  |  |  | 0d |  |  | Proyectos | 176h |  |
| 15 | 1.1.2.1.6 | Validación Cliente Vivienda AGUSTIN ZAMPOL |  | 11d | 2026-09-04 | 2026-09-18 | 14 |  |  |  |  |  | 0d |  |  | Proyectos | 88h |  |
| 16 | 1.1.2.2 | Plano Apto Gestiones y Licitación |  | 66d | 2026-09-21 | 2026-12-21 | 9 |  |  | 2026-02-02 | 2026-05-04 | 66d | 0d |  |  | Proyectos | 528h |  |
| 17 | 1.1.3 | **Armado de Documentación y Compra Materiales** |  | 26d | 2026-12-22 | 2027-01-28 |  |  |  | 2026-05-05 | 2026-06-11 | 27d | 12d |  |  |  | 488h |  |
| 18 | 1.1.3.1 | Armado de Documentacion - Apto para Gestiones |  | 5d | 2026-12-22 | 2026-12-28 | 8 |  |  | 2026-05-05 | 2026-05-11 | 5d | 12d | 0d |  | Proyectos | 40h |  |
| 19 | 1.1.3.2 | Armado de Documentación - Apto para Construcción |  | 28d | 2026-12-22 | 2027-01-28 | 8 |  |  | 2026-05-05 | 2026-06-11 | 28d | 34d |  |  | Proyectos | 224h |  |
| 20 | 1.1.3.3 | Confeccion de presupuestos de materiales y acopios. |  | 28d | 2026-12-22 | 2027-01-28 | 8 |  |  | 2026-05-05 | 2026-06-11 | 28d | 34d |  |  | Proyectos | 224h |  |
| 21 | 1.1.4 | **Gestiones** |  | 44d | 2026-12-29 | 2027-03-02 | 18 |  |  | 2026-05-12 | 2026-07-14 | 44d | 13d |  |  |  | 624h |  |
| 22 | 1.1.4.1 | Gestiones CAPC |  | 24d | 2026-12-29 | 2027-02-01 | 18 |  |  | 2026-05-12 | 2026-06-15 | 24d | 33d |  |  | Gabriela Rojo | 192h |  |
| 23 | 1.1.4.2 | Gestiones Municipales |  | 44d | 2026-12-29 | 2027-03-02 | 18 |  |  | 2026-05-12 | 2026-07-14 | 44d | 13d | 0d |  | Gabriela Rojo | 352h |  |
| 24 | 1.1.4.3 | Gestiones de Personal |  | 10d | 2027-02-17 | 2027-03-02 | 23FF |  |  | 2026-06-30 | 2026-07-14 | 10d | 13d |  |  | Gabriela Rojo | 80h |  |

| ID | WBS | Task | Type | Duration | Start | Finish | Predecessors | Baseline start | Baseline finish | Baseline duration | Total slack | Resources | Work |
| --- | --- | --- | --- | --- | --- | --- | --- | --- | --- | --- | --- | --- | --- |
| 25 | 1.2 | **Obra - Vivienda AZ** |  | 371d | 2027-03-19 | 2028-09-09 | 2 | 2026-07-14 | 2028-01-05 | 371d | 0d |  | 12960h |
| 26 | 1.2.1 | Firma Acta Inicio de Obra | milestone | 0d | 2027-03-19 | 2027-03-19 |  | 2026-07-14 | 2026-07-14 |  | 0d | Julian Steib |  |
| 27 | 1.2.2 | Obra Vivieda AZ |  | 18emo | 2027-03-19 | 2028-09-09 | 26 | 2026-07-14 | 2028-01-05 | 18emo | 0d | Julian Steib | 12960h |
| 28 | 1.2.3 | Firma Acta recepcion Provisoria | milestone | 0d | 2028-09-09 | 2028-09-09 | 27 | 2028-01-05 | 2028-01-05 |  | 0d | Julian Steib |  |
| 29 | 1.3 | Posventa |  | 12emo | 2028-09-09 | 2029-09-04 | 25 | 2028-01-05 | 2028-12-30 | 12emo | 0d | Posventa | 8640h |
