# Vivienda Venturelli - Bernal

Schedule from MS Project XML, 2026-07-13 to 2029-05-11, status date 2026-07-28, A marks actual dates.

## Calendars

- Calendario Argentino 2024: Mon-Fri 09:00-13:00, 15:00-19:00; Sat-Sun off. Exceptions (off unless hours are given): 2024-12-25 to 2033-12-25 (Navidad, recurring), 2025-01-01 to 2034-01-01 (Año nuevo 2025, recurring), 2025-02-10 to 2034-02-10 (Carnaval 2025, recurring), 2025-03-24 to 2034-03-24 (Día Nacional de la Memoria por la Verdad y la Justicia, recurring), 2025-04-02 to 2034-04-02 (Día del Veterano y de los Caídos en la Guerra de Malvinas, recurring), 2025-05-01 to 2034-05-01 (Día del Trabajador, recurring), 2025-05-25 to 2034-05-25 (Dia de la revolucion de Mayo, recurring), 2025-06-20 to 2034-06-20 (Día de la Bandera, recurring), 2025-07-09 to 2034-07-09 (Día de la Independencia, recurring), 2025-08-18 to 2034-08-18 (Paso a la Inmortalidad del Gral. José de San Martín (17/08), recurring), 2025-10-13 to 2034-10-13 (Día del Respeto a la Diversidad Cultural (12/10), recurring), 2025-11-18 to 2034-11-18 (Día de la Soberanía Nacional (20/11), recurring), 2025-12-08 to 2034-12-08 (Día de la Virgen, recurring).

## Resources

| Resource |
| --- |
| Gabriela Rojo |
| Posventa |
| Proyectos |
| Mariana V |

## Schedule

| ID | WBS | Task | Duration | Start | Finish | Predecessors | Complete | Remaining | Baseline start | Baseline finish | Baseline duration | Baseline 1 start | Baseline 1 finish | Total slack | Free slack | Constraint | Resources | Work | Texto3 | Texto4 | Texto1 | Texto2 |
| --- | --- | --- | --- | --- | --- | --- | --- | --- | --- | --- | --- | --- | --- | --- | --- | --- | --- | --- | --- | --- | --- | --- |
| 1 | 1 | **Vivienda Carola Ruda** | 503d? | 2026-07-13 A | 2028-07-13 |  | 2% | 495.19d? | 2026-07-13 | 2028-07-13 | 504d? | 2026-07-13 | 2028-07-13 | 210d |  |  |  | 21328h |  |  |  |  |
| 2 | 1.1 | Obra Vivienda Carola Ruda Contratada | 731ed | 2026-07-13 | 2028-07-13 |  |  |  | 2026-07-13 | 2026-07-13 |  | 2026-07-13 | 2028-07-13 | 907.25d |  | start no earlier than 2026-07-13 | Gabriela Rojo | 17544h | Gerencia |  |  |  |
| 3 | 1.2 | Obra Vivienda Carola Ruda | 443d | 2026-07-13 | 2028-04-14 |  |  |  | 2026-07-13 | 2026-07-13 |  | 2026-07-13 | 2028-04-14 | 270d |  |  | Gabriela Rojo | 3544h | Gerencia |  |  |  |
| 4 | 1.3 | **OBRA VIVIENDA CAROLA RUDA** | 464d? | 2026-07-13 A | 2028-05-16 |  | 3% | 449.16d? | 2026-07-13 | 2028-04-17 | 444d? | 2026-07-13 | 2028-04-14 | 0d |  |  |  | 240h |  |  |  |  |
| 5 | 1.3.1 | **TAREAS PRELIMINARES** | 11d | 2026-07-13 A | 2026-07-27 A |  | 100% |  | 2026-07-13 | 2026-07-27 | 11d | 2026-07-13 | 2026-07-27 |  |  |  |  |  |  | 1 |  |  |
| 6 | 1.3.1.1 | Estudio de Suelos | 1d | 2026-07-27 A | 2026-07-27 A | 9FS+8d | 100% |  | 2026-07-27 | 2026-07-27 | 1d | 2026-07-27 | 2026-07-27 |  |  |  |  |  | Seguimiento | 1.01 |  |  |
| 7 | 1.3.1.2 | Calculo Estructural | 1d | 2026-07-13 A | 2026-07-13 A |  | 100% |  | 2026-07-13 | 2026-07-13 | 1d | 2026-07-13 | 2026-07-13 |  |  |  |  |  | Seguimiento | 1.02 |  |  |
| 8 | 1.3.1.3 | Cerco Perimetral | 3d | 2026-07-13 A | 2026-07-15 A | 15SS | 100% |  | 2026-07-13 | 2026-07-15 | 3d | 2026-07-13 | 2026-07-15 |  |  |  |  |  | Seguimiento | 1.03 |  |  |
| 9 | 1.3.1.4 | Replanteo de Obra | 2d | 2026-07-13 A | 2026-07-14 A | 8 | 100% |  | 2026-07-13 | 2026-07-14 | 2d | 2026-07-13 | 2026-07-14 |  |  |  |  |  | Seguimiento | 1.04 |  |  |
| 10 | 1.3.1.5 | Armado de Pilar con Tablero de Obra | 1d | 2026-07-13 A | 2026-07-13 A |  | 100% |  | 2026-07-13 | 2026-07-13 | 1d | 2026-07-13 | 2026-07-13 |  |  |  |  |  | Seguimiento | 1.05 |  |  |
| 11 | 1.3.2 | **CONFORMACIÓN DE TERRENO** | 84d | 2026-07-13 A | 2026-11-09 |  | 25% | 63d | 2026-07-13 | 2026-10-07 | 62d | 2026-07-13 | 2026-10-08 | 0d |  |  |  |  |  |  |  |  |
| 12 | 1.3.2.1 | Excavación terreno | 1d | 2026-07-13 A | 2026-07-13 A |  | 100% |  | 2026-07-13 | 2026-07-13 | 1d | 2026-07-13 | 2026-07-13 |  |  |  |  |  | Seguimiento | 1.06 |  |  |
| 13 | 1.3.2.2 | Relleno de terreno | 3d | 2026-11-05 | 2026-11-09 | 72 |  |  | 2026-10-05 | 2026-10-07 | 3d | 2026-10-06 | 2026-10-08 | 0d |  |  |  |  | Seguimiento | 1.07 |  |  |
| 14 | 1.3.3 | **ESTRUCTURA Y ALBAÑILERIA** | 309d | 2026-07-13 A | 2027-10-04 |  | 13% | 269.39d | 2026-07-13 | 2028-03-02 | 413d | 2026-07-13 | 2028-03-01 | 155d |  |  |  |  |  | 2 |  |  |
| 15 | 1.3.3.1 | Envío de materiales | 1d | 2026-07-13 A | 2026-07-13 A |  | 100% |  | 2026-07-13 | 2026-07-13 | 1d | 2026-07-13 | 2026-07-13 |  |  |  |  |  | Seguimiento |  | Externo |  |
| 16 | 1.3.3.2 | P1- 80cm fuste; c/ campana de 160cm | 15d | 2026-07-15 A | 2026-08-04 A | 9 | 100% |  | 2026-07-15 | 2026-08-04 | 15d | 2026-07-15 | 2026-08-04 |  |  |  |  |  | Seguimiento | 2.01 | Albañileria | Planta Baja |
| 17 | 1.3.3.3 | P2- 60cm fuste; c/ campana de 120cm | 15d | 2026-07-15 A | 2026-08-04 A | 16FF | 100% |  | 2026-07-15 | 2026-08-04 | 15d | 2026-07-15 | 2026-08-04 |  |  |  |  |  | Seguimiento | 2.02 | Albañileria | Planta Baja |
| 18 | 1.3.3.4 | P3- 40cm fuste; c/ campana de 80cm | 15d | 2026-07-15 A | 2026-08-04 A | 16FF | 100% |  | 2026-07-15 | 2026-08-04 | 15d | 2026-07-15 | 2026-08-04 |  |  |  |  |  | Seguimiento | 2.03 | Albañileria | Planta Baja |
| 19 | 1.3.3.5 | Pilotera - Demora por ingreso de pilotera | 11d | 2026-08-13 A | 2026-08-28 A | 9FS+21d | 100% |  | 2026-08-03 | 2026-08-20 | 13d | 2026-08-13 | 2026-08-28 |  |  |  |  |  | Seguimiento |  | Externo | Planta Baja |
| 20 | 1.3.3.6 | Hormigonado de pozos | 1d | 2026-08-24 A | 2026-08-24 A |  | 100% |  | 2026-08-21 | 2026-08-21 | 1d | 2026-08-24 | 2026-08-24 |  |  | start no earlier than 2026-08-24 |  |  | Seguimiento |  | Externo | Planta Baja |
| 21 | 1.3.3.7 | Hormigonado de pozos 2da etapa | 1d | 2026-08-28 A | 2026-08-28 A |  | 100% |  |  |  |  | 2026-08-28 | 2026-08-28 |  |  | start no earlier than 2026-08-28 |  |  | Seguimiento |  |  | Planta Baja |
| 22 | 1.3.3.8 | CBZ1 - 80x50x150 | 5d | 2026-08-14 | 2026-08-21 | 25 |  |  | 2026-08-05 | 2026-08-11 | 5d | 2026-08-14 | 2026-08-21 | 435d | 0d |  |  |  | Seguimiento | 2.04 | Albañileria | Planta Baja |
| 23 | 1.3.3.9 | CBZ2 - 80x50x120 | 5d | 2026-08-14 | 2026-08-21 | 22FF |  |  | 2026-08-05 | 2026-08-11 | 5d | 2026-08-14 | 2026-08-21 | 435d |  |  |  |  | Seguimiento | 2.05 | Albañileria | Planta Baja |
| 24 | 1.3.3.10 | CBZ3 - 80x80x80 | 5d | 2026-08-14 | 2026-08-21 | 22FF |  |  | 2026-08-05 | 2026-08-11 | 5d | 2026-08-14 | 2026-08-21 | 435d |  |  |  |  | Seguimiento | 2.06 | Albañileria | Planta Baja |
| 25 | 1.3.3.11 | Viga Fundación VF (50x30) | 7d | 2026-08-05 A | 2026-08-13 A | 16 | 100% |  | 2026-08-12 | 2026-08-21 | 7d | 2026-08-05 | 2026-08-13 |  |  |  |  |  | Seguimiento | 2.07 | Albañileria | Planta Baja |
| 26 | 1.3.3.12 | Excavación de riostras y cabezales | 15d | 2026-08-25 A | 2026-09-14 | 20 | 30% | 10.5d | 2026-08-24 | 2026-09-04 | 10d | 2026-08-25 | 2026-09-14 | 0d |  |  |  |  | Seguimiento |  | Albañileria | Planta Baja |
| 27 | 1.3.3.13 | Hormigonado de riostras y cabezales | 16d | 2026-09-15 | 2026-10-06 | 26 |  |  | 2026-09-07 | 2026-09-07 | 1d | 2026-09-15 | 2026-09-15 | 0d |  |  |  |  | Seguimiento |  | Externo | Planta Baja |
| 28 | 1.3.3.14 | C1 - (0,18x1,50) - 2 unid - (3,0 m de altura) | 7d | 2027-01-19 | 2027-01-27 | 67FF |  |  | 2026-12-18 | 2026-12-29 | 7d | 2026-12-17 | 2026-12-28 | 327d |  |  |  |  | Seguimiento | 2.08 | Albañileria | Planta Baja |
| 29 | 1.3.3.15 | C2 - (0,18x1,00) - 1 unid - (3,0 m de altura) | 7d | 2027-01-19 | 2027-01-27 | 67FF |  |  | 2026-12-18 | 2026-12-29 | 7d | 2026-12-17 | 2026-12-28 | 327d |  |  |  |  | Seguimiento | 2.09 | Albañileria | Planta Baja |
| 30 | 1.3.3.16 | C3 - (0,18x0,90) - 2 unid - (3,0 m de altura) | 7d | 2027-01-19 | 2027-01-27 | 67FF |  |  | 2026-12-18 | 2026-12-29 | 7d | 2026-12-17 | 2026-12-28 | 327d |  |  |  |  | Seguimiento | 2.10 | Albañileria | Planta Baja |
| 31 | 1.3.3.17 | C4 - (0,18x0,80) - 2 unid - (3,0 m de altura) | 7d | 2027-01-19 | 2027-01-27 | 67FF |  |  | 2026-12-18 | 2026-12-29 | 7d | 2026-12-17 | 2026-12-28 | 327d |  |  |  |  | Seguimiento | 2.11 | Albañileria | Planta Baja |
| 32 | 1.3.3.18 | C5 - (0,18x0,60) - 2 unid - (3,0 m de altura) | 7d | 2027-01-19 | 2027-01-27 | 67FF |  |  | 2026-12-18 | 2026-12-29 | 7d | 2026-12-17 | 2026-12-28 | 327d |  |  |  |  | Seguimiento | 2.12 | Albañileria | Planta Baja |
| 33 | 1.3.3.19 | C6 - (0,18x0,50) - 3 unid - (3,0 m de altura) | 7d | 2027-01-19 | 2027-01-27 | 67FF |  |  | 2026-12-18 | 2026-12-29 | 7d | 2026-12-17 | 2026-12-28 | 327d |  |  |  |  | Seguimiento | 2.13 | Albañileria | Planta Baja |
| 34 | 1.3.3.20 | C7 - (0,18x0,70) - 6 unid - (3,0 m de altura) | 7d | 2027-01-19 | 2027-01-27 | 67FF |  |  | 2026-12-18 | 2026-12-29 | 7d | 2026-12-17 | 2026-12-28 | 327d |  |  |  |  | Seguimiento | 2.14 | Albañileria | Planta Baja |
| 35 | 1.3.3.21 | C9 - (0,18x0,18) - 43 unid - (3,0 m de altura) | 7d | 2027-01-19 | 2027-01-27 | 67FF |  |  | 2026-12-18 | 2026-12-29 | 7d | 2026-12-17 | 2026-12-28 | 327d |  |  |  |  | Seguimiento | 2.15 | Albañileria | Planta Baja |
| 36 | 1.3.3.22 | C10 - (0,18x0,18) - 12 unid - (3,0 m de altura) | 7d | 2027-01-19 | 2027-01-27 | 67FF |  |  | 2026-12-18 | 2026-12-29 | 7d | 2026-12-17 | 2026-12-28 | 327d |  |  |  |  | Seguimiento | 2.16 | Albañileria | Planta Baja |
| 37 | 1.3.3.23 | C11 - (0,12x0,30) - 33 unid - (3,0 m de altura) | 7d | 2027-01-19 | 2027-01-27 | 67FF |  |  | 2026-12-18 | 2026-12-29 | 7d | 2026-12-17 | 2026-12-28 | 327d |  |  |  |  | Seguimiento | 2.17 | Albañileria | Planta Baja |
| 38 | 1.3.3.24 | C1 - (0,18x1,50) - 1 unid - (2,8 m de altura) | 7d | 2027-06-17 | 2027-06-25 | 69FF |  |  | 2027-05-19 | 2027-05-28 | 7d | 2027-05-18 | 2027-05-27 | 224d |  |  |  |  | Seguimiento | 2.18 | Albañileria | Primer Piso |
| 39 | 1.3.3.25 | C4 - (0,18x0,80) - 1 unid - (2,8 m de altura) | 7d | 2027-06-17 | 2027-06-25 | 69FF |  |  | 2027-05-19 | 2027-05-28 | 7d | 2027-05-18 | 2027-05-27 | 224d |  |  |  |  | Seguimiento | 2.19 | Albañileria | Primer Piso |
| 40 | 1.3.3.26 | C7 - (0,18x0,70) - 1 unid - (2,8 m de altura) | 7d | 2027-06-17 | 2027-06-25 | 69FF |  |  | 2027-05-19 | 2027-05-28 | 7d | 2027-05-18 | 2027-05-27 | 224d |  |  |  |  | Seguimiento | 2.20 | Albañileria | Primer Piso |
| 41 | 1.3.3.27 | C9 - (0,18x0,18) - 41 unid - (2,8 m de altura) | 7d | 2027-06-17 | 2027-06-25 | 69FF |  |  | 2027-05-19 | 2027-05-28 | 7d | 2027-05-18 | 2027-05-27 | 224d |  |  |  |  | Seguimiento | 2.21 | Albañileria | Primer Piso |
| 42 | 1.3.3.28 | C10 - (0,18x0,18) - 2 unid - (2,8 m de altura) | 7d | 2027-06-17 | 2027-06-25 | 69FF |  |  | 2027-05-19 | 2027-05-28 | 7d | 2027-05-18 | 2027-05-27 | 224d |  |  |  |  | Seguimiento | 2.22 | Albañileria | Primer Piso |
| 43 | 1.3.3.29 | C11 - (0,12x0,30) - 4 unid - (2,8 m de altura) | 7d | 2027-06-17 | 2027-06-25 | 69FF |  |  | 2027-05-19 | 2027-05-28 | 7d | 2027-05-18 | 2027-05-27 | 224d |  |  |  |  | Seguimiento | 2.23 | Albañileria | Primer Piso |
| 44 | 1.3.3.30 | Ce - (0,18x0,18) - 3 unid - (3,0 m de altura) | 7d | 2027-01-19 | 2027-01-27 | 67FF |  |  | 2026-12-18 | 2026-12-29 | 7d | 2026-12-17 | 2026-12-28 | 327d |  |  |  |  | Seguimiento | 2.24 | Albañileria | Planta Baja |
| 45 | 1.3.3.31 | Ce - (0,18x0,18) - 18 unid - (2,8 m de altura) | 7d | 2027-06-17 | 2027-06-25 | 69FF |  |  | 2027-05-19 | 2027-05-28 | 7d | 2027-05-18 | 2027-05-27 | 224d |  |  |  |  | Seguimiento | 2.25 | Albañileria | Primer Piso |
| 46 | 1.3.3.32 | EH - (0,18x0,30), (0,18x0,40) | 5d | 2027-03-02 | 2027-03-08 | 48FF |  |  | 2027-02-01 | 2027-02-05 | 5d | 2027-01-29 | 2027-02-04 | 300d |  |  |  |  | Seguimiento | 2.26 | Albañileria | Planta Baja |
| 47 | 1.3.3.33 | EH - (0,18x0,30) | 5d | 2027-07-15 | 2027-07-21 | 53FF |  |  | 2027-06-16 | 2027-06-22 | 5d | 2027-06-15 | 2027-06-21 | 207d |  |  |  |  | Seguimiento | 2.27 | Albañileria | Primer Piso |
| 48 | 1.3.3.34 | V - (18x100),(18x120),(30x100),(40x100) | 15d | 2027-02-16 | 2027-03-08 | 105 |  |  | 2027-01-18 | 2027-02-05 | 15d | 2027-01-15 | 2027-02-04 | 300d | 0d |  |  |  | Seguimiento | 2.28 | Albañileria | Planta Baja |
| 49 | 1.3.3.35 | V - (18x50) | 15d | 2027-02-16 | 2027-03-08 | 48FF |  |  | 2027-01-18 | 2027-02-05 | 15d | 2027-01-15 | 2027-02-04 | 300d |  |  |  |  | Seguimiento | 2.29 | Albañileria | Planta Baja |
| 50 | 1.3.3.36 | V - (18x30) | 15d | 2027-02-16 | 2027-03-08 | 48FF |  |  | 2027-01-18 | 2027-02-05 | 15d | 2027-01-15 | 2027-02-04 | 300d |  |  |  |  | Seguimiento | 2.30 | Albañileria | Planta Baja |
| 51 | 1.3.3.37 | V - (30x30),(30x40),(40x40) | 15d | 2027-02-16 | 2027-03-08 | 48FF |  |  | 2027-01-18 | 2027-02-05 | 15d | 2027-01-15 | 2027-02-04 | 300d |  |  |  |  | Seguimiento | 2.31 | Albañileria | Planta Baja |
| 52 | 1.3.3.38 | NB - (18x50),(18x40),(40x40) | 15d | 2027-02-16 | 2027-03-08 | 48FF |  |  | 2027-01-18 | 2027-02-05 | 15d | 2027-01-15 | 2027-02-04 | 300d |  |  |  |  | Seguimiento | 2.32 | Albañileria | Planta Baja |
| 53 | 1.3.3.39 | V - (18x50) | 10d | 2027-07-07 | 2027-07-21 | 106 |  |  | 2027-06-09 | 2027-06-22 | 10d | 2027-06-08 | 2027-06-21 | 207d | 0d |  |  |  | Seguimiento | 2.33 | Albañileria | Primer Piso |
| 54 | 1.3.3.40 | V - (18x30) | 10d | 2027-07-07 | 2027-07-21 | 53FF |  |  | 2027-06-09 | 2027-06-22 | 10d | 2027-06-08 | 2027-06-21 | 207d |  |  |  |  | Seguimiento | 2.34 | Albañileria | Primer Piso |
| 55 | 1.3.3.41 | V - (40x30),(40x50) | 10d | 2027-07-07 | 2027-07-21 | 53FF |  |  | 2027-06-09 | 2027-06-22 | 10d | 2027-06-08 | 2027-06-21 | 207d |  |  |  |  | Seguimiento | 2.35 | Albañileria | Primer Piso |
| 56 | 1.3.3.42 | NB - (18x50) | 10d | 2027-07-07 | 2027-07-21 | 53FF |  |  | 2027-06-09 | 2027-06-22 | 10d | 2027-06-08 | 2027-06-21 | 207d |  |  |  |  | Seguimiento | 2.36 | Albañileria | Primer Piso |
| 57 | 1.3.3.43 | L1 - Losa Nervurada - 25 cm | 45d | 2027-03-16 | 2027-05-19 | 103 |  |  | 2027-02-16 | 2027-04-21 | 45d | 2027-02-15 | 2027-04-20 | 0d |  |  |  |  | Seguimiento | 2.37 | Albañileria | Planta Baja |
| 58 | 1.3.3.44 | L2 - Losa Nervurada - 30 cm | 45d | 2027-03-16 | 2027-05-19 | 57FF |  |  | 2027-02-16 | 2027-04-21 | 45d | 2027-02-15 | 2027-04-20 | 250d |  |  |  |  | Seguimiento | 2.38 | Albañileria | Planta Baja |
| 59 | 1.3.3.45 | L3 - Losa Nervurada - 40 cm | 45d | 2027-03-16 | 2027-05-19 | 57FF |  |  | 2027-02-16 | 2027-04-21 | 45d | 2027-02-15 | 2027-04-20 | 250d |  |  |  |  | Seguimiento | 2.39 | Albañileria | Planta Baja |
| 60 | 1.3.3.46 | Hormigon de losa | 1d | 2027-05-20 | 2027-05-20 | 57 |  |  | 2027-04-22 | 2027-04-22 | 1d | 2027-04-21 | 2027-04-21 | 0d |  |  |  |  | Seguimiento |  | Externo | Planta Baja |
| 61 | 1.3.3.47 | L2 - Losa Nervurada - 30 cm | 40d | 2027-07-26 | 2027-09-20 | 104 |  |  | 2027-06-25 | 2027-08-23 | 40d | 2027-06-24 | 2027-08-20 | 3d | 0d |  |  |  | Seguimiento | 2.40 | Albañileria | Primer Piso |
| 62 | 1.3.3.48 | L2 - Losa tanque | 10d | 2027-09-21 | 2027-10-04 | 61 |  |  | 2027-08-24 | 2027-09-06 | 10d | 2027-08-23 | 2027-09-03 | 155d |  |  |  |  | Seguimiento | 2.41 | Albañileria | Cubierta |
| 63 | 1.3.3.49 | Hormigon de losa | 1d | 2027-09-21 | 2027-09-21 | 61 |  |  | 2027-08-24 | 2027-08-24 | 1d | 2027-08-23 | 2027-08-23 | 3d | 0d |  |  |  | Seguimiento |  | Externo | Primer Piso |

| ID | WBS | Task | Duration | Start | Finish | Predecessors | Baseline start | Baseline finish | Baseline duration | Baseline 1 start | Baseline 1 finish | Total slack | Free slack | Texto1 | Texto2 | Texto3 | Texto4 |
| --- | --- | --- | --- | --- | --- | --- | --- | --- | --- | --- | --- | --- | --- | --- | --- | --- | --- |
| 64 | 1.3.4 | **MAMPOSTERIA** | 208d | 2026-10-07 | 2027-08-06 |  |  |  |  |  |  | 0d |  |  |  |  |  |
| 65 | 1.3.4.1 | Mamposteria Ladrillo Hueco Portante 12x18x33 | 12d | 2026-12-07 | 2026-12-23 | 79 | 2026-09-08 | 2026-09-23 | 12d | 2026-11-05 | 2026-11-23 | 350d | 0d | Albañileria | Subsuelo 1 | Seguimiento | 2.41 |
| 66 | 1.3.4.2 | Mamposteria Ladrillo Hueco Portante 18x18x33 | 12d | 2026-12-07 | 2026-12-23 | 65FF | 2026-09-08 | 2026-09-23 | 12d | 2026-11-05 | 2026-11-23 | 350d |  | Albañileria | Subsuelo 1 | Seguimiento | 2.42 |
| 67 | 1.3.4.3 | Mamposteria Ladrillo Hueco Portante 12x18x33 PB | 35d | 2026-12-07 | 2027-01-27 | 79 | 2026-11-06 | 2026-12-29 | 35d | 2026-11-05 | 2026-12-28 | 0d |  | Albañileria | Planta Baja | Seguimiento | 2.43 |
| 68 | 1.3.4.4 | Mamposteria Ladrillo Hueco Portante 18x18x33 PB | 35d | 2026-12-07 | 2027-01-27 | 67FF | 2026-11-06 | 2026-12-29 | 35d | 2026-11-05 | 2026-12-28 | 327d |  | Albañileria | Planta Baja | Seguimiento | 2.44 |
| 69 | 1.3.4.5 | Mamposteria Ladrillo Hueco Portante 12x18x33 PA | 25d | 2027-05-21 | 2027-06-25 | 60 | 2027-04-23 | 2027-05-28 | 25d | 2027-04-22 | 2027-05-27 | 0d |  | Albañileria | Primer Piso | Seguimiento | 2.45 |
| 70 | 1.3.4.6 | Mamposteria Ladrillo Hueco Portante 18x18x33 PA | 25d | 2027-05-21 | 2027-06-25 | 69FF | 2027-04-23 | 2027-05-28 | 25d | 2027-04-22 | 2027-05-27 | 224d |  | Albañileria | Primer Piso | Seguimiento | 2.46 |
| 71 | 1.3.4.7 | Mamposteria de contención | 15d | 2026-10-07 | 2026-10-28 | 27 |  |  |  | 2026-09-16 | 2026-10-01 | 0d |  | Albañileria | Primer Piso | Seguimiento |  |
| 72 | 1.3.4.8 | Capa Aisladora Vertical Mamposteria de contención | 5d | 2026-10-29 | 2026-11-04 | 71 |  |  |  | 2026-10-02 | 2026-10-05 | 0d |  | Albañileria | Primer Piso | Seguimiento |  |
| 73 | 1.3.4.9 | Capa Aisladora Horizontal Mampostería | 7d | 2026-10-27 | 2026-11-04 | 72FF | 2026-09-24 | 2026-10-02 | 7d | 2026-09-25 | 2026-10-05 | 383d | 0d | Albañileria | Subsuelo 1 | Seguimiento | 2.47 |
| 74 | 1.3.4.10 | Capa Aisladora Horizontal bajo contrapiso | 2d | 2026-11-10 | 2026-11-11 | 13 | 2026-10-08 | 2026-10-09 | 2d | 2026-10-09 | 2026-10-12 | 378d |  | Albañileria | Planta Baja | Seguimiento | 2.48 |
| 75 | 1.3.4.11 | Capa Aisladora Vertical Mampostería - H: 50cm | 7d | 2026-10-27 | 2026-11-04 | 73FF | 2026-09-24 | 2026-10-02 | 7d | 2026-09-25 | 2026-10-05 | 383d |  | Albañileria | Subsuelo 1 | Seguimiento | 2.49 |
| 76 | 1.3.4.12 | Capa Aisladora Vertical Muros revestido de piedra con sika monotop 107 | 15d | 2027-03-16 | 2027-04-07 | 103 | 2027-02-16 | 2027-03-08 | 15d | 2027-02-15 | 2027-03-05 | 260d | 0d | Albañileria | Planta Baja | Seguimiento | 2.50 |
| 77 | 1.3.4.13 | Capa Aisladora Vertical Muros revestido de piedra con sika monotop 107 PLANTA ALTA | 10d | 2027-07-26 | 2027-08-06 | 104 | 2027-06-25 | 2027-07-08 | 10d | 2027-06-24 | 2027-07-07 | 185d | 0d | Albañileria | Primer Piso | Seguimiento |  |
| 78 | 1.3.5 | **CONTRAPISO Y CARPETAS** | 307d | 2026-11-10 | 2028-01-31 |  |  |  |  |  |  | 0d |  |  |  |  |  |
| 79 | 1.3.5.1 | Hormigón p/contrapiso Interior Casa e=10cm | 18d | 2026-11-10 | 2026-12-04 | 13 | 2026-10-12 | 2026-11-05 | 18d | 2026-10-09 | 2026-11-04 | 0d |  | Albañileria | Planta Baja | Seguimiento | 2.51 |
| 80 | 1.3.5.2 | Hormigón p/contrapiso Exterior Galería/Quincho/Atelier/Pasillos exteriores e=10cm | 7d | 2026-12-07 | 2026-12-16 | 79 | 2026-10-28 | 2026-11-05 | 7d | 2026-11-05 | 2026-11-13 | 355d |  | Albañileria | Planta Baja | Seguimiento | 2.52 |
| 81 | 1.3.5.3 | Hormigon contrapiso primer etapa | 1d | 2026-12-07 | 2026-12-07 | 79 | 2026-11-06 | 2026-11-06 | 1d | 2026-11-05 | 2026-11-05 | 361d | 0d | Albañileria | Planta Baja | Seguimiento |  |
| 82 | 1.3.5.4 | Hormigón p/contrapiso Exterior Cochera e=10cm | 10d | 2026-11-24 | 2026-12-07 | 81FF | 2026-10-26 | 2026-11-06 | 10d | 2026-10-23 | 2026-11-05 | 361d |  | Albañileria | Planta Baja | Seguimiento | 2.53 |
| 83 | 1.3.5.5 | Hormigón p/contrapiso Exterior Escalones Ingreso Peatonal e=10cm | 10d | 2028-01-17 | 2028-01-28 | 107 | 2027-12-21 | 2028-01-03 | 10d | 2027-12-20 | 2027-12-31 | 73d | 0d | Albañileria | Planta Baja | Seguimiento | 2.54 |
| 84 | 1.3.5.6 | Hormigón p/contrapiso Exterior Deck Solarium y deck fogonero e=10cm | 10d | 2028-01-17 | 2028-01-28 | 83FF | 2027-12-21 | 2028-01-03 | 10d | 2027-12-20 | 2027-12-31 | 74d |  | Albañileria | Planta Baja | Seguimiento | 2.55 |
| 85 | 1.3.5.7 | Hormigon contrapiso segunda etapa | 1d | 2028-01-31 | 2028-01-31 | 83 | 2028-01-04 | 2028-01-04 | 1d | 2028-01-03 | 2028-01-03 | 73d | 0d | Albañileria | Planta Baja | Seguimiento |  |
| 86 | 1.3.5.8 | Carpeta de Nivelación Interior Casa e=10cm | 9d | 2027-11-05 | 2027-11-17 | 180 | 2027-10-08 | 2027-10-21 | 9d | 2027-10-07 | 2027-10-20 | 2d | 0d | Albañileria | Planta Baja | Seguimiento | 2.56 |
| 87 | 1.3.5.9 | Carpeta de Nivelación Exterior Galería/Quincho/Atelier/Pasillos exteriores e=4cm | 5d | 2027-11-11 | 2027-11-17 | 86FF | 2027-10-15 | 2027-10-21 | 5d | 2027-10-14 | 2027-10-20 | 124d |  | Albañileria | Planta Baja | Seguimiento | 2.57 |
| 88 | 1.3.5.10 | Carpeta de Nivelación Exterior Cochera e=4cm | 10d | 2027-11-04 | 2027-11-17 | 86FF | 2027-10-07 | 2027-10-21 | 10d | 2027-10-06 | 2027-10-20 | 124d |  | Albañileria | Planta Baja | Seguimiento | 2.58 |
| 89 | 1.3.5.11 | Carpeta de Nivelación ExteriorEscalones Ingreso Peatonal e=4cm | 7d | 2027-11-09 | 2027-11-17 | 86FF | 2027-10-12 | 2027-10-21 | 7d | 2027-10-11 | 2027-10-20 | 124d |  | Albañileria | Planta Baja | Seguimiento | 2.59 |
| 90 | 1.3.5.12 | Carpeta de Nivelación ExteriorDeck Solarium y deck fogonero e=4cm | 5d | 2027-11-11 | 2027-11-17 | 86FF | 2027-10-15 | 2027-10-21 | 5d | 2027-10-14 | 2027-10-20 | 124d |  | Albañileria | Planta Baja | Seguimiento | 2.60 |
| 91 | 1.3.5.13 | Hormigon carpetas planta baja | 1d | 2027-11-19 | 2027-11-19 | 86 | 2027-10-22 | 2027-10-22 | 1d | 2027-10-21 | 2027-10-21 | 2d | 0d | Externo | Planta Baja | Seguimiento |  |
| 92 | 1.3.5.14 | Carpeta de Nievelación Interior Casa e=4cm | 10d | 2027-11-17 | 2027-12-01 | 181 | 2027-10-21 | 2027-11-03 | 10d | 2027-10-20 | 2027-11-02 | 63d | 0d | Albañileria | Primer Piso | Seguimiento | 2.61 |
| 93 | 1.3.5.15 | Carpeta de Nievelación Exterior Terraza e=4cm | 7d | 2027-11-23 | 2027-12-01 | 92FF | 2027-10-26 | 2027-11-03 | 7d | 2027-10-25 | 2027-11-02 | 115d |  | Albañileria | Primer Piso | Seguimiento | 2.62 |
| 94 | 1.3.5.16 | Carpeta de Nievelación Exterior Deck Terraza e=4cm | 7d | 2027-11-23 | 2027-12-01 | 92FF | 2027-10-26 | 2027-11-03 | 7d | 2027-10-25 | 2027-11-02 | 115d |  | Albañileria | Primer Piso | Seguimiento | 2.63 |
| 95 | 1.3.5.17 | Hormigon carpetas planta alta | 1d | 2027-12-02 | 2027-12-02 | 92 | 2027-11-04 | 2027-11-04 | 1d | 2027-11-03 | 2027-11-03 | 63d | 0d | Externo | Primer Piso | Seguimiento |  |
| 96 | 1.3.5.18 | Carpeta de Nivelación de Cubierta e=4 cm (techo PB) | 5d | 2027-11-03 | 2027-11-09 | 97 | 2027-10-05 | 2027-10-11 | 5d | 2027-10-04 | 2027-10-08 | 130d |  | Albañileria | Primer Piso | Seguimiento | 2.64 |
| 97 | 1.3.5.19 | Carpeta de Nivelación de Cubierta e=4 cm (techo PA) | 12d | 2027-10-18 | 2027-11-02 | 100 | 2027-09-17 | 2027-10-04 | 12d | 2027-09-16 | 2027-10-01 | 31d | 0d | Albañileria | Cubierta | Seguimiento | 2.65 |
| 98 | 1.3.5.20 | Cubierta común sobre Losa - Hormigon de Pendiente (carga) - 10 cm (techo PB) | 7d | 2027-10-05 | 2027-10-14 | 99FF | 2027-09-07 | 2027-09-15 | 7d | 2027-09-06 | 2027-09-14 | 148d |  | Albañileria | Primer Piso | Seguimiento | 2.66 |
| 99 | 1.3.5.21 | Cubierta común sobre Losa - Hormigon de Pendiente (carga) - 10 cm (techo PA) | 10d | 2027-09-30 | 2027-10-14 | 159 | 2027-09-02 | 2027-09-15 | 10d | 2027-09-01 | 2027-09-14 | 31d | 0d | Albañileria | Cubierta | Seguimiento | 2.67 |
| 100 | 1.3.5.22 | Hormigon de carga | 1d | 2027-10-15 | 2027-10-15 | 99 | 2027-09-16 | 2027-09-16 | 1d | 2027-09-15 | 2027-09-15 | 31d | 0d | Externo | Cubierta | Seguimiento |  |
| 101 | 1.3.5.23 | Impermeabilización en cubierta total (con parapeto-h:20cm)* | 10d | 2027-11-03 | 2027-11-16 | 97 | 2027-10-05 | 2027-10-19 | 10d | 2027-10-04 | 2027-10-18 | 31d | 0d | Albañileria | Cubierta | Seguimiento | 2.68 |

Notes:
- 65: Podemos agregar en niveles uno que día Fundaciones

| ID | WBS | Task | Duration | Start | Finish | Predecessors | Baseline start | Baseline finish | Baseline duration | Baseline 1 start | Baseline 1 finish | Total slack | Free slack | Texto1 | Texto2 | Texto3 | Texto4 |
| --- | --- | --- | --- | --- | --- | --- | --- | --- | --- | --- | --- | --- | --- | --- | --- | --- | --- |
| 102 | 1.3.6 | **REVOQUES** | 263d | 2027-01-28 | 2028-02-14 |  |  |  |  |  |  | 0d |  |  |  |  |  |
| 103 | 1.3.6.1 | Revoque c/ azotado hidrof. cementicio en mamp. | 20d | 2027-02-16 | 2027-03-15 | 105 | 2027-01-18 | 2027-02-15 | 20d | 2027-01-15 | 2027-02-12 | 0d |  | Albañileria | Planta Baja | Seguimiento | 2.69 |
| 104 | 1.3.6.2 | Revoque c/ azotado hidrof. cementicio en mamp. | 12d | 2027-07-07 | 2027-07-23 | 106 | 2027-06-09 | 2027-06-24 | 12d | 2027-06-08 | 2027-06-23 | 3d | 0d | Albañileria | Primer Piso | Seguimiento | 2.70 |
| 105 | 1.3.6.3 | Azotado Cementicio Interior | 12d | 2027-01-28 | 2027-02-15 | 67 | 2026-12-30 | 2027-01-15 | 12d | 2026-12-29 | 2027-01-14 | 0d |  | Albañileria | Planta Baja | Seguimiento | 2.71 |
| 106 | 1.3.6.4 | Azotado Cementicio Interior | 7d | 2027-06-28 | 2027-07-06 | 69 | 2027-05-31 | 2027-06-08 | 7d | 2027-05-28 | 2027-06-07 | 0d |  | Albañileria | Primer Piso | Seguimiento | 2.72 |
| 107 | 1.3.6.5 | Revoque Fino Exterior | 18d | 2027-12-22 | 2028-01-14 | 108 | 2027-11-24 | 2027-12-20 | 18d | 2027-11-23 | 2027-12-17 | 72d | 0d | Albañileria | Planta Baja | Seguimiento | 2.73 |
| 108 | 1.3.6.6 | Revoque Fino Exterior | 12d | 2027-12-03 | 2027-12-21 | 95 | 2027-11-05 | 2027-11-23 | 12d | 2027-11-04 | 2027-11-22 | 63d | 0d | Albañileria | Primer Piso | Seguimiento | 2.74 |
| 109 | 1.3.6.7 | Engrosado + Enlucido de Yeso | 15d | 2028-01-24 | 2028-02-14 | 112 | 2027-12-27 | 2028-01-14 | 15d | 2027-12-24 | 2028-01-13 | 31d | 0d | Yesero | Planta Baja | Seguimiento | 2.75 |
| 110 | 1.3.6.8 | Engrosado + Enlucido de Yeso | 10d | 2027-12-23 | 2028-01-05 | 120 | 2027-11-24 | 2027-12-07 | 10d | 2027-11-23 | 2027-12-06 | 31d | 0d | Yesero | Primer Piso | Seguimiento | 2.76 |
| 111 | 1.3.7 | **CIELORRASO** | 264d | 2027-03-16 | 2028-03-31 |  |  |  |  |  |  | 31d |  |  |  |  |  |
| 112 | 1.3.7.1 | Cielorraso de Yeso (engrosado+enlucido) - interior | 12d | 2028-01-06 | 2028-01-21 | 110 | 2027-12-09 | 2027-12-24 | 12d | 2027-12-07 | 2027-12-23 | 31d | 0d | Yesero | Planta Baja | Seguimiento | 2.77 |
| 113 | 1.3.7.2 | Cielorraso de durlock (ubicación equipos AA°) - interior | 10d | 2028-02-22 | 2028-03-06 | 175 | 2028-01-24 | 2028-02-04 | 10d | 2028-01-21 | 2028-02-03 | 31d | 0d | Durlero | Planta Baja | Seguimiento | 2.78 |
| 114 | 1.3.7.3 | Cielorraso de Rev. Grueso - Exterior | 10d | 2027-03-16 | 2027-03-30 | 103 | 2027-02-16 | 2027-03-01 | 10d | 2027-02-15 | 2027-02-26 | 285d |  | Albañileria | Planta Baja | Seguimiento | 2.79 |
| 115 | 1.3.7.4 | Cielorraso de Rev. Fino - Exterior | 12d | 2028-01-17 | 2028-02-01 | 107 | 2027-12-21 | 2028-01-05 | 12d | 2027-12-20 | 2028-01-04 | 72d |  | Albañileria | Planta Baja | Seguimiento | 2.80 |
| 116 | 1.3.7.5 | Cielorraso de Rev. plastico - Exterior | 12d | 2028-01-05 | 2028-01-20 | 263 | 2027-12-09 | 2027-12-24 | 12d | 2027-12-07 | 2027-12-23 | 80d |  | Albañileria | Planta Baja | Seguimiento | 2.81 |
| 117 | 1.3.7.6 | Cielorraso de revestimiento de madera (cochera)* | 8d | 2028-03-21 | 2028-03-31 | 125FF | 2028-02-22 | 2028-03-02 | 8d | 2028-02-21 | 2028-03-01 | 31d |  | Durlero | Planta Baja | Seguimiento | 2.82 |
| 118 | 1.3.7.7 | Cortinero (estructura + emplacado) | 5d | 2028-02-29 | 2028-03-06 | 113FF | 2028-01-31 | 2028-02-04 | 5d | 2028-01-28 | 2028-02-03 | 49d |  | Durlero | Planta Baja | Seguimiento | 2.83 |
| 119 | 1.3.7.8 | Cielorraso de Yeso interior (engrosado+enlucido) h: 2,80m | 10d | 2027-11-17 | 2027-12-01 | 101 | 2027-10-20 | 2027-11-02 | 10d | 2027-10-19 | 2027-11-01 | 31d | 0d | Yesero | Primer Piso | Seguimiento | 2.84 |
| 120 | 1.3.7.9 | Cielorraso de Yeso interior (engrosado+enlucido) h: 6,00m | 14d | 2027-12-02 | 2027-12-22 | 119 | 2027-11-03 | 2027-11-23 | 14d | 2027-11-02 | 2027-11-22 | 31d | 0d | Yesero | Primer Piso | Seguimiento | 2.85 |
| 121 | 1.3.7.10 | Cielorraso de durlock (ubicación equipos AA°) - interior | 10d | 2028-03-07 | 2028-03-20 | 113 | 2028-02-07 | 2028-02-21 | 10d | 2028-02-04 | 2028-02-18 | 31d | 0d | Durlero | Primer Piso | Seguimiento | 2.86 |
| 122 | 1.3.7.11 | Cielorraso de Rev. Grueso - Exterior | 10d | 2027-07-26 | 2027-08-06 | 104 | 2027-06-25 | 2027-07-08 | 10d | 2027-06-24 | 2027-07-07 | 195d |  | Albañileria | Primer Piso | Seguimiento | 2.87 |
| 123 | 1.3.7.12 | Cielorraso de Rev. Fino - Exterior | 12d | 2027-12-22 | 2028-01-06 | 108 | 2027-11-24 | 2027-12-10 | 12d | 2027-11-23 | 2027-12-09 | 90d |  | Albañileria | Primer Piso | Seguimiento | 2.88 |
| 124 | 1.3.7.13 | Cielorraso de Rev. plastico - Exterior | 12d | 2028-01-28 | 2028-02-15 | 269 | 2028-01-03 | 2028-01-18 | 12d | 2027-12-31 | 2028-01-17 | 63d |  | Albañileria | Primer Piso | Seguimiento | 2.89 |
| 125 | 1.3.7.14 | Cielorraso de revestimiento de madera h: 5,90m* | 8d | 2028-03-21 | 2028-03-31 | 121 | 2028-02-22 | 2028-03-02 | 8d | 2028-02-21 | 2028-03-01 | 31d | 0d | Durlero | Primer Piso | Seguimiento | 2.90 |
| 126 | 1.3.7.15 | Cielorraso de revestimiento de madera h: 2,55m* | 8d | 2028-03-21 | 2028-03-31 | 125FF | 2028-02-22 | 2028-03-02 | 8d | 2028-02-21 | 2028-03-01 | 31d |  | Durlero | Primer Piso | Seguimiento | 2.91 |
| 127 | 1.3.7.16 | Cortinero (estructura + emplacado) | 5d | 2028-03-14 | 2028-03-20 | 121FF | 2028-02-15 | 2028-02-21 | 5d | 2028-02-14 | 2028-02-18 | 39d |  | Durlero | Primer Piso | Seguimiento | 2.92 |

| ID | WBS | Task | Duration | Start | Finish | Predecessors | Baseline start | Baseline finish | Baseline duration | Baseline 1 start | Baseline 1 finish | Total slack | Free slack | Texto1 | Texto2 | Texto3 | Texto4 |
| --- | --- | --- | --- | --- | --- | --- | --- | --- | --- | --- | --- | --- | --- | --- | --- | --- | --- |
| 128 | 1.3.8 | **VARIOS** | 312d | 2026-12-01 | 2028-02-28 |  |  |  |  |  |  | 54d |  |  |  |  |  |
| 129 | 1.3.8.1 | Escalera de Hº Aº in situ (huella de madera) - PB a PA | 7d | 2027-05-12 | 2027-05-20 | 60FF | 2027-04-14 | 2027-04-22 | 7d | 2027-04-13 | 2027-04-21 | 249d |  | Albañileria | Planta Baja | Seguimiento | 2.87 |
| 130 | 1.3.8.2 | Escalera de Hº Aº Visto con escalones en voladizo - PB a PA | 10d | 2028-02-15 | 2028-02-28 | 109 | 2028-01-17 | 2028-01-28 | 10d | 2028-01-14 | 2028-01-27 | 54d |  | Albañileria | Planta Baja | Seguimiento | 2.88 |
| 131 | 1.3.8.3 | Asador + horno (3,00 m de largo) | 5d | 2027-01-21 | 2027-01-27 | 67FF | 2026-12-22 | 2026-12-29 | 5d | 2026-12-21 | 2026-12-28 | 327d |  | Albañileria | Planta Baja | Seguimiento | 2.89 |
| 132 | 1.3.8.4 | Veredas Perimetrales con Cordon - Ancho 40cm* | 5d | 2026-12-01 | 2026-12-07 | 81FF | 2026-11-02 | 2026-11-06 | 5d | 2026-10-30 | 2026-11-05 | 361d |  | Albañileria | Planta Baja | Seguimiento | 2.90 |
| 133 | 1.3.9 | **HERRERIA** | 113d | 2027-01-14 | 2027-06-25 |  | 2026-12-15 | 2027-05-28 | 113d | 2026-12-14 | 2027-05-27 | 224d |  |  |  |  | 3 |
| 134 | 1.3.9.1 | CM01- 2UPN 200 (7 columnas) 3,00 mts de largo | 10d | 2027-01-14 | 2027-01-27 | 67FF | 2026-12-15 | 2026-12-29 | 10d | 2026-12-14 | 2026-12-28 | 320d | 0d | Herrería | Planta Baja | Seguimiento | 3.01 |
| 135 | 1.3.9.2 | CM02- 2UPN 100 (12 columnas) 3,00 mts de largo | 10d | 2027-01-14 | 2027-01-27 | 134FF | 2026-12-15 | 2026-12-29 | 10d | 2026-12-14 | 2026-12-28 | 327d |  | Herrería | Planta Baja | Seguimiento | 3.02 |
| 136 | 1.3.9.3 | CM02- 2UPN 100 (4 columnas) 3,00 mts de largo | 5d | 2027-06-21 | 2027-06-25 | 69FF | 2027-05-21 | 2027-05-28 | 5d | 2027-05-20 | 2027-05-27 | 224d |  | Herrería | Primer Piso | Seguimiento | 3.03 |
| 137 | 1.3.9.4 | PW - Perfil W360x32,9kg | 7d | 2027-01-28 | 2027-02-05 | 134 | 2026-12-30 | 2027-01-08 | 7d | 2026-12-29 | 2027-01-07 | 320d | 0d | Herrería | Planta Baja | Seguimiento | 3.04 |
| 138 | 1.3.9.5 | PW - Perfil W360x32,9kg | 7d | 2027-01-28 | 2027-02-05 | 137FF | 2026-12-30 | 2027-01-08 | 7d | 2026-12-29 | 2027-01-07 | 320d |  | Herrería | Planta Baja | Seguimiento | 3.05 |
| 139 | 1.3.9.6 | PW - Perfil W360x32,9kg | 7d | 2027-01-28 | 2027-02-05 | 137FF | 2026-12-30 | 2027-01-08 | 7d | 2026-12-29 | 2027-01-07 | 320d | 0d | Herrería | Planta Baja | Seguimiento | 3.06 |
| 140 | 1.3.9.7 | Asador - conducto de ventilacion 3,00m - 30 diam. | 3d | 2027-05-17 | 2027-05-19 | 57FF | 2027-04-19 | 2027-04-21 | 3d | 2027-04-16 | 2027-04-20 | 250d | 0d | Herrería | Planta Baja | Seguimiento | 3.07 |
| 141 | 1.3.10 | **INSTALACIONES SANITARIAS** | 380d | 2026-11-10 | 2028-05-16 |  | 2026-10-08 | 2028-04-17 | 382d | 2026-10-09 | 2028-04-14 | 0d |  |  |  |  | 4 |
| 142 | 1.3.10.1 | Desagues pluviales (sin zinguería) con colocacion de cámaras de inspección | 12d | 2027-06-23 | 2027-07-08 | 143 | 2027-05-26 | 2027-06-10 | 12d | 2027-05-24 | 2027-06-09 | 208d | 0d | Plomeria | Planta Baja | Seguimiento | 4.01 |
| 143 | 1.3.10.2 | Desagues pluviales vertical | 10d | 2027-06-09 | 2027-06-22 | 60FS+12d | 2027-05-11 | 2027-05-24 | 10d | 2027-05-10 | 2027-05-21 | 208d | 0d | Plomeria | Planta Baja | Seguimiento |  |
| 144 | 1.3.10.3 | Desagues pluviales vertical | 10d | 2027-10-08 | 2027-10-22 | 63FS+12d | 2027-09-10 | 2027-09-23 | 10d | 2027-09-09 | 2027-09-22 | 142d |  | Plomeria | Primer Piso | Seguimiento |  |
| 145 | 1.3.10.4 | Desagues pluviales - embudos | 3d | 2027-05-17 | 2027-05-19 | 57FF | 2027-04-19 | 2027-04-21 | 3d | 2027-04-16 | 2027-04-20 | 250d |  | Plomeria | Planta Baja | Seguimiento |  |
| 146 | 1.3.10.5 | Desagues pluviales - embudos | 3d | 2027-09-16 | 2027-09-20 | 61FF | 2027-08-19 | 2027-08-23 | 3d | 2027-08-17 | 2027-08-20 | 165d |  | Plomeria | Primer Piso | Seguimiento |  |
| 147 | 1.3.10.6 | Instalación de cloacas para 4 baños (1 completo y 3 sin ducha) en PB, 1 pileta de cocina, 1 pileta de asador, 1 pileta en lavadero, 1 pileta de atelier, lavarropas, lavavajilla, heladera; 3 baños completos en PA.* | 10d | 2026-11-10 | 2026-11-24 | 13 | 2026-10-08 | 2026-10-22 | 10d | 2026-10-09 | 2026-10-23 | 370d |  | Plomeria | Planta Baja | Seguimiento | 4.02 |
| 148 | 1.3.10.7 | Instalación de baños planta alta | 10d | 2027-09-22 | 2027-10-05 | 63 | 2027-08-25 | 2027-09-07 | 10d | 2027-08-24 | 2027-09-06 | 147d | 0d | Plomeria | Primer Piso | Seguimiento |  |
| 149 | 1.3.10.8 | Instalación de jacuzzi (agua y desague cloacal) | 7d | 2027-10-06 | 2027-10-15 | 148 | 2027-09-08 | 2027-09-16 | 7d | 2027-09-07 | 2027-09-15 | 147d |  | Plomeria | Primer Piso | Seguimiento | 4.03 |
| 150 | 1.3.10.9 | Desagues de 5 Equipos AA Bajo Silueta en PB, 5 Equipos AA Bajo Silueta en PA. | 3d | 2028-02-22 | 2028-02-24 | 175 | 2028-01-24 | 2028-01-26 | 3d | 2028-01-21 | 2028-01-25 | 56d |  | Plomeria | Planta Baja | Seguimiento | 4.04 |
| 151 | 1.3.10.10 | Desague de 5 equipos AA bajo silueta en PA | 3d | 2028-02-29 | 2028-03-02 | 176 | 2028-01-31 | 2028-02-02 | 3d | 2028-01-28 | 2028-02-01 | 51d |  | Plomeria | Primer Piso | Seguimiento |  |
| 152 | 1.3.10.11 | Conexión a red cloacal del barrio | 7d | 2027-07-12 | 2027-07-20 | 142 | 2027-06-11 | 2027-06-21 | 7d | 2027-06-10 | 2027-06-18 | 208d |  | Plomeria | Planta Baja | Seguimiento | 4.05 |
| 153 | 1.3.10.12 | Colocacion de artefactos sanitarios PB | 5d | 2028-04-18 | 2028-04-24 | 289FS+15d | 2028-03-20 | 2028-03-27 | 5d | 2028-03-17 | 2028-03-23 | 8d | 0d | Plomeria | Planta Baja | Seguimiento | 4.06 |
| 154 | 1.3.10.13 | Colocacion de artefactos sanitarios PA | 5d | 2028-04-25 | 2028-05-02 | 153 | 2028-03-28 | 2028-04-03 | 5d | 2028-03-27 | 2028-03-31 | 8d | 0d | Plomeria | Primer Piso | Seguimiento | 4.06 |
| 155 | 1.3.10.14 | Instalación de agua para 4 baños (1 completo y 3 sin ducha) en PB, 1 pileta de cocina, 1 pileta de asador, 1 pileta en lavadero, 1 pileta de atelier, lavarropas, lavavajilla, heladera; 3 baños completos en PA.* | 15d | 2027-02-16 | 2027-03-08 | 105 | 2027-01-18 | 2027-02-05 | 15d | 2027-01-15 | 2027-02-04 | 300d |  | Plomeria | Planta Baja | Seguimiento | 4.06 |
| 156 | 1.3.10.15 | Instalación de agua para 4 baños (1 completo y 3 sin ducha) en PB, 1 pileta de cocina, 1 pileta de asador, 1 pileta en lavadero, 1 pileta de atelier, lavarropas, lavavajilla, heladera; 3 baños completos en PA.* | 10d | 2027-07-07 | 2027-07-21 | 106 | 2027-06-09 | 2027-06-22 | 10d | 2027-06-08 | 2027-06-21 | 160d | 0d | Plomeria | Primer Piso | Seguimiento |  |
| 157 | 1.3.10.16 | Alimentación de agua para válvulas de inodoros con descarga directa desde tanques | 10d | 2027-09-30 | 2027-10-14 | 159 | 2027-09-02 | 2027-09-15 | 10d | 2027-09-01 | 2027-09-14 | 138d | 0d | Plomeria | Primer Piso | Seguimiento | 4.07 |
| 158 | 1.3.10.17 | Alimentación de agua para válvulas de inodoros con descarga directa desde tanques PLANTA BAJA | 10d | 2027-10-15 | 2027-10-28 | 157 | 2027-09-16 | 2027-09-29 | 10d | 2027-09-15 | 2027-09-28 | 138d |  | Plomeria | Planta Baja | Seguimiento | 4.07 |
| 159 | 1.3.10.18 | Alimentación de agua a tanques de reserva y 6 canillas en patio | 7d | 2027-09-21 | 2027-09-29 | 61 | 2027-08-24 | 2027-09-01 | 7d | 2027-08-23 | 2027-08-31 | 31d | 0d | Plomeria | Cubierta | Seguimiento | 4.08 |
| 160 | 1.3.10.19 | Instalación de cañería para recirculación de agua caliente | 15d | 2027-07-22 | 2027-08-11 | 156 | 2027-06-23 | 2027-07-14 | 15d | 2027-06-22 | 2027-07-13 | 160d | 0d | Plomeria | Planta Baja | Seguimiento | 4.09 |
| 161 | 1.3.10.20 | Instalación de cañería para recirculación de agua caliente PLANTA ALTA | 12d | 2027-08-12 | 2027-08-30 | 160 | 2027-07-15 | 2027-07-30 | 12d | 2027-07-14 | 2027-07-29 | 160d | 0d | Plomeria | Primer Piso | Seguimiento | 4.09 |
| 162 | 1.3.10.21 | Instalación de bomba hidroneumática bajo tanque | 2d | 2028-05-03 | 2028-05-04 | 154 | 2028-04-04 | 2028-04-05 | 2d | 2028-04-03 | 2028-04-04 | 8d |  | Plomeria | Cubierta | Seguimiento | 4.10 |
| 163 | 1.3.10.22 | Colocacion de griferias PB | 5d | 2028-04-18 | 2028-04-24 | 290 | 2028-03-20 | 2028-03-27 | 5d | 2028-03-17 | 2028-03-23 | 0d |  | Plomeria | Planta Baja | Seguimiento | 4.10 |
| 164 | 1.3.10.23 | Colocacion de griferias PA | 5d | 2028-04-25 | 2028-05-02 | 163 | 2028-03-28 | 2028-04-03 | 5d | 2028-03-27 | 2028-03-31 | 0d |  | Plomeria | Primer Piso | Seguimiento | 4.10 |
| 165 | 1.3.10.24 | Colocacion de accesorios PB | 5d | 2028-05-03 | 2028-05-09 | 164 | 2028-04-04 | 2028-04-10 | 5d | 2028-04-03 | 2028-04-07 | 0d |  | Plomeria | Planta Baja | Seguimiento | 4.10 |
| 166 | 1.3.10.25 | Colocacion de accesorios PA | 5d | 2028-05-10 | 2028-05-16 | 165 | 2028-04-11 | 2028-04-17 | 5d | 2028-04-10 | 2028-04-14 | 0d |  | Plomeria | Primer Piso | Seguimiento | 4.10 |
| 167 | 1.3.10.26 | Instalación de gas para anafe, horno cocina, horno quincho, termotanque y caldera en PB, termotanque y caldera en PA* | 15d | 2027-08-31 | 2027-09-20 | 161 | 2027-08-02 | 2027-08-23 | 15d | 2027-07-30 | 2027-08-20 | 160d | 0d | Plomeria | Planta Baja | Seguimiento | 4.11 |
| 168 | 1.3.10.27 | Instalación de gas para anafe, horno cocina, horno quincho, termotanque y caldera en PB, termotanque y caldera en PA* PLANTA ALTA | 15d | 2027-08-31 | 2027-09-20 | 167FF | 2027-08-02 | 2027-08-23 | 15d | 2027-07-30 | 2027-08-20 | 165d |  | Plomeria | Primer Piso | Seguimiento |  |
| 169 | 1.3.10.28 | Ventilaciones para gas. Conductos y rejillas. | 3d | 2028-02-15 | 2028-02-17 | 109 | 2028-01-17 | 2028-01-19 | 3d | 2028-01-14 | 2028-01-18 | 61d |  | Plomeria | Planta Baja | Seguimiento | 4.12 |
| 170 | 1.3.10.29 | Factibilidad de gas y plano aprobación de cañerías (se pagan en el momento) | 5d | 2027-09-21 | 2027-09-27 | 167 | 2027-08-24 | 2027-08-30 | 5d | 2027-08-23 | 2027-08-27 | 160d |  | Plomeria | Planta Baja | Seguimiento | 4.13 |
| 171 | 1.3.10.30 | Segunda inspección parcial de cañerías y ventilaciones. | 1d | 2028-02-21 | 2028-02-21 | 281 | 2028-01-21 | 2028-01-21 | 1d | 2028-01-20 | 2028-01-20 | 59d |  | Plomeria | Planta Baja | Seguimiento | 4.14 |
| 172 | 1.3.10.31 | Solicitud de servicio domiciliario (no incluye aranceles Ecogas). | 1d | 2028-04-03 | 2028-04-03 | 173 | 2028-03-03 | 2028-03-03 | 1d | 2028-03-02 | 2028-03-02 | 30d |  | Plomeria | Planta Baja | Seguimiento | 4.15 |
| 173 | 1.3.10.32 | Final de gas con artefactos colocados. | 1d | 2028-03-31 | 2028-03-31 | 174 | 2028-03-02 | 2028-03-02 | 1d | 2028-03-01 | 2028-03-01 | 30d | 0d | Plomeria | Planta Baja | Seguimiento | 4.16 |
| 174 | 1.3.10.33 | Colocacion de artefactos a gas | 3d | 2028-03-28 | 2028-03-30 | 289 | 2028-02-28 | 2028-03-01 | 3d | 2028-02-25 | 2028-02-29 | 30d | 0d | Plomeria | Planta Baja | Seguimiento | 4.16 |
| 175 | 1.3.10.34 | Sistema Bajo Silueta en PB | 5d | 2028-02-15 | 2028-02-21 | 109 | 2028-01-17 | 2028-01-21 | 5d | 2028-01-14 | 2028-01-20 | 31d | 0d | Plomeria | Planta Baja | Seguimiento | 4.17 |
| 176 | 1.3.10.35 | Sistema Bajo Silueta en PA | 5d | 2028-02-22 | 2028-02-28 | 175 | 2028-01-24 | 2028-01-28 | 5d | 2028-01-21 | 2028-01-27 | 51d | 0d | Plomeria | Primer Piso | Seguimiento | 4.18 |
| 177 | 1.3.10.36 | Instalación de cobres | 7d | 2027-10-01 | 2027-10-11 | 99FF-3ed | 2027-09-02 | 2027-09-12 | 7d | 2027-09-02 | 2027-09-11 | 150d |  | Plomeria |  | Seguimiento |  |
| 178 | 1.3.10.37 | Losa Radiante - 5 Colectores con 2 zonas - PB | 3d | 2027-10-22 | 2027-10-26 | 63FS+30ed | 2027-09-24 | 2027-09-28 | 3d | 2027-09-23 | 2027-09-27 | 2d | 0d | Externo | Planta Baja | Seguimiento | 4.19 |
| 179 | 1.3.10.38 | Losa Radiante - 3 Colectores con 1 zona - PA | 3d | 2027-11-05 | 2027-11-09 | 180 | 2027-10-08 | 2027-10-12 | 3d | 2027-10-07 | 2027-10-11 | 63d | 0d | Externo | Primer Piso | Seguimiento | 4.20 |
| 180 | 1.3.10.39 | Piso Radiante - PB | 7d | 2027-10-27 | 2027-11-04 | 178 | 2027-09-29 | 2027-10-07 | 7d | 2027-09-28 | 2027-10-06 | 2d | 0d | Externo | Planta Baja | Seguimiento | 4.21 |
| 181 | 1.3.10.40 | Piso Radiante - PA | 5d | 2027-11-10 | 2027-11-16 | 179 | 2027-10-14 | 2027-10-20 | 5d | 2027-10-12 | 2027-10-19 | 63d | 0d | Externo | Primer Piso | Seguimiento | 4.22 |

| ID | WBS | Task | Duration | Start | Finish | Predecessors | Baseline start | Baseline finish | Baseline duration | Baseline 1 start | Baseline 1 finish | Total slack | Free slack | Texto4 | Texto1 | Texto2 | Texto3 |
| --- | --- | --- | --- | --- | --- | --- | --- | --- | --- | --- | --- | --- | --- | --- | --- | --- | --- |
| 182 | 1.3.11 | **INSTALACIONES ELECTRICAS Y SEÑALES DEBILES** | 455d? | 2026-07-13 | 2028-05-03 |  | 2026-07-13 | 2028-04-04 | 435d? | 2026-07-13 | 2028-04-03 | 9d |  | 5 |  |  |  |
| 183 | 1.3.11.1 | Bocas p/iluminacion techo | 3d | 2027-05-18 | 2027-05-20 | 60FF | 2027-04-20 | 2027-04-22 | 3d | 2027-04-19 | 2027-04-21 | 249d |  | 5.01 | Electricista | Planta Baja | Seguimiento |
| 184 | 1.3.11.2 | Bocas p/iluminacion pared | 10d | 2027-02-16 | 2027-03-01 | 105 | 2027-01-18 | 2027-01-29 | 10d | 2027-01-15 | 2027-01-28 | 303d | 0d | 5.02 | Electricista | Planta Baja | Seguimiento |
| 185 | 1.3.11.3 | Bocas p/iluminacion piso | 3d | 2026-12-02 | 2026-12-04 | 79FF | 2026-11-03 | 2026-11-05 | 3d | 2026-11-02 | 2026-11-04 | 362d |  | 5.03 | Electricista | Planta Baja | Seguimiento |
| 186 | 1.3.11.4 | Bocas p/ dicroica embutida interior | 3d | 2027-05-18 | 2027-05-20 | 60FF | 2027-04-20 | 2027-04-22 | 3d | 2027-04-19 | 2027-04-21 | 249d |  | 5.04 | Electricista | Planta Baja | Seguimiento |
| 187 | 1.3.11.5 | Bocas p/ dicroica embutida exterior | 3d | 2027-05-18 | 2027-05-20 | 60FF | 2027-04-20 | 2027-04-22 | 3d | 2027-04-19 | 2027-04-21 | 249d |  | 5.05 | Electricista | Planta Baja | Seguimiento |
| 188 | 1.3.11.6 | Tablero (por T.M y disyuntores) | 2d | 2027-03-02 | 2027-03-03 | 184 | 2027-02-01 | 2027-02-02 | 2d | 2027-01-29 | 2027-02-01 | 303d | 0d | 5.06 | Electricista | Planta Baja | Seguimiento |
| 189 | 1.3.11.7 | Tablero para Ascensor (por T.M y disyuntores) | 2d | 2027-03-02 | 2027-03-03 | 188FF | 2027-02-01 | 2027-02-02 | 2d | 2027-01-29 | 2027-02-01 | 303d |  | 5.06 | Electricista | Planta Baja | Seguimiento |
| 190 | 1.3.11.8 | Instalación de Jabalina | 1d | 2028-02-14 | 2028-02-14 | 197 | 2028-01-14 | 2028-01-14 | 1d | 2028-01-13 | 2028-01-13 | 54d | 0d | 5.07 | Electricista | Planta Baja | Seguimiento |
| 191 | 1.3.11.9 | Toma individul A.A | 5d | 2028-02-15 | 2028-02-21 | 190 | 2028-01-17 | 2028-01-21 | 5d | 2028-01-14 | 2028-01-20 | 54d | 0d | 5.08 | Electricista | Planta Baja | Seguimiento |
| 192 | 1.3.11.10 | Toma simple 20A | 5d | 2028-02-15 | 2028-02-21 | 191FF | 2028-01-17 | 2028-01-21 | 5d | 2028-01-14 | 2028-01-20 | 59d |  | 5.09 | Electricista | Planta Baja | Seguimiento |
| 193 | 1.3.11.11 | Toma doble 20A | 5d | 2028-02-15 | 2028-02-21 | 191FF | 2028-01-17 | 2028-01-21 | 5d | 2028-01-14 | 2028-01-20 | 59d |  | 5.10 | Electricista | Planta Baja | Seguimiento |
| 194 | 1.3.11.12 | Termostatos | 2d | 2027-02-26 | 2027-03-01 | 184FF | 2027-01-28 | 2027-01-29 | 2d | 2027-01-27 | 2027-01-28 | 305d |  | 5.11 | Electricista | Planta Baja | Seguimiento |
| 195 | 1.3.11.13 | Tiras Led aleros/nichos/espejos/placares/baso alacena mesada, etc | 5d | 2028-03-28 | 2028-04-03 | 289 | 2028-02-28 | 2028-03-03 | 5d | 2028-02-25 | 2028-03-02 | 9d | 0d | 5.12 | Electricista | Planta Baja | Seguimiento |
| 196 | 1.3.11.14 | Instalación artefactos comunes* | 8d | 2028-04-04 | 2028-04-13 | 195 | 2028-03-06 | 2028-03-15 | 8d | 2028-03-03 | 2028-03-14 | 9d | 0d | 5.13 | Electricista | Planta Baja | Seguimiento |
| 197 | 1.3.11.15 | Conexión de acometida a Tablero | 5d | 2028-02-04 | 2028-02-11 | 208 | 2028-01-07 | 2028-01-13 | 5d | 2028-01-06 | 2028-01-12 | 54d | 0d | 5.15 | Electricista | Planta Baja | Seguimiento |
| 198 | 1.3.11.16 | Cableado planta baja | 10d | 2028-01-07 | 2028-01-20 | 283 | 2027-12-10 | 2027-12-23 | 10d | 2027-12-09 | 2027-12-22 | 54d | 0d |  | Electricista | Planta Baja | Seguimiento |
| 199 | 1.3.11.17 | Bocas p/iluminacion techo | 3d | 2027-09-17 | 2027-09-21 | 63FF | 2027-08-20 | 2027-08-24 | 3d | 2027-08-19 | 2027-08-23 | 164d | 0d | 5.16 | Electricista | Primer Piso | Seguimiento |
| 200 | 1.3.11.18 | Bocas p/iluminacion pared | 7d | 2027-07-07 | 2027-07-16 | 106 | 2027-06-09 | 2027-06-17 | 7d | 2027-06-08 | 2027-06-16 | 208d | 0d | 5.17 | Electricista | Primer Piso | Seguimiento |
| 201 | 1.3.11.19 | Bocas p/iluminacion piso | 3d | 2027-11-05 | 2027-11-10 | 181SF | 2027-10-08 | 2027-10-14 | 3d | 2027-10-07 | 2027-10-12 | 130d |  | 5.18 | Electricista | Primer Piso | Seguimiento |
| 202 | 1.3.11.20 | Bocas p/ dicroica embutida interior | 3d | 2027-09-17 | 2027-09-21 | 199FF | 2027-08-20 | 2027-08-24 | 3d | 2027-08-19 | 2027-08-23 | 164d |  | 5.19 | Electricista | Primer Piso | Seguimiento |
| 203 | 1.3.11.21 | Bocas p/ dicroica embutida exterior | 3d | 2027-09-17 | 2027-09-21 | 199FF | 2027-08-20 | 2027-08-24 | 3d | 2027-08-19 | 2027-08-23 | 164d |  | 5.20 | Electricista | Primer Piso | Seguimiento |
| 204 | 1.3.11.22 | Tablero seccional (por T.M y disyuntores) | 2d | 2027-07-19 | 2027-07-20 | 200 | 2027-06-18 | 2027-06-21 | 2d | 2027-06-17 | 2027-06-18 | 208d |  | 5.21 | Electricista | Primer Piso | Seguimiento |
| 205 | 1.3.11.23 | Toma individul A.A | 5d | 2028-02-22 | 2028-02-28 | 191 | 2028-01-24 | 2028-01-28 | 5d | 2028-01-21 | 2028-01-27 | 54d | 0d | 5.22 | Electricista | Primer Piso | Seguimiento |
| 206 | 1.3.11.24 | Toma doble 20A | 5d | 2028-02-22 | 2028-02-28 | 205FF | 2028-01-24 | 2028-01-28 | 5d | 2028-01-21 | 2028-01-27 | 54d |  | 5.23 | Electricista | Primer Piso | Seguimiento |
| 207 | 1.3.11.25 | Termostatos | 3d | 2027-07-14 | 2027-07-16 | 200FF | 2027-06-15 | 2027-06-17 | 3d | 2027-06-14 | 2027-06-16 | 210d |  | 5.24 | Electricista | Primer Piso | Seguimiento |
| 208 | 1.3.11.26 | Cableado planta alta | 10d | 2028-01-21 | 2028-02-03 | 198 | 2027-12-24 | 2028-01-06 | 10d | 2027-12-23 | 2028-01-05 | 54d | 0d |  | Electricista | Primer Piso | Seguimiento |
| 209 | 1.3.11.27 | Tiras Led aleros/nichos/espejos/placares/baso alacena mesada, etc | 5d | 2028-04-14 | 2028-04-20 | 196 | 2028-03-16 | 2028-03-22 | 5d | 2028-03-15 | 2028-03-21 | 9d | 0d | 5.25 | Electricista | Primer Piso | Seguimiento |
| 210 | 1.3.11.28 | Instalación artefactos comunes* | 8d | 2028-04-21 | 2028-05-03 | 209 | 2028-03-23 | 2028-04-04 | 8d | 2028-03-22 | 2028-04-03 | 9d |  | 5.26 | Electricista | Primer Piso | Seguimiento |

| ID | WBS | Task | Duration | Start | Finish | Predecessors | Baseline start | Baseline finish | Baseline duration | Baseline 1 start | Baseline 1 finish | Total slack | Free slack | Texto1 | Texto2 | Texto3 | Texto4 |
| --- | --- | --- | --- | --- | --- | --- | --- | --- | --- | --- | --- | --- | --- | --- | --- | --- | --- |
| 211 | 1.3.11.29 | **Instalación y configuración de Cámaras (Señales Débiles)*** | 440d? | 2026-07-13 | 2028-04-11 |  | 2026-07-13 | 2028-03-13 | 420d? | 2026-07-13 | 2028-03-10 | 24d |  |  |  |  |  |
| 212 | 1.3.11.29.1 | Instalación de Cámara IP - PB | 10d | 2028-03-28 | 2028-04-10 | 289 | 2028-02-28 | 2028-03-10 | 10d | 2028-02-25 | 2028-03-09 | 24d | 0d | Externo | Planta Baja | Seguimiento | 5.27 |
| 213 | 1.3.11.29.2 | Central de Cámaras NVR | 1d | 2028-04-11 | 2028-04-11 | 212 | 2028-03-13 | 2028-03-13 | 1d | 2028-03-10 | 2028-03-10 | 24d |  | Externo | Planta Baja | Seguimiento | 5.28 |
| 214 | 1.3.11.29.3 | Instalación de camara IP - PB | 5d | 2028-01-11 | 2028-01-17 | 282 | 2027-12-14 | 2027-12-20 | 5d | 2027-12-13 | 2027-12-17 | 83d |  | Externo | Primer Piso | Seguimiento | 5.29 |
| 215 | 1.3.11.29.4 | Instalación y configuración de Portero (Señales Débiles)* | 1d? | 2026-07-13 | 2026-07-13 |  | 2026-07-13 | 2026-07-13 | 1d? | 2026-07-13 | 2026-07-13 | 463d |  | Externo |  |  |  |
| 216 | 1.3.11.29.5 | Instalación de Video Portero Visor con pantalla (ver ubicación de pantalla) - PB | 5d | 2028-04-04 | 2028-04-10 | 212FF | 2028-03-06 | 2028-03-10 | 5d | 2028-03-03 | 2028-03-09 | 25d |  | Externo | Planta Baja | Seguimiento | 5.30 |
| 217 | 1.3.11.29.6 | Instalación y configuración de Alarma (Señales Débiles)** | 1d? | 2026-07-13 | 2026-07-13 |  | 2026-07-13 | 2026-07-13 | 1d? | 2026-07-13 | 2026-07-13 | 463d |  | Externo |  |  |  |
| 218 | 1.3.11.29.7 | Instalación de sensor inalámbrico - PB | 7d | 2028-03-31 | 2028-04-10 | 212FF | 2028-03-02 | 2028-03-10 | 7d | 2028-03-01 | 2028-03-09 | 25d |  | Externo | Planta Baja | Seguimiento | 5.31 |
| 219 | 1.3.11.29.8 | Central de Alarma | 2d | 2028-04-07 | 2028-04-10 | 212FF | 2028-03-09 | 2028-03-10 | 2d | 2028-03-08 | 2028-03-09 | 25d |  | Externo | Planta Baja | Seguimiento | 5.32 |
| 220 | 1.3.11.29.9 | Tablero Alarma | 2d | 2028-04-07 | 2028-04-10 | 212FF | 2028-03-09 | 2028-03-10 | 2d | 2028-03-08 | 2028-03-09 | 25d |  | Externo | Planta Baja | Seguimiento | 5.33 |
| 221 | 1.3.11.29.10 | Sirena | 1d | 2028-04-10 | 2028-04-10 | 212FF | 2028-03-10 | 2028-03-10 | 1d | 2028-03-09 | 2028-03-09 | 25d |  | Externo | Planta Baja | Seguimiento | 5.34 |
| 222 | 1.3.11.29.11 | Instalación de sensor inalámbrico - PA | 7d | 2028-03-31 | 2028-04-10 | 212FF | 2028-03-02 | 2028-03-10 | 7d | 2028-03-01 | 2028-03-09 | 25d |  | Externo | Primer Piso | Seguimiento | 5.35 |
| 223 | 1.3.11.29.12 | Tablero Alarma | 2d | 2028-04-07 | 2028-04-10 | 212FF | 2028-03-09 | 2028-03-10 | 2d | 2028-03-08 | 2028-03-09 | 25d |  | Externo | Primer Piso | Seguimiento | 5.36 |
| 224 | 1.3.11.29.13 | Instalación y configuración de Red de Datos (Señales Débiles) | 1d? | 2026-07-13 | 2026-07-13 |  | 2026-07-13 | 2026-07-13 | 1d? | 2026-07-13 | 2026-07-13 | 463d |  | Externo |  |  |  |
| 225 | 1.3.11.29.14 | Instalación de Acces Point (repetidor) - PB | 5d | 2028-04-04 | 2028-04-10 | 212FF | 2028-03-06 | 2028-03-10 | 5d | 2028-03-03 | 2028-03-09 | 25d |  | Externo | Planta Baja | Seguimiento | 5.37 |
| 226 | 1.3.11.29.15 | Instalación de Switch POE (central derivador de datos)* | 5d | 2028-04-04 | 2028-04-10 | 212FF | 2028-03-06 | 2028-03-10 | 5d | 2028-03-03 | 2028-03-09 | 25d |  | Externo | Planta Baja | Seguimiento | 5.38 |
| 227 | 1.3.11.29.16 | Instalación de Rack para NVR, central y switches | 2d | 2028-04-07 | 2028-04-10 | 212FF | 2028-03-09 | 2028-03-10 | 2d | 2028-03-08 | 2028-03-09 | 25d |  | Externo | Planta Baja | Seguimiento | 5.39 |
| 228 | 1.3.11.29.17 | Instalación de Acces Point (repetidor) - PA | 5d | 2028-04-04 | 2028-04-10 | 212FF | 2028-03-06 | 2028-03-10 | 5d | 2028-03-03 | 2028-03-09 | 25d |  | Externo | Primer Piso | Seguimiento | 5.40 |
| 229 | 1.3.12 | **PISOS Y REVESTIMIENTOS** | 462d | 2026-07-13 | 2028-05-12 |  | 2026-07-13 | 2028-04-14 | 443d | 2026-07-13 | 2028-04-13 | 2d |  |  |  |  | 6 |
| 230 | 1.3.12.1 | **Pisos Interiores** | 52d | 2027-11-22 | 2028-02-02 |  | 2026-07-13 | 2026-07-13 | 1d | 2027-10-22 | 2028-01-05 | 2d |  |  |  |  |  |
| 231 | 1.3.12.1.1 | S1 - Porcelanato 20x120 Simil Madera (interior casa) | 20d | 2027-11-22 | 2027-12-20 | 91 | 2027-10-25 | 2027-11-22 | 20d | 2027-10-22 | 2027-11-19 | 2d | 0d | Ceramista | Planta Baja | Seguimiento | 6.01 |
| 232 | 1.3.12.1.2 | S3 - Porcelanato 60x60 a definir (baños y lavadero) | 10d | 2027-12-21 | 2028-01-03 | 231 | 2027-11-23 | 2027-12-06 | 10d | 2027-11-22 | 2027-12-03 | 2d | 0d | Ceramista | Planta Baja | Seguimiento | 6.02 |
| 233 | 1.3.12.1.3 | S11 - Cemento alisado (interior de casa) | 12d | 2028-01-04 | 2028-01-19 | 232 | 2027-12-07 | 2027-12-23 | 12d | 2027-12-06 | 2027-12-22 | 2d | 0d | Ceramista | Primer Piso | Seguimiento | 6.03 |
| 234 | 1.3.12.1.4 | S3 - Porcelanato 60x60 a definir (baños) | 10d | 2028-01-20 | 2028-02-02 | 233 | 2027-12-24 | 2028-01-06 | 10d | 2027-12-23 | 2028-01-05 | 2d | 0d | Ceramista | Primer Piso | Seguimiento | 6.04 |

| ID | WBS | Task | Type | Duration | Start | Finish | Predecessors | Baseline start | Baseline finish | Baseline duration | Baseline 1 start | Baseline 1 finish | Total slack | Free slack | Texto1 | Texto2 | Texto3 | Texto4 |
| --- | --- | --- | --- | --- | --- | --- | --- | --- | --- | --- | --- | --- | --- | --- | --- | --- | --- | --- |
| 235 | 1.3.12.2 | **Pisos Exteriores** |  | 462d | 2026-07-13 | 2028-05-12 |  | 2026-07-13 | 2026-07-13 | 1d | 2026-07-13 | 2028-04-13 | 2d |  |  |  |  |  |
| 236 | 1.3.12.2.1 | S2 - Porcelanato Travertino (galería-atelier-quincho-pasillos exteriores) |  | 15d | 2028-02-03 | 2028-02-24 | 234 | 2028-01-07 | 2028-01-27 | 15d | 2028-01-06 | 2028-01-26 | 2d | 0d | Ceramista | Planta Baja | Seguimiento | 6.05 |
| 237 | 1.3.12.2.2 | S4 - Porcelanato 60x60 Simil Hormigon (cochera) |  | 12d | 2028-02-25 | 2028-03-13 | 236 | 2028-01-28 | 2028-02-15 | 12d | 2028-01-27 | 2028-02-14 | 2d | 0d | Ceramista | Planta Baja | Seguimiento | 6.06 |
| 238 | 1.3.12.2.3 | S5 - Cemento alisado de alto transito exterior (escalones de ingreso peatonal) |  | 7d | 2028-01-21 | 2028-01-31 | 85FF | 2027-12-27 | 2028-01-04 | 7d | 2027-12-24 | 2028-01-03 | 73d |  | Ceramista | Planta Baja | Seguimiento | 6.07 |
| 239 | 1.3.12.2.4 | S6 - Corteza de madera (canteros y bordes de veredas) |  | 5d | 2026-07-13 | 2026-07-17 |  | 2026-07-13 | 2026-07-17 | 5d | 2026-07-13 | 2026-07-17 | 459d |  | Ceramista | Planta Baja | Seguimiento | 6.08 |
| 240 | 1.3.12.2.5 | S7 - Laja de piedra tipo Pirca (ingreso cochera-estacionamiento vehicular-expansión quincho-fogonero) |  | 30d | 2028-03-14 | 2028-04-25 | 237 | 2028-02-16 | 2028-03-29 | 30d | 2028-02-15 | 2028-03-28 | 2d | 0d | Ceramista | Planta Baja | Seguimiento | 6.09 |
| 241 | 1.3.12.2.6 | S8 - Deck de madera exterior (deck solarium-deck fogonero) |  | 7d | 2028-01-07 | 2028-01-17 | 283 | 2027-12-10 | 2027-12-20 | 7d | 2027-12-09 | 2027-12-17 | 49d | 0d | Ceramista | Planta Baja | Seguimiento | 6.10 |
| 242 | 1.3.12.2.7 | S9 - Durmientes de madera |  | 5d | 2028-01-18 | 2028-01-24 | 241 | 2027-12-21 | 2027-12-27 | 5d | 2027-12-20 | 2027-12-24 | 49d | 0d | Ceramista | Planta Baja | Seguimiento | 6.11 |
| 243 | 1.3.12.2.8 | S10 - Porcelanato 20x20 Bali Stone (pileta) | milestone | 0d | 2028-01-24 | 2028-01-24 | 242 | 2027-12-27 | 2027-12-27 |  | 2027-12-24 | 2027-12-24 | 78d |  | Ceramista | Planta Baja | Seguimiento | 6.12 |
| 244 | 1.3.12.2.9 | S12 - Revestimiento de madera (escalera) |  | 12d | 2028-01-25 | 2028-02-09 | 242 | 2027-12-28 | 2028-01-12 | 12d | 2027-12-27 | 2028-01-11 | 49d | 0d | Ceramista | Planta Baja | Seguimiento | 6.13 |
| 245 | 1.3.12.2.10 | S2 - Porcelanato Travertino (terraza) |  | 12d | 2028-04-26 | 2028-05-12 | 240 | 2028-03-30 | 2028-04-14 | 12d | 2028-03-29 | 2028-04-13 | 2d |  | Ceramista | Primer Piso | Seguimiento | 6.14 |
| 246 | 1.3.12.2.11 | S6 - Corteza de madera (estar-cubierta no accesible) |  | 5d | 2028-02-11 | 2028-02-17 | 244 | 2028-01-13 | 2028-01-19 | 5d | 2028-01-12 | 2028-01-18 | 49d | 0d | Ceramista | Primer Piso | Seguimiento | 6.15 |
| 247 | 1.3.12.2.12 | S8 - Deck de madera exterior (deck terraza) |  | 5d | 2028-02-18 | 2028-02-24 | 246 | 2028-01-20 | 2028-01-26 | 5d | 2028-01-19 | 2028-01-25 | 49d | 0d | Ceramista | Primer Piso | Seguimiento | 6.16 |
| 248 | 1.3.12.2.13 | S9 - Durmientes de madera |  | 7d | 2028-02-25 | 2028-03-06 | 247 | 2028-01-27 | 2028-02-04 | 7d | 2028-01-26 | 2028-02-03 | 49d |  | Ceramista | Primer Piso | Seguimiento | 6.17 |
| 249 | 1.3.12.3 | Zócalo Porcelanato (Interior PB) |  | 10d | 2028-01-07 | 2028-01-20 | 283 | 2027-12-10 | 2027-12-23 | 10d | 2027-12-09 | 2027-12-22 | 80d |  | Ceramista | Planta Baja | Seguimiento | 6.14 |
| 250 | 1.3.12.4 | Zócalo Porcelanato (Interior PA) |  | 10d | 2028-01-07 | 2028-01-20 | 283 | 2027-12-10 | 2027-12-23 | 10d | 2027-12-09 | 2027-12-22 | 80d |  | Ceramista | Primer Piso | Seguimiento | 6.15 |
| 251 | 1.3.12.5 | Bajo cocina e isla PB - H: 0,12cm (11,30 m2) |  | 5d | 2027-11-22 | 2027-11-26 | 91 | 2027-10-25 | 2027-10-29 | 5d | 2027-10-22 | 2027-10-28 | 118d | 0d | Ceramista | Planta Baja | Seguimiento | 6.16 |
| 252 | 1.3.12.6 | Bajo lavadero PB - H: 0,12cm (2,75 m2) |  | 5d | 2027-11-22 | 2027-11-26 | 251FF | 2027-10-25 | 2027-10-29 | 5d | 2027-10-22 | 2027-10-28 | 118d |  | Ceramista | Planta Baja | Seguimiento | 6.17 |
| 253 | 1.3.12.7 | Bajo mesada estar PB - H: 0,12cm (1,90 m2) |  | 5d | 2027-11-22 | 2027-11-26 | 251FF | 2027-10-25 | 2027-10-29 | 5d | 2027-10-22 | 2027-10-28 | 118d |  | Ceramista | Planta Baja | Seguimiento | 6.18 |
| 254 | 1.3.12.8 | Bajo atelier PB - H: 0,12cm (2,40 m2) |  | 5d | 2027-11-22 | 2027-11-26 | 251FF | 2027-10-25 | 2027-10-29 | 5d | 2027-10-22 | 2027-10-28 | 118d |  | Ceramista | Planta Baja | Seguimiento | 6.19 |
| 255 | 1.3.12.9 | Bajo mesada quincho PB - H: 0,12cm (4,65 m2) |  | 5d | 2027-11-22 | 2027-11-26 | 251FF | 2027-10-25 | 2027-10-29 | 5d | 2027-10-22 | 2027-10-28 | 118d |  | Ceramista | Planta Baja | Seguimiento | 6.20 |
| 256 | 1.3.12.10 | **Revestimientos Interiores** |  | 90d | 2027-12-24 | 2028-05-02 |  | 2026-07-13 | 2026-07-13 | 1d | 2027-11-25 | 2028-03-31 | 10d |  |  |  |  |  |
| 257 | 1.3.12.10.1 | Porcelanato - Cocina, baños y lavadero (definir medidas y tipo) |  | 7d | 2027-12-24 | 2028-01-03 | 232FF | 2027-11-26 | 2027-12-06 | 7d | 2027-11-25 | 2027-12-03 | 91d | 0d | Ceramista | Planta Baja | Seguimiento | 6.21 |
| 258 | 1.3.12.10.2 | Revestimiento Marmol Simil Piedra (a proveedor) |  | 10d | 2028-04-18 | 2028-05-02 | 290 | 2028-03-20 | 2028-04-03 | 10d | 2028-03-17 | 2028-03-31 | 10d |  | Ceramista | Planta Baja | Seguimiento | 6.22 |
| 259 | 1.3.12.10.3 | Revestimiento Ladrillos Refractarios |  | 2d | 2028-01-04 | 2028-01-05 | 257 | 2027-12-07 | 2027-12-09 | 2d | 2027-12-06 | 2027-12-07 | 91d |  | Ceramista | Planta Baja | Seguimiento | 6.23 |
| 260 | 1.3.12.10.4 | Porcelanato - Baños (definir medidas y tipo) |  | 7d | 2028-01-25 | 2028-02-02 | 234FF | 2027-12-29 | 2028-01-06 | 7d | 2027-12-28 | 2028-01-05 | 71d |  | Ceramista | Primer Piso | Seguimiento | 6.24 |
| 261 | 1.3.12.10.5 | Revestimiento Marmol Simil Piedra (a proveedor) |  | 10d | 2028-04-18 | 2028-05-02 | 290 | 2028-03-20 | 2028-04-03 | 10d | 2028-03-17 | 2028-03-31 | 10d |  | Ceramista | Primer Piso | Seguimiento | 6.25 |

| ID | WBS | Task | Duration | Start | Finish | Predecessors | Baseline start | Baseline finish | Baseline duration | Baseline 1 start | Baseline 1 finish | Total slack | Free slack | Texto1 | Texto2 | Texto3 | Texto4 |
| --- | --- | --- | --- | --- | --- | --- | --- | --- | --- | --- | --- | --- | --- | --- | --- | --- | --- |
| 262 | 1.3.12.11 | **Revestimientos Exteriores** | 208d | 2027-04-08 | 2028-02-01 |  | 2026-07-13 | 2026-07-13 | 1d | 2027-03-08 | 2028-01-04 | 72d |  |  |  |  |  |
| 263 | 1.3.12.11.1 | Revestimiento plástico en vigas y aleros - (definir color) | 10d | 2027-12-22 | 2028-01-04 | 108 | 2027-11-24 | 2027-12-07 | 10d | 2027-11-23 | 2027-12-06 | 63d | 0d | Albañileria | Planta Baja | Seguimiento | 6.26 |
| 264 | 1.3.12.11.2 | Revestimiento de Piedra - (Tipo pirca) | 20d | 2027-04-08 | 2027-05-05 | 76 | 2027-03-09 | 2027-04-07 | 20d | 2027-03-08 | 2027-04-06 | 260d |  | Pedrero | Planta Baja | Seguimiento | 6.27 |
| 265 | 1.3.12.11.3 | Revestimiento de Hormigón Visto | 25d | 2027-04-16 | 2027-05-20 | 60FF | 2027-03-17 | 2027-04-22 | 25d | 2027-03-16 | 2027-04-21 | 249d |  | Albañileria | Planta Baja | Seguimiento | 6.28 |
| 266 | 1.3.12.11.4 | Revestimiento WPC Simil Madera* | 10d | 2028-01-05 | 2028-01-18 | 263 | 2027-12-09 | 2027-12-22 | 10d | 2027-12-07 | 2027-12-21 | 82d | 0d | Ceramista | Planta Baja | Seguimiento | 6.29 |
| 267 | 1.3.12.11.5 | Revestimiento WPC Varillado* | 10d | 2028-01-05 | 2028-01-18 | 266FF | 2027-12-09 | 2027-12-22 | 10d | 2027-12-07 | 2027-12-21 | 82d |  | Ceramista | Planta Baja | Seguimiento | 6.30 |
| 268 | 1.3.12.11.6 | Revestimiento plástico en muros - (definir color) | 10d | 2028-01-05 | 2028-01-18 | 263 | 2027-12-09 | 2027-12-22 | 10d | 2027-12-07 | 2027-12-21 | 63d | 0d | Albañileria | Primer Piso | Seguimiento | 6.31 |
| 269 | 1.3.12.11.7 | Revestimiento plástico en vigas y aleros - (definir color) | 7d | 2028-01-19 | 2028-01-27 | 268 | 2027-12-23 | 2027-12-31 | 7d | 2027-12-22 | 2027-12-30 | 63d | 0d | Albañileria | Primer Piso | Seguimiento | 6.32 |
| 270 | 1.3.12.11.8 | Revestimiento de Piedra - (Tipo pirca) | 10d | 2027-08-09 | 2027-08-23 | 77 | 2027-07-12 | 2027-07-23 | 10d | 2027-07-08 | 2027-07-22 | 185d |  | Pedrero | Primer Piso | Seguimiento | 6.33 |
| 271 | 1.3.12.11.9 | Revestimiento de Hormigón Visto | 15d | 2027-09-01 | 2027-09-21 | 63FF | 2027-08-03 | 2027-08-24 | 15d | 2027-08-02 | 2027-08-23 | 164d |  | Albañileria | Primer Piso | Seguimiento | 6.34 |
| 272 | 1.3.12.11.10 | Revestimiento WPC Simil Madera* | 10d | 2028-01-19 | 2028-02-01 | 268 | 2027-12-23 | 2028-01-05 | 10d | 2027-12-22 | 2028-01-04 | 72d | 0d | Ceramista | Primer Piso | Seguimiento | 6.35 |
| 273 | 1.3.12.11.11 | Revestimiento WPC Varillado* | 10d | 2028-01-19 | 2028-02-01 | 272FF | 2027-12-23 | 2028-01-05 | 10d | 2027-12-22 | 2028-01-04 | 72d |  | Ceramista | Primer Piso | Seguimiento | 6.36 |
| 274 | 1.3.13 | **PINTURA** | 277d | 2027-02-03 | 2028-03-09 |  | 2027-01-06 | 2028-02-09 | 277d | 2027-01-05 | 2028-02-08 | 46d |  |  |  |  | 7 |
| 275 | 1.3.13.1 | Latex Interior PB | 18d | 2028-02-15 | 2028-03-09 | 109 | 2028-01-17 | 2028-02-09 | 18d | 2028-01-14 | 2028-02-08 | 46d |  | Pintura | Planta Baja | Seguimiento | 7.01 |
| 276 | 1.3.13.2 | Latex Interior PA | 12d | 2028-01-20 | 2028-02-04 | 110FS+10d | 2027-12-23 | 2028-01-07 | 12d | 2027-12-22 | 2028-01-06 | 69d |  | Pintura | Primer Piso | Seguimiento | 7.02 |
| 277 | 1.3.13.3 | Esmalte Sintetico en columnas y vigas metalicas* | 3d | 2027-02-03 | 2027-02-05 | 139FF | 2027-01-06 | 2027-01-08 | 3d | 2027-01-05 | 2027-01-07 | 320d |  | Pintura | Planta Baja | Seguimiento | 7.03 |
| 278 | 1.3.13.4 | Esmalte Sintetico en conductos metalicos* | 1d | 2027-05-19 | 2027-05-19 | 140FF | 2027-04-21 | 2027-04-21 | 1d | 2027-04-20 | 2027-04-20 | 250d |  | Pintura | Primer Piso | Seguimiento | 7.04 |
| 279 | 1.3.14 | **CARPINTERIAS** | 157d | 2027-07-07 | 2028-02-18 |  | 2027-06-09 | 2028-01-20 | 157d | 2027-06-08 | 2028-01-19 | 0d |  |  |  |  | 8 |
| 280 | 1.3.14.1 | Vanos / premarcos | 7d | 2027-07-07 | 2027-07-16 | 106 | 2027-06-09 | 2027-06-17 | 7d | 2027-06-08 | 2027-06-16 | 0d |  | Externo |  | Seguimiento |  |
| 281 | 1.3.14.2 | Puertas de madera* | 150d | 2027-07-19 | 2028-02-18 | 280 | 2027-06-18 | 2028-01-20 | 150d | 2027-06-17 | 2028-01-19 | 59d | 0d | Externo |  | Seguimiento | 8.01 |
| 282 | 1.3.14.3 | Puertas de aluminio* | 2d | 2028-01-07 | 2028-01-10 | 283 | 2027-12-10 | 2027-12-13 | 2d | 2027-12-09 | 2027-12-10 | 83d | 0d | Externo | Planta Baja | Seguimiento | 8.02 |
| 283 | 1.3.14.4 | Aberturas de PVC* | 120d | 2027-07-19 | 2028-01-06 | 280 | 2027-06-18 | 2027-12-09 | 120d | 2027-06-17 | 2027-12-07 | 0d |  | Externo |  | Seguimiento | 8.03 |
| 284 | 1.3.15 | **VARIOS** | 320d | 2026-07-13 | 2027-10-20 |  | 2026-07-13 | 2027-09-21 | 300d | 2026-07-13 | 2027-09-20 | 144d |  |  |  |  | 9 |
| 285 | 1.3.15.1 | **Pileta** | 20d | 2027-09-22 | 2027-10-20 |  | 2026-07-13 | 2026-07-13 | 1d | 2027-08-24 | 2027-09-20 | 144d |  |  |  |  |  |
| 286 | 1.3.15.1.1 | Piscina con desborde infinito + solarium húmedo* | 20d | 2027-09-22 | 2027-10-20 | 63 | 2027-08-25 | 2027-09-21 | 20d | 2027-08-24 | 2027-09-20 | 144d |  | Externo | Planta Baja | Seguimiento | 9.01 |

| ID | WBS | Task | Type | Duration | Start | Finish | Predecessors | Baseline start | Baseline finish | Baseline duration | Baseline 1 start | Baseline 1 finish | Total slack | Resources | Work | Texto1 | Texto2 | Texto3 | Texto4 |
| --- | --- | --- | --- | --- | --- | --- | --- | --- | --- | --- | --- | --- | --- | --- | --- | --- | --- | --- | --- |
| 287 | 1.3.15.2 | **Sistema de bombeo cloacal** |  | 1d | 2026-07-13 | 2026-07-13 |  | 2026-07-13 | 2026-07-13 | 1d | 2026-07-13 | 2026-07-13 | 463d |  |  |  |  |  |  |
| 288 | 1.3.15.2.1 | Sistema de bombeo cloacal (en caso de necesitarlo) |  | 1d | 2026-07-13 | 2026-07-13 |  | 2026-07-13 | 2026-07-13 | 1d | 2026-07-13 | 2026-07-13 | 463d |  |  | Externo | Planta Baja | Seguimiento | 9.02 |
| 289 | 1.3.16 | Muebles |  | 15d | 2028-03-06 | 2028-03-27 | 283FS+40d | 2028-02-04 | 2028-02-25 | 15d | 2028-02-03 | 2028-02-24 | 0d | Mariana V | 120h | Externo |  | Seguimiento |  |
| 290 | 1.3.17 | Mesadas |  | 15d | 2028-03-28 | 2028-04-17 | 289 | 2028-02-28 | 2028-03-17 | 15d | 2028-02-25 | 2028-03-16 | 0d | Mariana V | 120h | Externo |  | Seguimiento |  |
| 291 | 2 | Firma Acta recepcion Provisoria | milestone | 0d | 2028-05-16 | 2028-05-16 | 4 | 2026-07-13 | 2026-07-13 |  | 2028-04-14 | 2028-04-14 | 0d | Mariana V |  |  |  | Gerencia |  |
| 292 | 3 | Posventa |  | 12emo | 2028-05-16 | 2029-05-11 | 291 | 2026-07-13 | 2027-07-08 | 12emo | 2028-04-14 | 2029-04-09 | 0d | Posventa | 8640h |  |  | Gerencia |  |
