# Vivienda Venturelli - Bernal

Schedule from MS Project XML, 2026-06-09 to 2028-09-23, status date 2026-06-25, A marks actual dates.

## Calendars

- Calendario Argentino 2024: Mon-Fri 09:00-13:00, 15:00-19:00; Sat-Sun off. Exceptions (off unless hours are given): 2024-12-25 to 2033-12-25 (Navidad, recurring), 2025-01-01 to 2034-01-01 (Año nuevo 2025, recurring), 2025-02-10 to 2034-02-10 (Carnaval 2025, recurring), 2025-03-24 to 2034-03-24 (Día Nacional de la Memoria por la Verdad y la Justicia, recurring), 2025-04-02 to 2034-04-02 (Día del Veterano y de los Caídos en la Guerra de Malvinas, recurring), 2025-05-01 to 2034-05-01 (Día del Trabajador, recurring), 2025-05-25 to 2034-05-25 (Dia de la revolucion de Mayo, recurring), 2025-06-20 to 2034-06-20 (Día de la Bandera, recurring), 2025-07-09 to 2034-07-09 (Día de la Independencia, recurring), 2025-08-18 to 2034-08-18 (Paso a la Inmortalidad del Gral. José de San Martín (17/08), recurring), 2025-10-13 to 2034-10-13 (Día del Respeto a la Diversidad Cultural (12/10), recurring), 2025-11-18 to 2034-11-18 (Día de la Soberanía Nacional (20/11), recurring), 2025-12-08 to 2034-12-08 (Día de la Virgen, recurring).

## Resources

| Resource |
| --- |
| Gabriela Rojo |
| Posventa |
| Proyectos |
| Mariana V |

## Schedule

| ID | WBS | Task | Duration | Start | Finish | Predecessors | Complete | Remaining | Baseline start | Baseline finish | Baseline duration | Baseline 1 start | Baseline 1 finish | Total slack | Free slack | Constraint | Resources | Work | Actual work | Texto3 | Texto1 | Texto4 | Texto2 |
| --- | --- | --- | --- | --- | --- | --- | --- | --- | --- | --- | --- | --- | --- | --- | --- | --- | --- | --- | --- | --- | --- | --- | --- |
| 1 | 1 | **Vivienda Diego Casali** | 577d? | 2026-06-09 A | 2028-09-23 |  | 3% | 559.8d? | 2026-06-09 | 2028-09-23 | 577d? | 2026-06-09 | 2028-09-23 | 0d |  |  |  | 48504h | 1336h |  |  |  |  |
| 2 | 1.1 | Obra Vivienda Diego Casali Contratada | 731ed | 2026-06-24 | 2028-06-24 | 4SS |  |  | 2026-06-22 | 2028-06-22 | 731ed | 2026-06-22 | 2028-06-22 | 274.25d |  | start no earlier than 2026-06-24 | Gabriela Rojo | 17544h |  | Gerencia |  |  |  |
| 3 | 1.2 | Armado de Pilar con Tablero de Obra | 11d | 2026-06-09 A | 2026-06-23 |  | 9% | 10d | 2026-06-09 | 2026-06-09 | 1d | 2026-06-09 | 2026-06-09 | 566d |  |  | Mariana V | 88h | 8h | Seguimiento | Electricista | 1.05 |  |
| 4 | 1.3 | **OBRA VIVIENDA DIEGO CASALI** | 346d? | 2026-06-24 A | 2027-11-09 |  | 6% | 323.94d? | 2026-06-09 | 2027-11-09 | 357d? | 2026-06-09 | 2027-11-09 | 220d | 0d | start no earlier than 2026-06-24 |  | 22232h | 1328h |  |  |  |  |
| 5 | 1.3.1 | **TAREAS PRELIMINARES** | 7d | 2026-06-24 A | 2026-07-02 A |  | 100% |  | 2026-06-09 | 2026-07-02 | 18d | 2026-06-09 | 2026-07-02 |  |  |  |  | 72h | 72h |  |  | 1 |  |
| 6 | 1.3.1.1 | Estudio de Suelos | 3d | 2026-06-24 A | 2026-06-26 A |  | 100% |  | 2026-06-22 | 2026-06-24 | 3d | 2026-06-22 | 2026-06-24 |  |  | start no earlier than 2026-06-22 | Mariana V | 24h | 24h | Seguimiento | Externo | 1.01 |  |
| 7 | 1.3.1.2 | Calculo Estructural | 3d | 2026-06-24 A | 2026-06-26 A |  | 100% |  | 2026-06-22 | 2026-06-24 | 3d | 2026-06-22 | 2026-06-24 |  |  |  | Mariana V | 24h | 24h | Seguimiento | Externo | 1.02 |  |
| 8 | 1.3.1.3 | Cerco Perimetral | 2d | 2026-06-24 A | 2026-06-25 A |  | 100% |  | 2026-06-22 | 2026-06-23 | 2d | 2026-06-22 | 2026-06-23 |  |  |  | Mariana V | 16h | 16h | Seguimiento | Albañileria | 1.03 |  |
| 9 | 1.3.1.4 | Replanteo de Obra | 1d | 2026-07-02 A | 2026-07-02 A | 8FS+6d | 100% |  | 2026-07-02 | 2026-07-02 | 1d | 2026-07-02 | 2026-07-02 |  |  | start no earlier than 2026-04-27 | Mariana V | 8h | 8h | Seguimiento | Albañileria | 1.04 |  |
| 10 | 1.3.2 | **CONFORMACIÓN DE TERRENO** | 66d | 2026-07-02 A | 2026-10-05 |  | 85% | 10.15d | 2026-07-02 | 2026-09-25 | 60d | 2026-07-02 | 2026-09-25 | 460d |  |  |  | 392h | 312h |  |  | 2 |  |
| 11 | 1.3.2.1 | Excavación terreno | 16d | 2026-07-02 A | 2026-07-24 A | 9SS | 100% |  | 2026-07-02 | 2026-07-24 | 16d | 2026-07-02 | 2026-07-24 |  |  |  | Mariana V | 128h | 128h | Seguimiento | Externo | 1.06 |  |
| 12 | 1.3.2.2 | Aprobación de niveles por parte del barrio | 16d | 2026-07-07 A | 2026-07-29 A |  | 100% |  | 2026-07-07 | 2026-07-29 | 16d | 2026-07-07 | 2026-07-29 |  |  | start no earlier than 2026-07-07 |  |  |  |  |  |  |  |
| 13 | 1.3.2.3 | Excavación Terreno 2da Etapa | 23d | 2026-08-03 A | 2026-09-02 A | 11 | 100% |  | 2026-08-03 | 2026-08-25 | 17d | 2026-08-03 | 2026-08-25 |  |  | start no earlier than 2026-08-03 | Mariana V | 184h | 184h | Seguimiento | Externo |  |  |
| 14 | 1.3.2.4 | Relleno de terreno | 5d | 2026-09-29 | 2026-10-05 | 112 |  |  | 2026-09-21 | 2026-09-25 | 5d | 2026-09-21 | 2026-09-25 | 460d | 0d |  | Mariana V | 40h |  | Seguimiento | Externo | 1.07 | Subsuelo 1 |
| 15 | 1.3.2.5 | Relleno de terreno | 5d | 2026-08-13 | 2026-08-20 | 113 |  |  | 2026-08-13 | 2026-08-20 | 5d | 2026-08-13 | 2026-08-20 | 0d |  |  | Mariana V | 40h |  | Seguimiento | Externo |  | Planta Baja |
| 16 | 1.3.3 | **ESTRUCTURA Y ALBAÑILERIA** | 346d | 2026-06-24 A | 2027-11-09 |  | 7% | 321.26d | 2026-06-22 | 2027-11-09 | 348d | 2026-06-22 | 2027-11-09 | 220d |  |  |  | 12800h | 944h | Seguimiento |  | 2 |  |
| 17 | 1.3.3.1 | **Bases Aisladas** | 49d | 2026-07-13 A | 2026-09-18 |  | 48% | 25.55d | 2026-07-13 | 2026-09-10 | 43d | 2026-07-13 | 2026-09-10 | 505d |  |  |  | 936h | 448h | Seguimiento |  |  |  |
| 18 | 1.3.3.1.1 | Base Aislada B2 (100x70x35) - PSS | 12d | 2026-09-03 | 2026-09-18 | 13 |  |  | 2026-08-26 | 2026-09-10 | 12d | 2026-08-26 | 2026-09-10 | 505d |  |  | Mariana V | 96h |  | Seguimiento | Albañileria | 2.01 | Subsuelo 1 |
| 19 | 1.3.3.1.2 | Base Aislada B3 (120x70x35) - PSS | 12d | 2026-09-03 | 2026-09-18 | 13 |  |  | 2026-08-26 | 2026-09-10 | 12d | 2026-08-26 | 2026-09-10 | 505d |  |  | Mariana V | 96h |  | Seguimiento | Albañileria | 2.02 | Subsuelo 1 |
| 20 | 1.3.3.1.3 | Base Aislada B4 (80x80x35) - PSS | 12d | 2026-09-03 | 2026-09-18 | 13 |  |  | 2026-08-26 | 2026-09-10 | 12d | 2026-08-26 | 2026-09-10 | 505d |  |  | Mariana V | 96h |  | Seguimiento | Albañileria | 2.03 | Subsuelo 1 |
| 21 | 1.3.3.1.4 | Base Aislada B5 (150x90x35) - PSS | 12d | 2026-09-03 | 2026-09-18 | 13 |  |  | 2026-08-26 | 2026-09-10 | 12d | 2026-08-26 | 2026-09-10 | 505d |  |  | Mariana V | 96h |  | Seguimiento | Albañileria | 2.04 | Subsuelo 1 |
| 22 | 1.3.3.1.5 | Base Aislada B6 (90x90x35) - PSS | 12d | 2026-09-03 | 2026-09-18 | 13 |  |  | 2026-08-26 | 2026-09-10 | 12d | 2026-08-26 | 2026-09-10 | 505d |  |  | Mariana V | 96h |  | Seguimiento | Albañileria | 2.05 | Subsuelo 1 |
| 23 | 1.3.3.1.6 | Hormigón de bases | 1d | 2026-09-02 | 2026-09-02 |  |  |  | 2026-09-02 | 2026-09-02 | 1d | 2026-09-02 | 2026-09-02 | 502d | 0d | start no earlier than 2026-09-02 | Mariana V | 8h |  | Seguimiento | Albañileria |  | Subsuelo 1 |
| 24 | 1.3.3.1.7 | Base Aislada B1 (70x70x35) - PB | 8d | 2026-08-26 A | 2026-09-04 A | 124 | 100% |  | 2026-07-13 | 2026-09-04 | 10d | 2026-07-13 | 2026-09-04 |  |  |  | Mariana V | 64h | 64h | Seguimiento | Albañileria | 2.06 | Planta Baja |
| 25 | 1.3.3.1.8 | Base Aislada B2 (100x70x35) - PB | 8d | 2026-08-26 A | 2026-09-04 A | 124 | 100% |  | 2026-07-13 | 2026-09-04 | 13d | 2026-07-13 | 2026-09-04 |  |  |  | Mariana V | 64h | 64h | Seguimiento | Albañileria | 2.07 | Planta Baja |
| 26 | 1.3.3.1.9 | Base Aislada B3 (120x70x35) - PB | 10d | 2026-07-13 A | 2026-07-24 A | 30FF | 100% |  | 2026-07-13 | 2026-07-24 | 10d | 2026-07-13 | 2026-07-24 |  |  |  | Mariana V | 80h | 80h | Seguimiento | Albañileria | 2.08 | Planta Baja |
| 27 | 1.3.3.1.10 | Base Aislada B4 (80x80x35) - PB | 10d | 2026-07-13 A | 2026-07-24 A | 30FF | 100% |  | 2026-07-13 | 2026-07-24 | 10d | 2026-07-13 | 2026-07-24 |  |  |  | Mariana V | 80h | 80h | Seguimiento | Albañileria | 2.09 | Planta Baja |
| 28 | 1.3.3.1.11 | Base Aislada B5 (150x90x35) - PB | 8d | 2026-08-26 A | 2026-09-04 A | 124 | 100% |  | 2026-08-26 | 2026-09-04 | 8d | 2026-08-26 | 2026-09-04 |  |  |  | Mariana V | 64h | 64h | Seguimiento | Albañileria | 2.10 | Planta Baja |
| 29 | 1.3.3.1.12 | Base Aislada B6 (90x90x35) - PB | 10d | 2026-07-13 A | 2026-07-24 A | 30FF | 100% |  | 2026-07-13 | 2026-07-24 | 10d | 2026-07-13 | 2026-07-24 |  |  |  | Mariana V | 80h | 80h | Seguimiento | Albañileria | 2.11 | Planta Baja |
| 30 | 1.3.3.1.13 | Hormigon de bases Etapa 1 | 1d | 2026-07-27 A | 2026-07-27 A | 11 | 100% |  | 2026-07-27 | 2026-07-27 | 1d | 2026-07-27 | 2026-07-27 |  |  |  | Mariana V | 8h | 8h | Seguimiento | Albañileria |  | Planta Baja |
| 31 | 1.3.3.1.14 | Hormigon de bases Etapa 2 | 1d | 2026-09-04 A | 2026-09-04 A | 24FF | 100% |  | 2026-09-04 | 2026-09-04 | 1d | 2026-09-04 | 2026-09-04 |  |  |  | Mariana V | 8h | 8h | Seguimiento | Albañileria |  | Planta Baja |

Notes:
- 11: Inluye 1 Semana de Martillo
- 13: Demora de 16 dias, de lo proyectado

| ID | WBS | Task | Duration | Start | Finish | Predecessors | Complete | Remaining | Baseline start | Baseline finish | Baseline duration | Baseline 1 start | Baseline 1 finish | Total slack | Free slack | Resources | Work | Actual work | Texto1 | Texto2 | Texto3 | Texto4 |
| --- | --- | --- | --- | --- | --- | --- | --- | --- | --- | --- | --- | --- | --- | --- | --- | --- | --- | --- | --- | --- | --- | --- |
| 32 | 1.3.3.2 | **Vigas de Fundación y Riostra** | 40d | 2026-07-16 A | 2026-09-10 |  | 40% | 24d | 2026-07-16 | 2026-09-02 | 34d | 2026-07-16 | 2026-09-02 | 511d |  |  | 320h | 128h |  |  |  |  |
| 33 | 1.3.3.2.1 | Viga Fundación VF (60x25) - PSS | 12d | 2026-08-26 | 2026-09-10 | 13FS-6d |  |  | 2026-08-17 | 2026-09-02 | 12d | 2026-08-17 | 2026-09-02 | 460d | 0d | Mariana V | 96h |  | Albañileria | Subsuelo 1 | Seguimiento | 2.12 |
| 34 | 1.3.3.2.2 | Viga Riostra VR (20x25) - PSS | 12d | 2026-08-26 | 2026-09-10 | 13FS-6d |  |  | 2026-08-17 | 2026-09-02 | 12d | 2026-08-17 | 2026-09-02 | 511d |  | Mariana V | 96h |  | Albañileria | Subsuelo 1 | Seguimiento | 2.13 |
| 35 | 1.3.3.2.3 | Viga Fundación VF (60x25) - PB | 8d | 2026-07-16 A | 2026-07-27 A | 30FF | 100% |  | 2026-07-16 | 2026-07-27 | 8d | 2026-07-16 | 2026-07-27 |  |  | Mariana V | 64h | 64h | Albañileria | Planta Baja | Seguimiento | 2.14 |
| 36 | 1.3.3.2.4 | Viga Riostra VR (20x25) - PB | 8d | 2026-07-16 A | 2026-07-27 A | 30FF | 100% |  | 2026-07-16 | 2026-07-27 | 8d | 2026-07-16 | 2026-07-27 |  |  | Mariana V | 64h | 64h | Albañileria | Planta Baja | Seguimiento | 2.15 |
| 37 | 1.3.3.3 | **Columnas.** | 103d | 2026-09-25 A | 2027-02-24 |  | 23% | 79.19d | 2026-09-25 | 2027-02-24 | 103d | 2026-09-25 | 2027-02-24 | 398d |  |  | 872h | 201.6h |  |  | Seguimiento |  |
| 38 | 1.3.3.3.1 | C1 - (0,18x0,30) - 3 unid - (2,8 m de altura) | 5d | 2026-10-16 A | 2026-10-22 | 100FF | 30% | 3.5d | 2026-10-16 | 2026-10-22 | 5d | 2026-10-16 | 2026-10-22 | 482d |  | Mariana V | 40h | 12h | Albañileria | Subsuelo 1 | Seguimiento | 2.16 |
| 39 | 1.3.3.3.2 | C2 - (0,18x0,80) - 1 unid - (2,8 m de altura) | 5d | 2026-10-16 A | 2026-10-22 | 100FF | 30% | 3.5d | 2026-10-16 | 2026-10-22 | 5d | 2026-10-16 | 2026-10-22 | 482d |  | Mariana V | 40h | 12h | Albañileria | Subsuelo 1 | Seguimiento | 2.17 |
| 40 | 1.3.3.3.3 | C3 - (0,18x0,40) - 5 unid - (2,8 m de altura) | 5d | 2026-10-16 A | 2026-10-22 | 100FF | 30% | 3.5d | 2026-10-16 | 2026-10-22 | 5d | 2026-10-16 | 2026-10-22 | 482d |  | Mariana V | 40h | 12h | Albañileria | Subsuelo 1 | Seguimiento | 2.18 |
| 41 | 1.3.3.3.4 | C4 - (0,18x0,50) - 3 unid - (2,8 m de altura) | 5d | 2026-10-16 A | 2026-10-22 | 100FF | 30% | 3.5d | 2026-10-16 | 2026-10-22 | 5d | 2026-10-16 | 2026-10-22 | 482d |  | Mariana V | 40h | 12h | Albañileria | Subsuelo 1 | Seguimiento | 2.19 |
| 42 | 1.3.3.3.5 | C5 - (0,18x1,00) - 1 unid - (2,8 m de altura) | 5d | 2026-10-16 A | 2026-10-22 | 100FF | 30% | 3.5d | 2026-10-16 | 2026-10-22 | 5d | 2026-10-16 | 2026-10-22 | 482d |  | Mariana V | 40h | 12h | Albañileria | Subsuelo 1 | Seguimiento | 2.20 |
| 43 | 1.3.3.3.6 | C6 - (0,18x1,00) - 1 unid - (2,8 m de altura) | 5d | 2026-10-16 A | 2026-10-22 | 100FF | 30% | 3.5d | 2026-10-16 | 2026-10-22 | 5d | 2026-10-16 | 2026-10-22 | 482d |  | Mariana V | 40h | 12h | Albañileria | Subsuelo 1 | Seguimiento | 2.21 |
| 44 | 1.3.3.3.7 | C7 - (0,18x1,00) - 1 unid - (2,8 m de altura) | 5d | 2026-10-16 A | 2026-10-22 | 100FF | 30% | 3.5d | 2026-10-16 | 2026-10-22 | 5d | 2026-10-16 | 2026-10-22 | 482d |  | Mariana V | 40h | 12h | Albañileria | Subsuelo 1 | Seguimiento | 2.22 |
| 45 | 1.3.3.3.8 | C1 - (0,18x0,30) - 2 unid - (2,8 m de altura) | 7d | 2026-09-25 A | 2026-10-05 | 104FF | 30% | 4.9d | 2026-09-25 | 2026-10-05 | 7d | 2026-09-25 | 2026-10-05 | 494d |  | Mariana V | 56h | 16.8h | Albañileria | Planta Baja | Seguimiento | 2.23 |
| 46 | 1.3.3.3.9 | C2 - (0,18x0,80) - 1 unid - (2,8 m de altura) | 7d | 2026-09-25 A | 2026-10-05 | 104FF | 30% | 4.9d | 2026-09-25 | 2026-10-05 | 7d | 2026-09-25 | 2026-10-05 | 494d |  | Mariana V | 56h | 16.8h | Albañileria | Planta Baja | Seguimiento | 2.24 |
| 47 | 1.3.3.3.10 | C3 - (0,18x0,40) - 5 unid - (2,8 m de altura) | 7d | 2026-09-25 A | 2026-10-05 | 104FF | 30% | 4.9d | 2026-09-25 | 2026-10-05 | 7d | 2026-09-25 | 2026-10-05 | 494d |  | Mariana V | 56h | 16.8h | Albañileria | Planta Baja | Seguimiento | 2.25 |
| 48 | 1.3.3.3.11 | C4 - (0,18x0,50) - 7 unid - (2,8 m de altura) | 7d | 2026-09-25 A | 2026-10-05 | 104FF | 30% | 4.9d | 2026-09-25 | 2026-10-05 | 7d | 2026-09-25 | 2026-10-05 | 494d |  | Mariana V | 56h | 16.8h | Albañileria | Planta Baja | Seguimiento | 2.26 |
| 49 | 1.3.3.3.12 | C5 - (0,18x1,00) - 2 unid - (2,8 m de altura) | 7d | 2026-09-25 A | 2026-10-05 | 104FF | 30% | 4.9d | 2026-09-25 | 2026-10-05 | 7d | 2026-09-25 | 2026-10-05 | 494d |  | Mariana V | 56h | 16.8h | Albañileria | Planta Baja | Seguimiento | 2.27 |
| 50 | 1.3.3.3.13 | C6 - (0,18x1,00) - 1 unid - (2,8 m de altura) | 7d | 2026-09-25 A | 2026-10-05 | 104FF | 30% | 4.9d | 2026-09-25 | 2026-10-05 | 7d | 2026-09-25 | 2026-10-05 | 494d |  | Mariana V | 56h | 16.8h | Albañileria | Planta Baja | Seguimiento | 2.28 |
| 51 | 1.3.3.3.14 | C8 - (0,18x1,00) - 1 unid - (2,8 m de altura) | 7d | 2026-09-25 A | 2026-10-05 | 104FF | 30% | 4.9d | 2026-09-25 | 2026-10-05 | 7d | 2026-09-25 | 2026-10-05 | 494d |  | Mariana V | 56h | 16.8h | Albañileria | Planta Baja | Seguimiento | 2.29 |
| 52 | 1.3.3.3.15 | C2 - (0,18x0,80) - 1 unid - (2,8 m de altura) | 5d | 2027-02-18 | 2027-02-24 | 107FF |  |  | 2027-02-18 | 2027-02-24 | 5d | 2027-02-18 | 2027-02-24 | 398d |  | Mariana V | 40h |  | Albañileria | Primer Piso | Seguimiento | 2.30 |
| 53 | 1.3.3.3.16 | C3 - (0,18x0,40) - 2 unid - (2,8 m de altura) | 5d | 2027-02-18 | 2027-02-24 | 107FF |  |  | 2027-02-18 | 2027-02-24 | 5d | 2027-02-18 | 2027-02-24 | 398d |  | Mariana V | 40h |  | Albañileria | Primer Piso | Seguimiento | 2.31 |
| 54 | 1.3.3.3.17 | C4 - (0,18x0,50) - 4 unid - (2,8 m de altura) | 5d | 2027-02-18 | 2027-02-24 | 107FF |  |  | 2027-02-18 | 2027-02-24 | 5d | 2027-02-18 | 2027-02-24 | 398d |  | Mariana V | 40h |  | Albañileria | Primer Piso | Seguimiento | 2.32 |
| 55 | 1.3.3.3.18 | C5 - (0,18x1,00) - 1 unid - (2,8 m de altura) | 5d | 2027-02-18 | 2027-02-24 | 107FF |  |  | 2027-02-18 | 2027-02-24 | 5d | 2027-02-18 | 2027-02-24 | 398d |  | Mariana V | 40h |  | Albañileria | Primer Piso | Seguimiento | 2.33 |
| 56 | 1.3.3.3.19 | C6 - (0,18x1,00) - 1 unid - (2,8 m de altura) | 5d | 2027-02-18 | 2027-02-24 | 107FF |  |  | 2027-02-18 | 2027-02-24 | 5d | 2027-02-18 | 2027-02-24 | 398d |  | Mariana V | 40h |  | Albañileria | Primer Piso | Seguimiento | 2.34 |

| ID | WBS | Task | Duration | Start | Finish | Predecessors | Complete | Remaining | Baseline start | Baseline finish | Baseline duration | Baseline 1 start | Baseline 1 finish | Total slack | Resources | Work | Actual work | Texto3 | Texto1 | Texto2 | Texto4 |
| --- | --- | --- | --- | --- | --- | --- | --- | --- | --- | --- | --- | --- | --- | --- | --- | --- | --- | --- | --- | --- | --- |
| 57 | 1.3.3.4 | **Encadenado Vertical** | 103d | 2026-09-25 A | 2027-02-24 |  | 19% | 83.53d | 2026-09-25 | 2027-02-24 | 103d | 2026-09-25 | 2027-02-24 | 398d |  | 584h | 110.4h | Seguimiento |  |  |  |
| 58 | 1.3.3.4.1 | Ce - (0,18x0,18) - 24 unid - (2,8 m de altura) | 10d | 2026-10-08 A | 2026-10-22 | 100FF | 30% | 7d | 2026-10-08 | 2026-10-22 | 10d | 2026-10-08 | 2026-10-22 | 482d | Mariana V | 80h | 24h | Seguimiento | Albañileria | Subsuelo 1 | 2.35 |
| 59 | 1.3.3.4.2 | Ce1 - (0,18x0,18) - 21 unid - (2,8 m de altura) | 10d | 2026-10-08 A | 2026-10-22 | 100FF | 30% | 7d | 2026-10-08 | 2026-10-22 | 10d | 2026-10-08 | 2026-10-22 | 482d | Mariana V | 80h | 24h | Seguimiento | Albañileria | Subsuelo 1 | 2.36 |
| 60 | 1.3.3.4.3 | Ce2 - (0,18x0,30) - 7 unid - (2,8 m de altura) | 5d | 2026-10-16 A | 2026-10-22 | 100FF | 30% | 3.5d | 2026-10-16 | 2026-10-22 | 5d | 2026-10-16 | 2026-10-22 | 482d | Mariana V | 40h | 12h | Seguimiento | Albañileria | Subsuelo 1 | 2.37 |
| 61 | 1.3.3.4.4 | Ce - (0,18x0,18) - 7 unid - (2,8 m de altura) | 7d | 2026-09-25 A | 2026-10-05 | 104FF | 30% | 4.9d | 2026-09-25 | 2026-10-05 | 7d | 2026-09-25 | 2026-10-05 | 494d | Mariana V | 56h | 16.8h | Seguimiento | Albañileria | Planta Baja | 2.38 |
| 62 | 1.3.3.4.5 | Ce1 - (0,18x0,18) - 10 unid - (2,8 m de altura) | 7d | 2026-09-25 A | 2026-10-05 | 104FF | 30% | 4.9d | 2026-09-25 | 2026-10-05 | 7d | 2026-09-25 | 2026-10-05 | 494d | Mariana V | 56h | 16.8h | Seguimiento | Albañileria | Planta Baja | 2.39 |
| 63 | 1.3.3.4.6 | Ce2 - (0,18x0,30) - 8 unid - (2,8 m de altura) | 7d | 2026-09-25 A | 2026-10-05 | 104FF | 30% | 4.9d | 2026-09-25 | 2026-10-05 | 7d | 2026-09-25 | 2026-10-05 | 494d | Mariana V | 56h | 16.8h | Seguimiento | Albañileria | Planta Baja | 2.40 |
| 64 | 1.3.3.4.7 | Ce - (0,18x0,18) - 21 unid - (2,8 m de altura) | 10d | 2027-02-11 | 2027-02-24 | 107FF |  |  | 2027-02-11 | 2027-02-24 | 10d | 2027-02-11 | 2027-02-24 | 398d | Mariana V | 80h |  | Seguimiento | Albañileria | Primer Piso | 2.41 |
| 65 | 1.3.3.4.8 | Ce1 - (0,18x0,18) - 21 unid - (2,8 m de altura) | 10d | 2027-02-11 | 2027-02-24 | 107FF |  |  | 2027-02-11 | 2027-02-24 | 10d | 2027-02-11 | 2027-02-24 | 398d | Mariana V | 80h |  | Seguimiento | Albañileria | Primer Piso | 2.42 |
| 66 | 1.3.3.4.9 | Ce2 - (0,18x0,30) - 13 unid - (2,8 m de altura) | 7d | 2027-02-16 | 2027-02-24 | 107FF |  |  | 2027-02-16 | 2027-02-24 | 7d | 2027-02-16 | 2027-02-24 | 398d | Mariana V | 56h |  | Seguimiento | Albañileria | Primer Piso | 2.43 |
| 67 | 1.3.3.5 | **Encadenado Horizontal** | 98d | 2026-11-04 | 2027-03-29 |  |  |  | 2026-11-04 | 2027-03-29 | 98d | 2026-11-04 | 2027-03-29 | 376d |  | 272h |  | Seguimiento |  |  |  |
| 68 | 1.3.3.5.1 | EH - (0,18x0,15) | 10d | 2026-11-05 | 2026-11-19 | 157SS |  |  | 2026-11-13 | 2026-11-27 | 10d | 2026-11-13 | 2026-11-27 | 463d | Mariana V | 80h |  | Seguimiento | Albañileria | Subsuelo 1 | 2.44 |
| 69 | 1.3.3.5.2 | EH1 - (0,25x0,15) | 10d | 2026-11-05 | 2026-11-19 | 157SS |  |  | 2026-11-13 | 2026-11-27 | 10d | 2026-11-13 | 2026-11-27 | 463d | Mariana V | 80h |  | Seguimiento | Albañileria | Subsuelo 1 | 2.45 |
| 70 | 1.3.3.5.3 | EH - (0,18x0,15) | 7d | 2026-11-04 | 2026-11-12 | 158SS |  |  | 2026-11-04 | 2026-11-12 | 7d | 2026-11-04 | 2026-11-12 | 467d | Mariana V | 56h |  | Seguimiento | Albañileria | Planta Baja | 2.46 |
| 71 | 1.3.3.5.4 | EH - (0,18x0,15) | 7d | 2027-03-18 | 2027-03-29 | 160SS |  |  | 2027-03-18 | 2027-03-29 | 7d | 2027-03-18 | 2027-03-29 | 376d | Mariana V | 56h |  | Seguimiento | Albañileria | Primer Piso | 2.47 |
| 72 | 1.3.3.6 | **Vigas Estructurales** | 121d | 2026-11-04 | 2027-04-30 |  |  |  | 2026-11-04 | 2027-04-30 | 121d | 2026-11-04 | 2027-04-30 | 353d |  | 2184h |  | Seguimiento |  |  |  |
| 73 | 1.3.3.6.1 | V - (35x40),(35x50),(35x60),(40x40) | 12d | 2026-11-05 | 2026-11-23 | 157SS |  |  | 2026-11-13 | 2026-12-01 | 12d | 2026-11-13 | 2026-12-01 | 461d | Mariana V | 96h |  | Seguimiento | Albañileria | Subsuelo 1 | 2.48 |
| 74 | 1.3.3.6.2 | V - (18x35) | 12d | 2026-11-05 | 2026-11-23 | 157SS |  |  | 2026-11-13 | 2026-12-01 | 12d | 2026-11-13 | 2026-12-01 | 461d | Mariana V | 96h |  | Seguimiento | Albañileria | Subsuelo 1 | 2.49 |
| 75 | 1.3.3.6.3 | V - (35x70),(35x85),(35x100) | 12d | 2026-11-05 | 2026-11-23 | 157SS |  |  | 2026-11-13 | 2026-12-01 | 12d | 2026-11-13 | 2026-12-01 | 461d | Mariana V | 96h |  | Seguimiento | Albañileria | Subsuelo 1 | 2.50 |
| 76 | 1.3.3.6.4 | NB - (15x40)-(20x40) - Hormigón Visto | 12d | 2026-11-05 | 2026-11-23 | 157SS |  |  | 2026-11-13 | 2026-12-01 | 12d | 2026-11-13 | 2026-12-01 | 461d | Mariana V | 96h |  | Seguimiento | Albañileria | Subsuelo 1 | 2.51 |
| 77 | 1.3.3.6.5 | V - (30x35),(35x40),(35x50),(35x60),(40x40),(40x60) | 21d | 2026-11-04 | 2026-12-03 | 158SS |  |  | 2026-11-04 | 2026-12-03 | 21d | 2026-11-04 | 2026-12-03 | 453d | Mariana V | 168h |  | Seguimiento | Albañileria | Planta Baja | 2.52 |
| 78 | 1.3.3.6.6 | V - (18x35),(25x40) | 21d | 2026-11-04 | 2026-12-03 | 158SS |  |  | 2026-11-04 | 2026-12-03 | 21d | 2026-11-04 | 2026-12-03 | 453d | Mariana V | 168h |  | Seguimiento | Albañileria | Planta Baja | 2.53 |
| 79 | 1.3.3.6.7 | V - (18x70),(35x80),(35x70),(35x80) | 21d | 2026-11-04 | 2026-12-03 | 158SS |  |  | 2026-11-04 | 2026-12-03 | 21d | 2026-11-04 | 2026-12-03 | 453d | Mariana V | 168h |  | Seguimiento | Albañileria | Planta Baja | 2.54 |
| 80 | 1.3.3.6.8 | NB - (15x40)-(20x40) | 21d | 2026-11-04 | 2026-12-03 | 158SS |  |  | 2026-11-04 | 2026-12-03 | 21d | 2026-11-04 | 2026-12-03 | 453d | Mariana V | 168h |  | Seguimiento | Albañileria | Planta Baja | 2.55 |
| 81 | 1.3.3.6.9 | NB1 - (20x40) | 21d | 2026-11-04 | 2026-12-03 | 158SS |  |  | 2026-11-04 | 2026-12-03 | 21d | 2026-11-04 | 2026-12-03 | 453d | Mariana V | 168h |  | Seguimiento | Albañileria | Planta Baja | 2.56 |
| 82 | 1.3.3.6.10 | V - (30x35),(30x45),(45x60),(40x40),(40x45),(40x60) | 30d | 2027-03-18 | 2027-04-30 | 160SS |  |  | 2027-03-18 | 2027-04-30 | 30d | 2027-03-18 | 2027-04-30 | 353d | Mariana V | 240h |  | Seguimiento | Albañileria | Primer Piso | 2.57 |
| 83 | 1.3.3.6.11 | V - (18x35),(20x45) | 30d | 2027-03-18 | 2027-04-30 | 160SS |  |  | 2027-03-18 | 2027-04-30 | 30d | 2027-03-18 | 2027-04-30 | 353d | Mariana V | 240h |  | Seguimiento | Albañileria | Primer Piso | 2.58 |
| 84 | 1.3.3.6.12 | V - (40x70) | 30d | 2027-03-18 | 2027-04-30 | 160SS |  |  | 2027-03-18 | 2027-04-30 | 30d | 2027-03-18 | 2027-04-30 | 353d | Mariana V | 240h |  | Seguimiento | Albañileria | Primer Piso | 2.59 |
| 85 | 1.3.3.6.13 | NB - (15x40)-(20x40) | 30d | 2027-03-18 | 2027-04-30 | 160SS |  |  | 2027-03-18 | 2027-04-30 | 30d | 2027-03-18 | 2027-04-30 | 353d | Mariana V | 240h |  | Seguimiento | Albañileria | Primer Piso | 2.60 |

| ID | WBS | Task | Duration | Start | Finish | Predecessors | Baseline start | Baseline finish | Baseline duration | Baseline 1 start | Baseline 1 finish | Total slack | Free slack | Resources | Work | Texto1 | Texto2 | Texto3 | Texto4 |
| --- | --- | --- | --- | --- | --- | --- | --- | --- | --- | --- | --- | --- | --- | --- | --- | --- | --- | --- | --- |
| 86 | 1.3.3.7 | **Losas** | 139d | 2026-11-24 | 2027-06-15 |  | 2026-11-26 | 2027-06-15 | 137d | 2026-11-26 | 2027-06-15 | 2d |  |  | 1544h |  |  |  |  |
| 87 | 1.3.3.7.1 | L1 - Losa Nervurada - 35 cm (cieloraso de yeso o madera) | 30d | 2026-11-24 | 2027-01-07 | 157 | 2026-12-02 | 2027-01-15 | 30d | 2026-12-02 | 2027-01-15 | 395d | 0d | Mariana V | 240h | Albañileria | Subsuelo 1 | Seguimiento | 2.61 |
| 88 | 1.3.3.7.2 | L2 - Losa Nervurada VISTA - 35 cm | 15d | 2026-12-16 | 2027-01-07 | 87FF | 2026-12-24 | 2027-01-15 | 15d | 2026-12-24 | 2027-01-15 | 431d |  | Mariana V | 120h | Albañileria | Subsuelo 1 | Seguimiento | 2.62 |
| 89 | 1.3.3.7.3 | Losa Maciza - 15 cm | 15d | 2026-12-16 | 2027-01-07 | 87FF | 2026-12-24 | 2027-01-15 | 15d | 2026-12-24 | 2027-01-15 | 431d |  | Mariana V | 120h | Albañileria | Subsuelo 1 | Seguimiento | 2.63 |
| 90 | 1.3.3.7.4 | Hormigón losa SS | 1d | 2027-01-08 | 2027-01-08 | 87 | 2027-01-18 | 2027-01-18 | 1d | 2027-01-18 | 2027-01-18 | 395d | 0d | Mariana V | 8h | Albañileria | Subsuelo 1 | Seguimiento |  |
| 91 | 1.3.3.7.5 | L1 - Losa Nervurada - 35 cm (cieloraso de yeso o madera) | 35d | 2026-11-26 | 2027-01-18 | 158 | 2026-11-26 | 2027-01-18 | 35d | 2026-11-26 | 2027-01-18 | 0d |  | Mariana V | 280h | Albañileria | Planta Baja | Seguimiento | 2.64 |
| 92 | 1.3.3.7.6 | L2 - Losa Nervurada VISTA - 35 cm | 15d | 2026-12-28 | 2027-01-18 | 91FF | 2026-12-28 | 2027-01-18 | 15d | 2026-12-28 | 2027-01-18 | 424d |  | Mariana V | 120h | Albañileria | Planta Baja | Seguimiento | 2.65 |
| 93 | 1.3.3.7.7 | Losa Maciza - 15 cm | 15d | 2026-12-28 | 2027-01-18 | 91FF | 2026-12-28 | 2027-01-18 | 15d | 2026-12-28 | 2027-01-18 | 424d |  | Mariana V | 120h | Albañileria | Planta Baja | Seguimiento | 2.66 |
| 94 | 1.3.3.7.8 | Hormigón de losa PB | 1d | 2027-01-19 | 2027-01-19 | 91 | 2027-01-19 | 2027-01-19 | 1d | 2027-01-19 | 2027-01-19 | 0d |  | Mariana V | 8h | Albañileria | Planta Baja | Seguimiento |  |
| 95 | 1.3.3.7.9 | L1 - Losa Nervurada - 35 cm (cieloraso de yeso o madera) | 45d | 2027-04-12 | 2027-06-14 | 160 | 2027-04-12 | 2027-06-14 | 45d | 2027-04-12 | 2027-06-14 | 242d | 0d | Mariana V | 360h | Albañileria | Primer Piso | Seguimiento | 2.67 |
| 96 | 1.3.3.7.10 | L2 - Losa Nervurada VISTA - 35 cm | 10d | 2027-06-01 | 2027-06-14 | 95FF | 2027-06-01 | 2027-06-14 | 10d | 2027-06-01 | 2027-06-14 | 323d |  | Mariana V | 80h | Albañileria | Primer Piso | Seguimiento | 2.68 |
| 97 | 1.3.3.7.11 | Losa Maciza - 15 cm - LOSA TANQUE | 10d | 2027-06-01 | 2027-06-14 | 95FF | 2027-06-01 | 2027-06-14 | 10d | 2027-06-01 | 2027-06-14 | 323d |  | Mariana V | 80h | Albañileria | Primer Piso | Seguimiento | 2.69 |
| 98 | 1.3.3.7.12 | Hormigón de losa PA | 1d | 2027-06-15 | 2027-06-15 | 95 | 2027-06-15 | 2027-06-15 | 1d | 2027-06-15 | 2027-06-15 | 242d | 0d | Mariana V | 8h | Albañileria | Primer Piso | Seguimiento |  |
| 99 | 1.3.3.8 | **Mampostería** | 145d | 2026-07-28 | 2027-02-24 |  | 2026-07-28 | 2027-02-24 | 145d | 2026-07-28 | 2027-02-24 | 0d |  |  | 1080h |  |  |  |  |
| 100 | 1.3.3.8.1 | Muro Armado con bloque de hormigón (llenado y armado) 19x19x39 | 35d | 2026-08-26 | 2026-10-14 | 124 | 2026-09-03 | 2026-10-22 | 35d | 2026-09-03 | 2026-10-22 | 395d | 0d | Mariana V | 280h | Albañileria | Subsuelo 1 | Seguimiento | 2.70 |
| 101 | 1.3.3.8.2 | Mamposteria Ladrillo Hueco Portante 12x18x33 | 15d | 2026-08-26 | 2026-09-15 | 124 | 2026-09-03 | 2026-09-23 | 15d | 2026-09-03 | 2026-09-23 | 508d |  | Mariana V | 120h | Albañileria | Subsuelo 1 | Seguimiento | 2.71 |
| 102 | 1.3.3.8.3 | Mamposteria Ladrillo Hueco Portante 18x18x33 | 10d | 2026-08-26 | 2026-09-08 | 124 | 2026-09-03 | 2026-09-16 | 10d | 2026-09-03 | 2026-09-16 | 503d | 0d | Mariana V | 80h | Albañileria | Subsuelo 1 | Seguimiento | 2.72 |
| 103 | 1.3.3.8.4 | Mampostería de fundación/elevación | 5d | 2026-09-11 | 2026-09-17 | 33 | 2026-09-03 | 2026-09-09 | 5d | 2026-09-03 | 2026-09-09 | 460d | 0d | Mariana V | 40h | Albañileria | Subsuelo 1 | Seguimiento |  |
| 104 | 1.3.3.8.5 | Mamposteria Ladrillo Hueco Portante 12x18x33 PB | 20d | 2026-09-08 | 2026-10-05 | 128 | 2026-09-08 | 2026-10-05 | 20d | 2026-09-08 | 2026-10-05 | 0d |  | Mariana V | 160h | Albañileria | Planta Baja | Seguimiento | 2.73 |
| 105 | 1.3.3.8.6 | Mamposteria Ladrillo Hueco Portante 18x18x33 PB | 10d | 2026-09-22 | 2026-10-05 | 104FF | 2026-09-22 | 2026-10-05 | 10d | 2026-09-22 | 2026-10-05 | 494d |  | Mariana V | 80h | Albañileria | Planta Baja | Seguimiento | 2.74 |
| 106 | 1.3.3.8.7 | Mampostería de fundación/elevación | 5d | 2026-07-28 | 2026-08-03 | 35 | 2026-07-28 | 2026-08-03 | 5d | 2026-07-28 | 2026-08-03 | 0d |  | Mariana V | 40h | Albañileria | Planta Baja | Seguimiento |  |
| 107 | 1.3.3.8.8 | Mamposteria Ladrillo Hueco Portante 12x18x33 PA | 25d | 2027-01-20 | 2027-02-24 | 94 | 2027-01-20 | 2027-02-24 | 25d | 2027-01-20 | 2027-02-24 | 0d |  | Mariana V | 200h | Albañileria | Primer Piso | Seguimiento | 2.75 |
| 108 | 1.3.3.8.9 | Mamposteria Ladrillo Hueco Portante 18x18x33 PA | 10d | 2027-02-11 | 2027-02-24 | 107FF | 2027-02-11 | 2027-02-24 | 10d | 2027-02-11 | 2027-02-24 | 398d |  | Mariana V | 80h | Albañileria | Primer Piso | Seguimiento | 2.76 |
| 109 | 1.3.3.9 | **Muro de Contención** | 12d | 2026-11-06 | 2026-11-24 |  | 2026-10-29 | 2026-11-13 | 12d | 2026-10-29 | 2026-11-13 | 460d |  |  | 96h |  |  |  |  |
| 110 | 1.3.3.9.1 | Muro de contencion de bloque de hormigón según detalle muro armado - PSS - Costado del quincho y fogonero* | 12d | 2026-11-06 | 2026-11-24 | 126 | 2026-10-29 | 2026-11-13 | 12d | 2026-10-29 | 2026-11-13 | 460d |  | Mariana V | 96h | Albañileria | Subsuelo 1 | Seguimiento | 2.77 |

| ID | WBS | Task | Duration | Start | Finish | Predecessors | Complete | Remaining | Baseline start | Baseline finish | Baseline duration | Baseline 1 start | Baseline 1 finish | Total slack | Free slack | Resources | Work | Actual work | Texto1 | Texto2 | Texto3 | Texto4 |
| --- | --- | --- | --- | --- | --- | --- | --- | --- | --- | --- | --- | --- | --- | --- | --- | --- | --- | --- | --- | --- | --- | --- |
| 111 | 1.3.3.10 | **Aislación en Muros y Contrapiso** | 159d | 2026-08-04 | 2027-03-24 |  |  |  | 2026-08-04 | 2027-03-24 | 159d | 2026-08-04 | 2027-03-24 | 0d |  |  | 584h |  |  |  |  |  |
| 112 | 1.3.3.10.1 | Capa Aisladora Horizontal Mampostería | 7d | 2026-09-18 | 2026-09-28 | 103 |  |  | 2026-09-10 | 2026-09-18 | 7d | 2026-09-10 | 2026-09-18 | 460d | 0d | Mariana V | 56h |  | Albañileria | Subsuelo 1 | Seguimiento | 2.78 |
| 113 | 1.3.3.10.2 | Capa Aisladora Horizontal Mampostería PB | 7d | 2026-08-04 | 2026-08-12 | 106 |  |  | 2026-08-04 | 2026-08-12 | 7d | 2026-08-04 | 2026-08-12 | 0d |  | Mariana V | 56h |  | Albañileria | Planta Baja | Seguimiento |  |
| 114 | 1.3.3.10.3 | Capa Aisladora Horizontal bajo contrapiso | 5d | 2026-10-06 | 2026-10-12 | 14 |  |  | 2026-09-28 | 2026-10-02 | 5d | 2026-09-28 | 2026-10-02 | 460d | 0d | Mariana V | 40h |  | Albañileria | Subsuelo 1 | Seguimiento | 2.79 |
| 115 | 1.3.3.10.4 | Capa Aisladora Horizontal bajo contrapiso PB | 5d | 2026-08-21 | 2026-08-27 | 15 |  |  | 2026-08-21 | 2026-08-27 | 5d | 2026-08-21 | 2026-08-27 | 0d |  | Mariana V | 40h |  | Albañileria | Planta Baja | Seguimiento |  |
| 116 | 1.3.3.10.5 | Capa Aisladora Vertical Mampostería - H: 50cm | 10d | 2026-09-18 | 2026-10-01 | 103 |  |  | 2026-09-10 | 2026-09-23 | 10d | 2026-09-10 | 2026-09-23 | 496d |  | Mariana V | 80h |  | Albañileria | Subsuelo 1 | Seguimiento | 2.80 |
| 117 | 1.3.3.10.6 | Capa Aisladora Vertical Mampostería - H: 50cm PB | 7d | 2026-08-04 | 2026-08-12 | 106 |  |  | 2026-08-04 | 2026-08-12 | 7d | 2026-08-04 | 2026-08-12 | 531d |  | Mariana V | 56h |  | Albañileria | Planta Baja | Seguimiento |  |
| 118 | 1.3.3.10.7 | Capa Aisladora Vertical Muros revestido de piedra con sika monotop 107 | 5d | 2026-11-05 | 2026-11-11 | 153 |  |  | 2026-11-13 | 2026-11-20 | 5d | 2026-11-13 | 2026-11-20 | 468d |  | Mariana V | 40h |  | Albañileria | Subsuelo 1 | Seguimiento | 2.81 |
| 119 | 1.3.3.10.8 | Capa Aisladora Vertical Muros revestido de piedra con sika monotop 107 PB | 5d | 2026-11-04 | 2026-11-10 | 154 |  |  | 2026-11-04 | 2026-11-10 | 5d | 2026-11-04 | 2026-11-10 | 469d |  | Mariana V | 40h |  | Albañileria | Planta Baja | Seguimiento |  |
| 120 | 1.3.3.10.9 | Capa Aisladora Vertical Muros revestido de piedra con sika monotop 107 PA | 5d | 2027-03-18 | 2027-03-24 | 155 |  |  | 2027-03-18 | 2027-03-24 | 5d | 2027-03-18 | 2027-03-24 | 378d |  | Mariana V | 40h |  | Albañileria | Primer Piso | Seguimiento |  |
| 121 | 1.3.3.10.10 | Capa Aisladora Vertical en Muros Armados - Cara exterior (membrana geo) | 10d | 2026-10-22 | 2026-11-04 | 153FF |  |  | 2026-10-30 | 2026-11-12 | 10d | 2026-10-30 | 2026-11-12 | 466d | 0d | Mariana V | 80h |  | Albañileria |  | Seguimiento | 2.82 |
| 122 | 1.3.3.10.11 | Capa Aisladora Vertical en Muros Armados - Cara exterior (rafa de ladrillos)** | 7d | 2026-11-05 | 2026-11-13 | 121 |  |  | 2026-11-13 | 2026-11-24 | 7d | 2026-11-13 | 2026-11-24 | 466d |  | Mariana V | 56h |  | Albañileria |  | Seguimiento | 2.83 |
| 123 | 1.3.3.11 | **Contrapiso** | 264d | 2026-08-14 A | 2027-09-03 |  | 15% | 224.68d | 2026-08-25 | 2027-09-03 | 258d | 2026-08-25 | 2027-09-03 | 266d |  |  | 376h | 56h |  |  |  |  |
| 124 | 1.3.3.11.1 | Hormigón p/contrapiso Interior Casa e=10cm (PSS) | 7d | 2026-08-14 A | 2026-08-25 A | 26FS+14d | 100% |  | 2026-08-25 | 2026-09-02 | 7d | 2026-08-25 | 2026-09-02 |  |  | Mariana V | 56h | 56h | Albañileria | Subsuelo 1 | Seguimiento | 2.84 |
| 125 | 1.3.3.11.2 | Hormigón p/contrapiso Exterior Cochera e=10cm (PSS) | 5d | 2026-10-23 | 2026-10-29 | 114FS+7d |  |  | 2026-10-15 | 2026-10-21 | 5d | 2026-10-15 | 2026-10-21 | 460d | 0d | Mariana V | 40h |  | Albañileria | Subsuelo 1 | Seguimiento | 2.85 |
| 126 | 1.3.3.11.3 | Hormigón p/contrapiso Exterior Vereda Perimetral + Borde Fogonero e=10cm (PSS) | 5d | 2026-10-30 | 2026-11-05 | 125 |  |  | 2026-10-22 | 2026-10-28 | 5d | 2026-10-22 | 2026-10-28 | 460d | 0d | Mariana V | 40h |  | Albañileria | Subsuelo 1 | Seguimiento | 2.86 |
| 127 | 1.3.3.11.4 | Hormigón p/contrapiso Exterior Solarium e=10cm (PSS) | 5d | 2026-10-30 | 2026-11-05 | 126FF |  |  | 2026-10-22 | 2026-10-28 | 5d | 2026-10-22 | 2026-10-28 | 472d |  | Mariana V | 40h |  | Albañileria | Subsuelo 1 | Seguimiento | 2.87 |
| 128 | 1.3.3.11.5 | Hormigón p/contrapiso Interior Casa e=10cm (PB) | 7d | 2026-08-28 | 2026-09-07 | 115 |  |  | 2026-08-28 | 2026-09-07 | 7d | 2026-08-28 | 2026-09-07 | 0d |  | Mariana V | 56h |  | Albañileria | Planta Baja | Seguimiento | 2.88 |
| 129 | 1.3.3.11.6 | Hormigón p/contrapiso ARMADO Interior Casa e=10cm (PB) | 5d | 2026-09-01 | 2026-09-07 | 128FF |  |  | 2026-09-01 | 2026-09-07 | 5d | 2026-09-01 | 2026-09-07 | 514d | 0d | Mariana V | 40h |  | Albañileria | Planta Baja | Seguimiento | 2.89 |
| 130 | 1.3.3.11.7 | Hormigón p/contrapiso Exterior Ingreso Peatonal e=10cm (PB) | 5d | 2027-08-30 | 2027-09-03 | 165 |  |  | 2027-08-30 | 2027-09-03 | 5d | 2027-08-30 | 2027-09-03 | 256d | 0d | Mariana V | 40h |  | Albañileria | Planta Baja | Seguimiento | 2.90 |
| 131 | 1.3.3.11.8 | Hormigón p/contrapiso Exterior Ingreso Cochera Secundario e=10cm | 8d | 2026-08-27 | 2026-09-07 | 128FF |  |  | 2026-08-27 | 2026-09-07 | 8d | 2026-08-27 | 2026-09-07 | 514d |  | Mariana V | 64h |  | Albañileria | Planta Baja | Seguimiento | 2.91 |
| 132 | 1.3.3.12 | **Carpeta de Nivelación** | 165d | 2027-01-22 | 2027-09-17 |  |  |  | 2027-02-01 | 2027-09-17 | 159d | 2027-02-01 | 2027-09-17 | 256d |  |  | 928h |  |  |  |  |  |
| 133 | 1.3.3.12.1 | Carpeta de Nivelación Interior Casa e=10cm (PSS) | 12d | 2027-06-25 | 2027-07-13 | 258 |  |  | 2027-06-25 | 2027-07-13 | 12d | 2027-06-25 | 2027-07-13 | 243d | 0d | Mariana V | 96h |  | Albañileria | Subsuelo 1 | Seguimiento | 2.91 |
| 134 | 1.3.3.12.2 | Carpeta de Nivelación Exterior Cochera e=10cm (PSS) | 10d | 2027-06-29 | 2027-07-13 | 133FF |  |  | 2027-06-29 | 2027-07-13 | 10d | 2027-06-29 | 2027-07-13 | 293d | 0d | Mariana V | 80h |  | Albañileria | Subsuelo 1 | Seguimiento | 2.92 |
| 135 | 1.3.3.12.3 | Carpeta de Nivelación Exterior Vereda Perimetral + Borde Fogonero e=10cm (PSS) | 10d | 2027-07-14 | 2027-07-27 | 134 |  |  | 2027-07-14 | 2027-07-27 | 10d | 2027-07-14 | 2027-07-27 | 293d | 0d | Mariana V | 80h |  | Albañileria | Subsuelo 1 | Seguimiento | 2.93 |
| 136 | 1.3.3.12.4 | Carpeta de Nivelación Exterior Solarium e=10cm (PSS) | 10d | 2027-07-14 | 2027-07-27 | 135FF |  |  | 2027-07-14 | 2027-07-27 | 10d | 2027-07-14 | 2027-07-27 | 293d |  | Mariana V | 80h |  | Albañileria | Subsuelo 1 | Seguimiento | 2.94 |
| 137 | 1.3.3.12.5 | Carpeta de Nivelación Interior Casa e=10cm (PB) | 12d | 2027-07-06 | 2027-07-22 | 259 |  |  | 2027-07-06 | 2027-07-22 | 12d | 2027-07-06 | 2027-07-22 | 286d | 0d | Mariana V | 96h |  | Albañileria | Planta Baja | Seguimiento | 2.95 |
| 138 | 1.3.3.12.6 | Carpeta de Nivelación Exterior Ingreso Peatonal e=10cm (PB) | 10d | 2027-09-06 | 2027-09-17 | 130 |  |  | 2027-09-06 | 2027-09-17 | 10d | 2027-09-06 | 2027-09-17 | 256d |  | Mariana V | 80h |  | Albañileria | Planta Baja | Seguimiento | 2.96 |
| 139 | 1.3.3.12.7 | Carpeta de Nivelación Exterior Ingreso Cochera Secundario e=10cm (PB) | 10d | 2027-07-23 | 2027-08-05 | 137 |  |  | 2027-07-23 | 2027-08-05 | 10d | 2027-07-23 | 2027-08-05 | 286d |  | Mariana V | 80h |  | Albañileria | Planta Baja | Seguimiento | 2.97 |
| 140 | 1.3.3.12.8 | Carpeta de Nievelación Interior Casa e=4cm (PA) | 12d | 2027-07-16 | 2027-08-02 | 260 |  |  | 2027-07-16 | 2027-08-02 | 12d | 2027-07-16 | 2027-08-02 | 281d | 0d | Mariana V | 96h |  | Albañileria | Primer Piso | Seguimiento | 2.98 |
| 141 | 1.3.3.12.9 | Carpeta de Nievelación Alero e=4cm (PA) | 5d | 2027-08-03 | 2027-08-09 | 140 |  |  | 2027-08-03 | 2027-08-09 | 5d | 2027-08-03 | 2027-08-09 | 284d |  | Mariana V | 40h |  | Albañileria | Primer Piso | Seguimiento | 2.99 |
| 142 | 1.3.3.12.10 | Carpeta de Nievelación Estar Exterior e=4cm (PA) | 8d | 2027-08-03 | 2027-08-12 | 140 |  |  | 2027-08-03 | 2027-08-12 | 8d | 2027-08-03 | 2027-08-12 | 281d |  | Mariana V | 64h |  | Albañileria | Primer Piso | Seguimiento | 2.100 |
| 143 | 1.3.3.12.11 | Carpeta de Nivelación de Cubierta e= 4 cm | 7d | 2027-01-22 | 2027-02-01 | 146 |  |  | 2027-02-01 | 2027-02-09 | 7d | 2027-02-01 | 2027-02-09 | 407d | 0d | Mariana V | 56h |  | Albañileria | Subsuelo 1 | Seguimiento | 2.101 |
| 144 | 1.3.3.12.12 | Carpeta de Nivelación de Cubierta e= 4 cm PA | 10d | 2027-07-09 | 2027-07-22 | 147 |  |  | 2027-07-09 | 2027-07-22 | 10d | 2027-07-09 | 2027-07-22 | 246d | 0d | Mariana V | 80h |  | Albañileria | Primer Piso | Seguimiento |  |

| ID | WBS | Task | Duration | Start | Finish | Predecessors | Baseline start | Baseline finish | Baseline duration | Baseline 1 start | Baseline 1 finish | Total slack | Free slack | Resources | Work | Texto1 | Texto2 | Texto3 | Texto4 |
| --- | --- | --- | --- | --- | --- | --- | --- | --- | --- | --- | --- | --- | --- | --- | --- | --- | --- | --- | --- |
| 145 | 1.3.3.13 | **Cubierta** | 142d | 2027-01-08 | 2027-08-02 |  | 2027-01-18 | 2027-08-02 | 136d | 2027-01-18 | 2027-08-02 | 289d |  |  | 328h |  |  |  |  |
| 146 | 1.3.3.13.1 | Cubierta común sobre Losa - Hormigon de Pendiente (carga) - 10 cm | 7d | 2027-01-13 | 2027-01-21 | 150 | 2027-01-21 | 2027-01-29 | 7d | 2027-01-21 | 2027-01-29 | 407d | 0d | Mariana V | 56h | Albañileria | Subsuelo 1 | Seguimiento | 2.102 |
| 147 | 1.3.3.13.2 | Cubierta común sobre Losa - Hormigon de Pendiente (carga) - 10 cm PA | 10d | 2027-06-25 | 2027-07-08 | 151 | 2027-06-25 | 2027-07-08 | 10d | 2027-06-25 | 2027-07-08 | 246d | 0d | Mariana V | 80h | Albañileria | Primer Piso | Seguimiento |  |
| 148 | 1.3.3.13.3 | Impermeabilización en cubierta* (con parapeto-h:20cm) | 7d | 2027-02-02 | 2027-02-11 | 143 | 2027-02-11 | 2027-02-19 | 7d | 2027-02-11 | 2027-02-19 | 407d |  | Mariana V | 56h | Albañileria | Subsuelo 1 | Seguimiento | 2.103 |
| 149 | 1.3.3.13.4 | Impermeabilización en cubierta* (con parapeto-h:20cm) PA | 7d | 2027-07-23 | 2027-08-02 | 144 | 2027-07-23 | 2027-08-02 | 7d | 2027-07-23 | 2027-08-02 | 289d |  | Mariana V | 56h | Albañileria | Primer Piso | Seguimiento |  |
| 150 | 1.3.3.13.5 | Parapeto SS | 3d | 2027-01-08 | 2027-01-12 | 87 | 2027-01-18 | 2027-01-20 | 3d | 2027-01-18 | 2027-01-20 | 407d | 0d | Mariana V | 24h | Albañileria | Subsuelo 1 | Seguimiento |  |
| 151 | 1.3.3.13.6 | Parapeto PA + tanque | 7d | 2027-06-16 | 2027-06-24 | 98 | 2027-06-16 | 2027-06-24 | 7d | 2027-06-16 | 2027-06-24 | 247d | 0d | Mariana V | 56h | Albañileria | Primer Piso | Seguimiento |  |
| 152 | 1.3.3.14 | **Azotado Hidrófugo + Revoque Grueso exterior** | 111d | 2026-10-06 | 2027-03-17 |  | 2026-10-06 | 2027-03-17 | 111d | 2026-10-06 | 2027-03-17 | 0d |  |  | 400h |  |  |  |  |
| 153 | 1.3.3.14.1 | Revoque c/ azotado hidrof. cementicio en mamp. | 15d | 2026-10-15 | 2026-11-04 | 100 | 2026-10-23 | 2026-11-12 | 15d | 2026-10-23 | 2026-11-12 | 395d | 0d | Mariana V | 120h | Albañileria | Subsuelo 1 | Seguimiento | 2.104 |
| 154 | 1.3.3.14.2 | Revoque c/ azotado hidrof. cementicio en mamp. | 20d | 2026-10-06 | 2026-11-03 | 104 | 2026-10-06 | 2026-11-03 | 20d | 2026-10-06 | 2026-11-03 | 0d |  | Mariana V | 160h | Albañileria | Planta Baja | Seguimiento | 2.105 |
| 155 | 1.3.3.14.3 | Revoque c/ azotado hidrof. cementicio en mamp. | 15d | 2027-02-25 | 2027-03-17 | 107 | 2027-02-25 | 2027-03-17 | 15d | 2027-02-25 | 2027-03-17 | 0d |  | Mariana V | 120h | Albañileria | Primer Piso | Seguimiento | 2.106 |
| 156 | 1.3.3.15 | **Azotado Cementicio Interior** | 285d | 2026-06-24 | 2027-08-12 |  | 2026-06-22 | 2027-08-12 | 287d | 2026-06-22 | 2027-08-12 | 92d |  |  | 576h |  |  |  |  |
| 157 | 1.3.3.15.1 | Azotado Cementicio Interior | 12d | 2026-11-05 | 2026-11-23 | 153 | 2026-11-13 | 2026-12-01 | 12d | 2026-11-13 | 2026-12-01 | 395d | 0d | Mariana V | 96h | Albañileria | Subsuelo 1 | Seguimiento | 2.107 |
| 158 | 1.3.3.15.2 | Azotado Cementicio Interior | 15d | 2026-11-04 | 2026-11-25 | 154 | 2026-11-04 | 2026-11-25 | 15d | 2026-11-04 | 2026-11-25 | 0d |  | Mariana V | 120h | Albañileria | Planta Baja | Seguimiento | 2.108 |
| 159 | 1.3.3.15.3 | Azotado Cementicio Cieloraso | 15d | 2026-06-24 | 2026-07-15 |  | 2026-06-22 | 2026-07-13 | 15d | 2026-06-22 | 2026-07-13 | 551d |  | Mariana V | 120h | Albañileria | Planta Baja | Seguimiento |  |
| 160 | 1.3.3.15.4 | Azotado Cementicio Interior | 15d | 2027-03-18 | 2027-04-09 | 155 | 2027-03-18 | 2027-04-09 | 15d | 2027-03-18 | 2027-04-09 | 0d |  | Mariana V | 120h | Albañileria | Primer Piso | Seguimiento | 2.109 |
| 161 | 1.3.3.15.5 | Azotado Cementicio Cieloraso | 15d | 2027-07-23 | 2027-08-12 | 144 | 2027-07-23 | 2027-08-12 | 15d | 2027-07-23 | 2027-08-12 | 247d | 0d | Mariana V | 120h | Albañileria | Primer Piso | Seguimiento |  |
| 162 | 1.3.3.16 | **Revoque Fino Exterior** | 20d | 2027-08-13 | 2027-09-10 |  | 2027-08-13 | 2027-09-10 | 20d | 2027-08-13 | 2027-09-10 | 247d |  |  | 160h |  |  |  |  |
| 163 | 1.3.3.16.1 | Revoque Fino Exterior | 3d | 2027-09-08 | 2027-09-10 | 164 | 2027-09-08 | 2027-09-10 | 3d | 2027-09-08 | 2027-09-10 | 261d |  | Mariana V | 24h | Albañileria | Subsuelo 1 | Seguimiento | 2.110 |
| 164 | 1.3.3.16.2 | Revoque Fino Exterior | 7d | 2027-08-30 | 2027-09-07 | 165 | 2027-08-30 | 2027-09-07 | 7d | 2027-08-30 | 2027-09-07 | 247d | 0d | Mariana V | 56h | Albañileria | Planta Baja | Seguimiento | 2.111 |
| 165 | 1.3.3.16.3 | Revoque Fino Exterior | 10d | 2027-08-13 | 2027-08-27 | 161 | 2027-08-13 | 2027-08-27 | 10d | 2027-08-13 | 2027-08-27 | 247d | 0d | Mariana V | 80h | Albañileria | Primer Piso | Seguimiento | 2.112 |
| 166 | 1.3.3.17 | **Engrosado + Enlucido de Yeso** | 123d | 2027-02-16 | 2027-08-11 |  | 2027-02-24 | 2027-08-11 | 117d | 2027-02-24 | 2027-08-11 | 282d |  |  | 280h |  |  |  |  |
| 167 | 1.3.3.17.1 | Engrosado + Enlucido de Yeso | 10d | 2027-02-16 | 2027-03-01 | 90FS+25d | 2027-02-24 | 2027-03-09 | 10d | 2027-02-24 | 2027-03-09 | 395d |  | Mariana V | 80h | Albañileria | Subsuelo 1 | Seguimiento | 2.113 |
| 168 | 1.3.3.17.2 | Engrosado + Enlucido de Yeso | 10d | 2027-02-25 | 2027-03-10 | 94FS+25d | 2027-02-25 | 2027-03-10 | 10d | 2027-02-25 | 2027-03-10 | 388d |  | Mariana V | 80h | Albañileria | Planta Baja | Seguimiento | 2.114 |
| 169 | 1.3.3.17.3 | Engrosado + Enlucido de Yeso | 15d | 2027-07-22 | 2027-08-11 | 98FS+25d | 2027-07-22 | 2027-08-11 | 15d | 2027-07-22 | 2027-08-11 | 242d | 0d | Mariana V | 120h | Albañileria | Primer Piso | Seguimiento | 2.115 |

| ID | WBS | Task | Duration | Start | Finish | Predecessors | Baseline start | Baseline finish | Baseline duration | Baseline 1 start | Baseline 1 finish | Total slack | Free slack | Resources | Work | Texto1 | Texto2 | Texto3 | Texto4 |
| --- | --- | --- | --- | --- | --- | --- | --- | --- | --- | --- | --- | --- | --- | --- | --- | --- | --- | --- | --- |
| 170 | 1.3.3.18 | **Cielorrasos** | 346d | 2026-06-24 | 2027-11-09 |  | 2026-06-22 | 2027-11-09 | 348d | 2026-06-22 | 2027-11-09 | 220d |  |  | 1136h |  |  |  |  |
| 171 | 1.3.3.18.1 | Cielorraso de Placa de Yeso Suspendido (estructura + emplacado) | 5d | 2027-08-20 | 2027-08-26 | 251 | 2027-08-20 | 2027-08-26 | 5d | 2027-08-20 | 2027-08-26 | 242d | 0d | Mariana V | 40h | Albañileria | Subsuelo 1 | Seguimiento | 2.116 |
| 172 | 1.3.3.18.2 | Cielorraso de Madera | 25d | 2027-08-13 | 2027-09-17 | 363 | 2027-08-13 | 2027-09-17 | 25d | 2027-08-13 | 2027-09-17 | 220d | 0d | Mariana V | 200h | Albañileria | Subsuelo 1 | Seguimiento | 2.117 |
| 173 | 1.3.3.18.3 | Cortinero (estructura + emplacado) | 10d | 2027-08-27 | 2027-09-09 | 171 | 2027-08-27 | 2027-09-09 | 10d | 2027-08-27 | 2027-09-09 | 242d | 0d | Mariana V | 80h | Albañileria | Subsuelo 1 | Seguimiento | 2.118 |
| 174 | 1.3.3.18.4 | Cielorraso de Placa de Yeso Suspendido (estructura + emplacado) | 7d | 2027-09-15 | 2027-09-23 | 178FF | 2027-09-15 | 2027-09-23 | 7d | 2027-09-15 | 2027-09-23 | 252d |  | Mariana V | 56h | Albañileria | Planta Baja | Seguimiento | 2.119 |
| 175 | 1.3.3.18.5 | Cielorraso de Madera | 18d | 2027-09-20 | 2027-10-14 | 172 | 2027-09-20 | 2027-10-14 | 18d | 2027-09-20 | 2027-10-14 | 220d | 0d | Mariana V | 144h | Albañileria | Planta Baja | Seguimiento | 2.120 |
| 176 | 1.3.3.18.6 | Cielorraso de Yeso Aplicado | 12d | 2026-06-24 | 2026-07-10 |  | 2026-06-22 | 2026-07-07 | 12d | 2026-06-22 | 2026-07-07 | 542d | 0d | Mariana V | 96h | Albañileria | Planta Baja | Seguimiento | 2.121 |
| 177 | 1.3.3.18.7 | Cielorraso de Lona Camuflada | 5d | 2027-09-27 | 2027-10-01 | 369 | 2027-09-27 | 2027-10-01 | 5d | 2027-09-27 | 2027-10-01 | 246d |  | Mariana V | 40h | Albañileria | Planta Baja | Seguimiento | 2.122 |
| 178 | 1.3.3.18.8 | Cortinero (estructura + emplacado) | 10d | 2027-09-10 | 2027-09-23 | 173 | 2027-09-10 | 2027-09-23 | 10d | 2027-09-10 | 2027-09-23 | 242d | 0d | Mariana V | 80h | Albañileria | Planta Baja | Seguimiento | 2.123 |
| 179 | 1.3.3.18.9 | Cielorraso de Placa de Yeso Suspendido (estructura + emplacado) | 10d | 2027-09-24 | 2027-10-07 | 178 | 2027-09-24 | 2027-10-07 | 10d | 2027-09-24 | 2027-10-07 | 242d | 0d | Mariana V | 80h | Albañileria | Primer Piso | Seguimiento | 2.124 |
| 180 | 1.3.3.18.10 | Cielorraso de Madera | 18d | 2027-10-15 | 2027-11-09 | 175 | 2027-10-15 | 2027-11-09 | 18d | 2027-10-15 | 2027-11-09 | 220d |  | Mariana V | 144h | Albañileria | Primer Piso | Seguimiento | 2.125 |
| 181 | 1.3.3.18.11 | Cielorraso de Yeso Aplicado | 12d | 2026-07-13 | 2026-07-28 | 176 | 2026-07-08 | 2026-07-24 | 12d | 2026-07-08 | 2026-07-24 | 542d |  | Mariana V | 96h | Albañileria | Primer Piso | Seguimiento | 2.126 |
| 182 | 1.3.3.18.12 | Cortinero (estructura + emplacado) | 10d | 2027-09-24 | 2027-10-07 | 179FF | 2027-09-24 | 2027-10-07 | 10d | 2027-09-24 | 2027-10-07 | 242d |  | Mariana V | 80h | Albañileria | Primer Piso | Seguimiento | 2.127 |
| 183 | 1.3.3.19 | **Escaleras** | 101d | 2026-08-25 | 2027-01-19 |  | 2026-08-25 | 2027-01-19 | 101d | 2026-08-25 | 2027-01-19 | 423d |  |  |  |  |  |  |  |
| 184 | 1.3.3.19.1 | Escalera de Hormigon in situ - PSS a PA | 15d | 2026-12-29 | 2027-01-19 | 94FF | 2026-12-29 | 2027-01-19 | 15d | 2026-12-29 | 2027-01-19 | 423d |  |  |  |  | Planta Baja |  | 2.128 |
| 185 | 1.3.3.19.2 | Escalera de Hormigon in situ - PSS a PB | 15d | 2026-12-17 | 2027-01-08 | 90FF | 2026-12-28 | 2027-01-18 | 15d | 2026-12-28 | 2027-01-18 | 430d |  |  |  |  | Subsuelo 1 |  | 2.129 |
| 186 | 1.3.3.19.3 | Escalera Ext. de Hormigon in situ - (Costado Quincho) - PSS a Patio PB | 10d | 2026-10-16 | 2026-10-29 | 125FF | 2026-10-07 | 2026-10-21 | 10d | 2026-10-07 | 2026-10-21 | 477d |  |  |  |  | Subsuelo 1 |  | 2.130 |
| 187 | 1.3.3.19.4 | Escalera Ext. de Hormigon in situ - (Galería a patio solarium)* | 10d | 2026-08-25 | 2026-09-07 | 128FF | 2026-08-25 | 2026-09-07 | 10d | 2026-08-25 | 2026-09-07 | 514d |  |  |  |  | Planta Baja |  | 2.131 |
| 188 | 1.3.3.20 | **Asador** | 10d | 2026-09-09 | 2026-09-22 |  | 2026-09-17 | 2026-09-30 | 10d | 2026-09-17 | 2026-09-30 | 503d |  |  | 80h |  |  |  |  |
| 189 | 1.3.3.20.1 | Asador + horno (3,00 m de largo) | 10d | 2026-09-09 | 2026-09-22 | 102 | 2026-09-17 | 2026-09-30 | 10d | 2026-09-17 | 2026-09-30 | 503d |  | Mariana V | 80h | Albañileria | Subsuelo 1 | Seguimiento | 2.132 |
| 190 | 1.3.3.21 | **Veredas Perimetrales** | 8d | 2026-08-27 | 2026-09-07 |  | 2026-08-27 | 2026-09-07 | 8d | 2026-08-27 | 2026-09-07 | 514d |  |  | 64h |  |  |  |  |
| 191 | 1.3.3.21.1 | Veredas Perimetrales con Cordon - Ancho 40cm* | 8d | 2026-08-27 | 2026-09-07 | 129FF | 2026-08-27 | 2026-09-07 | 8d | 2026-08-27 | 2026-09-07 | 514d |  | Mariana V | 64h | Albañileria | Planta Baja | Seguimiento | 2.133 |
| 192 | 1.3.4 | **HERRERIA** | 150d | 2026-06-24 | 2027-01-28 |  | 2026-06-22 | 2027-01-28 | 152d | 2026-06-22 | 2027-01-28 | 416d |  |  | 808h |  |  |  | 3 |
| 193 | 1.3.4.1 | **Columnas Metálicas** | 127d | 2026-07-28 | 2027-01-28 |  | 2026-07-28 | 2027-01-28 | 127d | 2026-07-28 | 2027-01-28 | 416d |  |  | 424h |  |  |  |  |
| 194 | 1.3.4.1.1 | CM- 2UPN 100 (1 columna) 2,80 mts de largo | 3d | 2026-09-11 | 2026-09-15 | 33 | 2026-09-03 | 2026-09-07 | 3d | 2026-09-03 | 2026-09-07 | 508d |  | Mariana V | 24h | Herrería | Subsuelo 1 | Seguimiento | 3.01 |
| 195 | 1.3.4.1.2 | CM1- 2UPN 120 (2 columnas) 2,80 mts de largo | 3d | 2026-09-11 | 2026-09-15 | 33 | 2026-09-03 | 2026-09-07 | 3d | 2026-09-03 | 2026-09-07 | 508d |  | Mariana V | 24h | Herrería | Subsuelo 1 | Seguimiento | 3.02 |
| 196 | 1.3.4.1.3 | CM- 2UPN 100 (18 columna) 2,80 mts de largo | 10d | 2026-07-28 | 2026-08-10 | 35 | 2026-07-28 | 2026-08-10 | 10d | 2026-07-28 | 2026-08-10 | 518d | 0d | Mariana V | 80h | Herrería | Planta Baja | Seguimiento | 3.03 |
| 197 | 1.3.4.1.4 | CM1- 2UPN 120 (1 columna) 2,80 mts de largo | 10d | 2026-07-28 | 2026-08-10 | 35 | 2026-07-28 | 2026-08-10 | 10d | 2026-07-28 | 2026-08-10 | 533d |  | Mariana V | 80h | Herrería | Planta Baja | Seguimiento | 3.04 |
| 198 | 1.3.4.1.5 | CM2- 2UPN 140 (2 columnas) 2,80 mts de largo | 10d | 2026-07-28 | 2026-08-10 | 35 | 2026-07-28 | 2026-08-10 | 10d | 2026-07-28 | 2026-08-10 | 533d |  | Mariana V | 80h | Herrería | Planta Baja | Seguimiento | 3.05 |
| 199 | 1.3.4.1.6 | CM3- 2UPN 160 (3 columnas) 2,80 mts de largo | 10d | 2026-07-28 | 2026-08-10 | 35 | 2026-07-28 | 2026-08-10 | 10d | 2026-07-28 | 2026-08-10 | 533d |  | Mariana V | 80h | Herrería | Planta Baja | Seguimiento | 3.06 |
| 200 | 1.3.4.1.7 | CM- 2UPN 100 (6 columna) 2,80 mts de largo | 7d | 2027-01-20 | 2027-01-28 | 94 | 2027-01-20 | 2027-01-28 | 7d | 2027-01-20 | 2027-01-28 | 416d |  | Mariana V | 56h | Herrería | Primer Piso | Seguimiento | 3.07 |

| ID | WBS | Task | Duration | Start | Finish | Predecessors | Baseline start | Baseline finish | Baseline duration | Baseline 1 start | Baseline 1 finish | Total slack | Free slack | Resources | Work | Texto1 | Texto2 | Texto3 | Texto4 |
| --- | --- | --- | --- | --- | --- | --- | --- | --- | --- | --- | --- | --- | --- | --- | --- | --- | --- | --- | --- |
| 201 | 1.3.4.2 | **Vigas Metálicas** | 9.5d | 2026-12-09 | 2026-12-22 |  | 2026-12-15 | 2026-12-23 | 6.5d | 2026-12-15 | 2026-12-23 | 441.5d |  |  | 160h |  |  |  |  |
| 202 | 1.3.4.2.1 | IPN 240 - Viga de Borde en Piso D1 Principal | 5d | 2026-12-09 | 2026-12-15 | 87SF+5% | 2026-12-17 | 2026-12-23 | 5d | 2026-12-17 | 2026-12-23 | 446d |  | Mariana V | 40h | Herrería | Subsuelo 1 | Seguimiento | 3.08 |
| 203 | 1.3.4.2.2 | IPN 240 - Viga de Borde en Losa Dº Principal | 5d | 2026-12-15 | 2026-12-22 | 91SF+5% | 2026-12-15 | 2026-12-22 | 5d | 2026-12-15 | 2026-12-22 | 441.5d | 0d | Mariana V | 40h | Herrería | Planta Baja | Seguimiento | 3.09 |
| 204 | 1.3.4.2.3 | IPN 160 - Viga entre ventanas de dos alturas (Living Estar) | 5d | 2026-12-15 | 2026-12-22 | 91SF+5% | 2026-12-15 | 2026-12-22 | 5d | 2026-12-15 | 2026-12-22 | 441.5d |  | Mariana V | 40h | Herrería | Planta Baja | Seguimiento | 3.10 |
| 205 | 1.3.4.2.4 | IPN 140 - Viga de anclaje de escalera | 5d | 2026-12-15 | 2026-12-22 | 91SF+5% | 2026-12-15 | 2026-12-22 | 5d | 2026-12-15 | 2026-12-22 | 441.5d |  | Mariana V | 40h | Herrería | Planta Baja | Seguimiento | 3.11 |
| 206 | 1.3.4.3 | **Pergola Metálica** | 15d | 2026-08-11 | 2026-09-01 |  | 2026-08-11 | 2026-09-01 | 15d | 2026-08-11 | 2026-09-01 | 518d |  |  | 200h |  |  |  |  |
| 207 | 1.3.4.3.1 | Pergola Metálica de Cochera Secundaria - Perfiles de borde de IPN160 (21 mts de borde) - Correas según el peso del material a colocar. | 15d | 2026-08-11 | 2026-09-01 | 196 | 2026-08-11 | 2026-09-01 | 15d | 2026-08-11 | 2026-09-01 | 518d | 0d | Mariana V | 120h | Herrería | Planta Baja | Seguimiento | 3.12 |
| 208 | 1.3.4.3.2 | Pergola Metálica de Estar Exterior - Perfiles de borde de IPN240 (30 mts de borde) - 33 mts de IPN160 como correas de la pérgola según detalle. | 10d | 2026-08-11 | 2026-08-25 | 196 | 2026-08-11 | 2026-08-25 | 10d | 2026-08-11 | 2026-08-25 | 523d |  | Mariana V | 80h | Herrería | Planta Baja | Seguimiento | 3.13 |
| 209 | 1.3.4.4 | **Barandas Metálicas** | 10d | 2026-06-24 | 2026-07-07 |  | 2026-06-22 | 2026-07-03 | 10d | 2026-06-22 | 2026-07-03 | 556d |  |  |  |  |  |  |  |
| 210 | 1.3.4.4.1 | Barandas metálicas y de vidrio (22 mts según 3D) sobre balcon PA* | 10d | 2026-06-24 | 2026-07-07 |  | 2026-06-22 | 2026-07-03 | 10d | 2026-06-22 | 2026-07-03 | 556d |  |  |  |  |  |  | 3.14 |
| 211 | 1.3.4.5 | **Conductos Metálicos** | 3d | 2027-01-04 | 2027-01-06 |  | 2027-01-12 | 2027-01-14 | 3d | 2027-01-12 | 2027-01-14 | 430d |  |  | 24h |  |  |  |  |
| 212 | 1.3.4.5.1 | Asador - conducto de ventilacion 3,00m - 30 diam. | 3d | 2027-01-04 | 2027-01-06 | 90FS-5d | 2027-01-12 | 2027-01-14 | 3d | 2027-01-12 | 2027-01-14 | 430d | 0d | Mariana V | 24h | Herrería | Subsuelo 1 | Seguimiento | 3.15 |
| 213 | 1.3.5 | **INSTALACIONES SANITARIAS** | 303d | 2026-07-28 | 2027-10-11 |  | 2026-07-28 | 2027-10-11 | 303d | 2026-07-28 | 2027-10-11 | 240d |  |  | 2096h |  |  |  | 4 |
| 214 | 1.3.5.1 | **Instalaciones Pluviales** | 266d | 2026-07-28 | 2027-08-19 |  | 2026-07-28 | 2027-08-19 | 266d | 2026-07-28 | 2027-08-19 | 277d |  |  | 432h |  |  |  |  |
| 215 | 1.3.5.1.1 | Desagues pluviales (sin zinguería) con colocacion de cámaras de inspección SS contrapiso | 7d | 2026-09-03 | 2026-09-11 | 23 | 2026-09-03 | 2026-09-11 | 7d | 2026-09-03 | 2026-09-11 | 510d |  | Mariana V | 56h |  | Subsuelo 1 |  | 4.01 |
| 216 | 1.3.5.1.2 | Desagues pluviales (sin zinguería) con colocacion de cámaras de inspección SS pared | 7d | 2027-02-08 | 2027-02-16 | 90FS+20d | 2027-02-17 | 2027-02-25 | 7d | 2027-02-17 | 2027-02-25 | 403d |  | Mariana V | 56h |  | Subsuelo 1 |  |  |
| 217 | 1.3.5.1.3 | Desagues pluviales (sin zinguería) con colocacion de cámaras de inspección PB contrapiso | 7d | 2026-07-28 | 2026-08-05 | 35 | 2026-07-28 | 2026-08-05 | 7d | 2026-07-28 | 2026-08-05 | 536d |  | Mariana V | 56h |  | Planta Baja |  |  |
| 218 | 1.3.5.1.4 | Desagues pluviales (sin zinguería) con colocacion de cámaras de inspección PB pared | 7d | 2027-02-18 | 2027-02-26 | 94FS+20d | 2027-02-18 | 2027-02-26 | 7d | 2027-02-18 | 2027-02-26 | 396d |  | Mariana V | 56h |  | Planta Baja |  |  |
| 219 | 1.3.5.1.5 | Desagues pluviales (sin zinguería) con colocacion de cámaras de inspección PA contrapiso | 7d | 2027-07-15 | 2027-07-23 | 98FS+20d | 2027-07-15 | 2027-07-23 | 7d | 2027-07-15 | 2027-07-23 | 243d | 0d | Mariana V | 56h |  | Primer Piso |  |  |
| 220 | 1.3.5.1.6 | Desagues pluviales (sin zinguería) con colocacion de cámaras de inspección PA pared | 7d | 2027-07-26 | 2027-08-03 | 219 | 2027-07-26 | 2027-08-03 | 7d | 2027-07-26 | 2027-08-03 | 243d | 0d | Mariana V | 56h |  | Primer Piso |  |  |
| 221 | 1.3.5.1.7 | Conexión exterior de pluviales | 12d | 2027-08-04 | 2027-08-19 | 220 | 2027-08-04 | 2027-08-19 | 12d | 2027-08-04 | 2027-08-19 | 243d | 0d | Mariana V | 96h |  |  |  |  |
| 222 | 1.3.5.2 | **Instalaciones Cloacales** | 298d | 2026-07-28 | 2027-10-04 |  | 2026-07-28 | 2027-10-04 | 298d | 2026-07-28 | 2027-10-04 | 245d |  |  | 680h |  |  |  |  |
| 223 | 1.3.5.2.1 | Instalación de cloacas para 2 baños completos en PSS, 1 cocina, 1 pileta de asador; 1 toilete y 1 baño completo con bañera en suite, 1 cocina con isla, pileta de cocina y 1 pileta en lavadero, lavarropas, lavavajilla, heladera y dispenser en PB; 2 baños c | 15d | 2026-09-03 | 2026-09-23 | 23 | 2026-09-03 | 2026-09-23 | 15d | 2026-09-03 | 2026-09-23 | 502d |  | Mariana V | 120h |  | Subsuelo 1 |  | 4.02 |
| 224 | 1.3.5.2.2 | Cloaca en suelo PB | 12d | 2026-07-28 | 2026-08-12 | 35 | 2026-07-28 | 2026-08-12 | 12d | 2026-07-28 | 2026-08-12 | 531d |  | Mariana V | 96h |  | Planta Baja |  |  |
| 225 | 1.3.5.2.3 | Cloaca en suelo PA | 12d | 2027-07-15 | 2027-07-30 | 98FS+20d | 2027-07-15 | 2027-07-30 | 12d | 2027-07-15 | 2027-07-30 | 290d | 0d | Mariana V | 96h |  | Primer Piso |  |  |
| 226 | 1.3.5.2.4 | Conexiones exteriores | 15d | 2027-08-05 | 2027-08-25 | 221FS-10d | 2027-08-05 | 2027-08-25 | 15d | 2027-08-05 | 2027-08-25 | 244d | 0d | Mariana V | 120h |  |  |  |  |
| 227 | 1.3.5.2.5 | Desagues de 3 AA Central en PSS, 6 AA Central en PB y 6 AA Central en PA | 3d | 2027-07-28 | 2027-07-30 | 225FF | 2027-07-28 | 2027-07-30 | 3d | 2027-07-28 | 2027-07-30 | 290d |  | Mariana V | 24h |  |  |  | 4.03 |
| 228 | 1.3.5.2.6 | Colocación de cámaras de inspección (según detalle técnico) | 3d | 2027-08-26 | 2027-08-30 | 226 | 2027-08-26 | 2027-08-30 | 3d | 2027-08-26 | 2027-08-30 | 245d | 0d | Mariana V | 24h |  |  |  | 4.04 |
| 229 | 1.3.5.2.7 | Instalación de 2 camaras sépticas (según plano técnico) | 5d | 2027-08-31 | 2027-09-06 | 228 | 2027-08-31 | 2027-09-06 | 5d | 2027-08-31 | 2027-09-06 | 245d | 0d | Mariana V | 40h |  |  |  | 4.05 |
| 230 | 1.3.5.2.8 | Armado de 2 Sangrías desde camara septica (coloc. de caños p/ filtrado) | 20d | 2027-09-07 | 2027-10-04 | 229 | 2027-09-07 | 2027-10-04 | 20d | 2027-09-07 | 2027-10-04 | 245d |  | Mariana V | 160h |  |  |  | 4.06 |

| ID | WBS | Task | Duration | Start | Finish | Predecessors | Baseline start | Baseline finish | Baseline duration | Baseline 1 start | Baseline 1 finish | Total slack | Free slack | Resources | Work | Texto2 | Texto4 |
| --- | --- | --- | --- | --- | --- | --- | --- | --- | --- | --- | --- | --- | --- | --- | --- | --- | --- |
| 231 | 1.3.5.3 | **Instalaciones de Agua** | 211d | 2026-11-24 | 2027-09-27 |  | 2026-11-26 | 2027-09-27 | 209d | 2026-11-26 | 2027-09-27 | 250d |  |  | 408h |  |  |
| 232 | 1.3.5.3.1 | Instalación de agua para 2 baños completos en PSS, 1 cocina, 1 pileta de asador; 1 toilete y 1 baño completo con bañera en suite, 1 cocina con isla, pileta de cocina y 1 pileta en lavadero, lavarropas, lavavajilla, heladera y dispenser en PB; 2 baños comp | 10d | 2026-11-24 | 2026-12-07 | 157 | 2026-12-02 | 2026-12-16 | 10d | 2026-12-02 | 2026-12-16 | 444d | 0d | Mariana V | 80h | Subsuelo 1 | 4.07 |
| 233 | 1.3.5.3.2 | Agua en PB | 10d | 2026-11-26 | 2026-12-09 | 158 | 2026-11-26 | 2026-12-09 | 10d | 2026-11-26 | 2026-12-09 | 436d | 0d | Mariana V | 80h | Planta Baja |  |
| 234 | 1.3.5.3.3 | Agua PA | 10d | 2027-04-12 | 2027-04-23 | 160 | 2027-04-12 | 2027-04-23 | 10d | 2027-04-12 | 2027-04-23 | 353d | 0d | Mariana V | 80h | Primer Piso |  |
| 235 | 1.3.5.3.4 | Agua Cubierta previo a pendiente de hormigon | 5d | 2027-06-16 | 2027-06-22 | 98 | 2027-06-16 | 2027-06-22 | 5d | 2027-06-16 | 2027-06-22 | 317d |  | Mariana V | 40h | Cubierta |  |
| 236 | 1.3.5.3.5 | Alimentación de agua para válvulas de inodoros desde tanques | 5d | 2027-04-26 | 2027-04-30 | 234 | 2027-04-26 | 2027-04-30 | 5d | 2027-04-26 | 2027-04-30 | 353d |  | Mariana V | 40h |  | 4.08 |
| 237 | 1.3.5.3.6 | Alimentación de agua a tanques y 6 canillas en patio | 10d | 2027-04-12 | 2027-04-23 | 95SS | 2027-04-12 | 2027-04-23 | 10d | 2027-04-12 | 2027-04-23 | 358d |  | Mariana V | 80h |  | 4.09 |
| 238 | 1.3.5.3.7 | Instalación de bomba hidroneumática bajo tanque | 1d | 2027-09-27 | 2027-09-27 | 369 | 2027-09-27 | 2027-09-27 | 1d | 2027-09-27 | 2027-09-27 | 250d |  | Mariana V | 8h |  | 4.10 |
| 239 | 1.3.5.4 | **Instalaciones de Gas** | 211d | 2026-12-09 | 2027-10-11 |  | 2026-12-10 | 2027-10-11 | 210d | 2026-12-10 | 2027-10-11 | 200d |  |  | 272h |  |  |
| 240 | 1.3.5.4.1 | Instalación de gas para anafe PSS, anafe y horno, termotanque y caldera en Pb* | 7d | 2026-12-09 | 2026-12-17 | 232 | 2026-12-17 | 2026-12-28 | 7d | 2026-12-17 | 2026-12-28 | 444d |  | Mariana V | 56h | Subsuelo 1 | 4.11 |
| 241 | 1.3.5.4.2 | Gas PB | 7d | 2026-12-10 | 2026-12-18 | 233 | 2026-12-10 | 2026-12-18 | 7d | 2026-12-10 | 2026-12-18 | 437d | 0d | Mariana V | 56h | Planta Baja |  |
| 242 | 1.3.5.4.3 | Gas exterior y casilla | 3d | 2026-12-21 | 2026-12-23 | 241 | 2026-12-21 | 2026-12-23 | 3d | 2026-12-21 | 2026-12-23 | 437d | 0d | Mariana V | 24h | Planta Baja |  |
| 243 | 1.3.5.4.4 | Ventilaciones para gas. Conductos y rejillas. | 3d | 2026-12-16 | 2026-12-18 | 241FF | 2026-12-16 | 2026-12-18 | 3d | 2026-12-16 | 2026-12-18 | 443d |  | Mariana V | 24h |  | 4.12 |
| 244 | 1.3.5.4.5 | Factibilidad de gas y plano aprobación de cañerías (se pagan en el momento) | 3d | 2026-12-24 | 2026-12-29 | 242 | 2026-12-24 | 2026-12-29 | 3d | 2026-12-24 | 2026-12-29 | 437d |  | Mariana V | 24h |  | 4.13 |
| 245 | 1.3.5.4.6 | Segunda inspección parcial de cañerías y ventilaciones. | 3d | 2027-09-30 | 2027-10-04 | 247 | 2027-09-30 | 2027-10-04 | 3d | 2027-09-30 | 2027-10-04 | 240d | 0d | Mariana V | 24h |  | 4.14 |
| 246 | 1.3.5.4.7 | Solicitud de servicio domiciliario (no incluye aranceles Ecogas). | 5d | 2027-10-05 | 2027-10-11 | 245 | 2027-10-05 | 2027-10-11 | 5d | 2027-10-05 | 2027-10-11 | 240d |  | Mariana V | 40h |  | 4.15 |
| 247 | 1.3.5.4.8 | Final de gas con artefactos colocados. | 3d | 2027-09-27 | 2027-09-29 | 369 | 2027-09-27 | 2027-09-29 | 3d | 2027-09-27 | 2027-09-29 | 0d |  | Mariana V | 24h |  | 4.16 |
| 248 | 1.3.5.5 | **Instalaciones de Aire Acondicionado** | 211d | 2026-11-24 | 2027-09-27 |  | 2026-12-02 | 2027-09-27 | 205d | 2026-12-02 | 2027-09-27 | 250d |  |  | 136h |  |  |
| 249 | 1.3.5.5.1 | 3 equipos de AA Split en PSS (Kit de preinstalacion) | 1d | 2026-11-24 | 2026-11-24 | 157 | 2026-12-02 | 2026-12-02 | 1d | 2026-12-02 | 2026-12-02 | 460d |  | Mariana V | 8h |  | 4.17 |
| 250 | 1.3.5.5.2 | 3 equipos de AA Split en PSS | 1d | 2027-09-27 | 2027-09-27 | 369 | 2027-09-27 | 2027-09-27 | 1d | 2027-09-27 | 2027-09-27 | 250d |  | Mariana V | 8h |  | 4.17* |
| 251 | 1.3.5.5.3 | Sistema por conducto (1 equipo) en PSS | 5d | 2027-08-12 | 2027-08-19 | 169 | 2027-08-12 | 2027-08-19 | 5d | 2027-08-12 | 2027-08-19 | 242d | 0d | Mariana V | 40h |  | 4.18 |
| 252 | 1.3.5.5.4 | Sistema por conducto (6 equipos) en PB | 5d | 2027-08-12 | 2027-08-19 | 169 | 2027-08-12 | 2027-08-19 | 5d | 2027-08-12 | 2027-08-19 | 277d |  | Mariana V | 40h |  | 4.19 |
| 253 | 1.3.5.5.5 | Sistema por conducto (6 equipos) en PA | 5d | 2027-08-12 | 2027-08-19 | 169 | 2027-08-12 | 2027-08-19 | 5d | 2027-08-12 | 2027-08-19 | 277d |  | Mariana V | 40h |  | 4.20 |
| 254 | 1.3.5.6 | **Instalación de Calefacción*** | 21d | 2027-06-16 | 2027-07-15 |  | 2027-06-16 | 2027-07-15 | 21d | 2027-06-16 | 2027-07-15 | 243d |  |  | 168h |  |  |
| 255 | 1.3.5.6.1 | Losa Radiante - 2 Colectores con 1 zona - PSS | 2d | 2027-06-16 | 2027-06-17 | 98 | 2027-06-16 | 2027-06-17 | 2d | 2027-06-16 | 2027-06-17 | 243d | 0d | Mariana V | 16h |  | 4.21 |
| 256 | 1.3.5.6.2 | Losa Radiante - 4 Colectores con 2 zona - PB | 2d | 2027-06-25 | 2027-06-28 | 258 | 2027-06-25 | 2027-06-28 | 2d | 2027-06-25 | 2027-06-28 | 281d | 0d | Mariana V | 16h |  | 4.22 |
| 257 | 1.3.5.6.3 | Losa Radiante - 2 Colectores con 1 zona - PA | 2d | 2027-07-06 | 2027-07-07 | 259 | 2027-07-06 | 2027-07-07 | 2d | 2027-07-06 | 2027-07-07 | 281d | 0d | Mariana V | 16h |  | 4.23 |
| 258 | 1.3.5.6.4 | Piso Radiante - PSS | 5d | 2027-06-18 | 2027-06-24 | 255 | 2027-06-18 | 2027-06-24 | 5d | 2027-06-18 | 2027-06-24 | 243d | 0d | Mariana V | 40h |  | 4.24 |
| 259 | 1.3.5.6.5 | Piso Radiante - PB | 5d | 2027-06-29 | 2027-07-05 | 256 | 2027-06-29 | 2027-07-05 | 5d | 2027-06-29 | 2027-07-05 | 281d | 0d | Mariana V | 40h |  | 4.25 |
| 260 | 1.3.5.6.6 | Piso Radiante - PA | 5d | 2027-07-08 | 2027-07-15 | 257 | 2027-07-08 | 2027-07-15 | 5d | 2027-07-08 | 2027-07-15 | 281d | 0d | Mariana V | 40h |  | 4.26 |

| ID | WBS | Task | Duration | Start | Finish | Predecessors | Baseline start | Baseline finish | Baseline duration | Baseline 1 start | Baseline 1 finish | Total slack | Free slack | Resources | Work | Texto4 | Texto2 |
| --- | --- | --- | --- | --- | --- | --- | --- | --- | --- | --- | --- | --- | --- | --- | --- | --- | --- |
| 261 | 1.3.6 | **INSTALACIONES ELECTRICAS Y SEÑALES DEBILES** | 323d? | 2026-06-24 | 2027-10-06 |  | 2026-06-22 | 2027-10-06 | 325d? | 2026-06-22 | 2027-10-06 | 243d |  |  | 1216h | 5 |  |
| 262 | 1.3.6.1 | **Canalización, cableado y armado (electricidad)** | 321d? | 2026-06-24 | 2027-10-04 |  | 2026-06-22 | 2027-10-04 | 323d? | 2026-06-22 | 2027-10-04 | 245d |  |  | 856h |  |  |
| 263 | 1.3.6.1.1 | Cableado SS | 10d | 2027-08-13 | 2027-08-26 | 363 | 2027-08-13 | 2027-08-26 | 10d | 2027-08-13 | 2027-08-26 | 243d | 0d | Mariana V | 80h |  | Subsuelo 1 |
| 264 | 1.3.6.1.2 | Bocas p/iluminacion techo | 2d | 2027-01-06 | 2027-01-07 | 90FS-3d | 2027-01-14 | 2027-01-15 | 2d | 2027-01-14 | 2027-01-15 | 431d |  | Mariana V | 16h | 5.01 | Subsuelo 1 |
| 265 | 1.3.6.1.3 | Bocas p/iluminacion pared | 10d | 2026-11-24 | 2026-12-07 | 157 | 2026-12-02 | 2026-12-16 | 10d | 2026-12-02 | 2026-12-16 | 451d |  | Mariana V | 80h | 5.02 | Subsuelo 1 |
| 266 | 1.3.6.1.4 | Tablero (por T.M y disyuntores) | 3d | 2027-08-27 | 2027-08-31 | 263 | 2027-08-27 | 2027-08-31 | 3d | 2027-08-27 | 2027-08-31 | 269d |  | Mariana V | 24h | 5.03 | Subsuelo 1 |
| 267 | 1.3.6.1.5 | Borneta puesta a tierra por tablero | 1d? | 2026-06-24 | 2026-06-24 |  | 2026-06-22 | 2026-06-22 | 1d? | 2026-06-22 | 2026-06-22 | 565d |  | Mariana V | 8h | 5.04 | Subsuelo 1 |
| 268 | 1.3.6.1.6 | Instalación de Jabalina | 1d? | 2026-06-24 | 2026-06-24 |  | 2026-06-22 | 2026-06-22 | 1d? | 2026-06-22 | 2026-06-22 | 565d |  | Mariana V | 8h | 5.05 | Subsuelo 1 |
| 269 | 1.3.6.1.7 | Toma individul A.A | 1d? | 2026-06-24 | 2026-06-24 |  | 2026-06-22 | 2026-06-22 | 1d? | 2026-06-22 | 2026-06-22 | 565d |  | Mariana V | 8h | 5.06 | Subsuelo 1 |
| 270 | 1.3.6.1.8 | Termostatos | 1d? | 2026-06-24 | 2026-06-24 |  | 2026-06-22 | 2026-06-22 | 1d? | 2026-06-22 | 2026-06-22 | 565d |  | Mariana V | 8h | 5.07 | Subsuelo 1 |
| 271 | 1.3.6.1.9 | Tiras Led aleros/nichos/espejos/placares/baso alacena mesada, etc | 1d? | 2026-06-24 | 2026-06-24 |  | 2026-06-22 | 2026-06-22 | 1d? | 2026-06-22 | 2026-06-22 | 565d |  | Mariana V | 8h | 5.08 | Subsuelo 1 |
| 272 | 1.3.6.1.10 | Instalación artefactos comunes* | 3d | 2027-09-27 | 2027-09-29 | 369 | 2027-09-27 | 2027-09-29 | 3d | 2027-09-27 | 2027-09-29 | 247d | 0d | Mariana V | 24h | 5.09 | Subsuelo 1 |
| 273 | 1.3.6.1.11 | Bocas p/iluminacion techo | 3d | 2027-01-14 | 2027-01-18 | 91FS-3d | 2027-01-14 | 2027-01-18 | 3d | 2027-01-14 | 2027-01-18 | 424d |  | Mariana V | 24h | 5.10 | Planta Baja |
| 274 | 1.3.6.1.12 | Bocas p/iluminacion pared | 12d | 2026-11-26 | 2026-12-14 | 158 | 2026-11-26 | 2026-12-14 | 12d | 2026-11-26 | 2026-12-14 | 447d |  | Mariana V | 96h | 5.11 | Planta Baja |
| 275 | 1.3.6.1.13 | Cableado PB | 12d | 2027-08-27 | 2027-09-13 | 263 | 2027-08-27 | 2027-09-13 | 12d | 2027-08-27 | 2027-09-13 | 243d | 0d | Mariana V | 96h |  | Planta Baja |
| 276 | 1.3.6.1.14 | Bocas p/iluminacion piso | 1d? | 2026-06-24 | 2026-06-24 |  | 2026-06-22 | 2026-06-22 | 1d? | 2026-06-22 | 2026-06-22 | 565d |  | Mariana V | 8h | 5.12 | Planta Baja |
| 277 | 1.3.6.1.15 | Tablero (por T.M y disyuntores) | 3d | 2027-09-14 | 2027-09-16 | 275 | 2027-09-14 | 2027-09-16 | 3d | 2027-09-14 | 2027-09-16 | 254d | 0d | Mariana V | 24h | 5.13 | Planta Baja |
| 278 | 1.3.6.1.16 | Instalación de Jabalina | 1d? | 2026-06-24 | 2026-06-24 |  | 2026-06-22 | 2026-06-22 | 1d? | 2026-06-22 | 2026-06-22 | 565d |  | Mariana V | 8h | 5.14 | Planta Baja |
| 279 | 1.3.6.1.17 | Toma individul A.A | 1d? | 2026-06-24 | 2026-06-24 |  | 2026-06-22 | 2026-06-22 | 1d? | 2026-06-22 | 2026-06-22 | 565d |  | Mariana V | 8h | 5.15 | Planta Baja |
| 280 | 1.3.6.1.18 | Termostatos | 1d? | 2026-06-24 | 2026-06-24 |  | 2026-06-22 | 2026-06-22 | 1d? | 2026-06-22 | 2026-06-22 | 565d |  | Mariana V | 8h | 5.16 | Planta Baja |
| 281 | 1.3.6.1.19 | Tiras Led aleros/nichos/espejos/placares/baso alacena mesada, etc | 1d? | 2026-06-24 | 2026-06-24 |  | 2026-06-22 | 2026-06-22 | 1d? | 2026-06-22 | 2026-06-22 | 565d |  | Mariana V | 8h | 5.17 | Planta Baja |
| 282 | 1.3.6.1.20 | Instalación artefactos comunes* | 1d? | 2027-09-30 | 2027-09-30 | 272 | 2027-09-30 | 2027-09-30 | 1d? | 2027-09-30 | 2027-09-30 | 247d |  | Mariana V | 8h | 5.18 | Planta Baja |
| 283 | 1.3.6.1.21 | Instalación artefactos rieles grandes | 1d? | 2026-06-24 | 2026-06-24 |  | 2026-06-22 | 2026-06-22 | 1d? | 2026-06-22 | 2026-06-22 | 565d |  | Mariana V | 8h | 5.19 | Planta Baja |
| 284 | 1.3.6.1.22 | Conexión de acometida a Tablero | 3d | 2027-09-17 | 2027-09-21 | 277 | 2027-09-17 | 2027-09-21 | 3d | 2027-09-17 | 2027-09-21 | 254d |  | Mariana V | 24h | 5.20 | Planta Baja |
| 285 | 1.3.6.1.23 | Bocas p/iluminacion techo | 3d | 2027-06-10 | 2027-06-14 | 95FS-3d | 2027-06-10 | 2027-06-14 | 3d | 2027-06-10 | 2027-06-14 | 323d |  | Mariana V | 24h | 5.21 | Primer Piso |
| 286 | 1.3.6.1.24 | Bocas p/iluminacion pared | 12d | 2027-04-12 | 2027-04-27 | 160 | 2027-04-12 | 2027-04-27 | 12d | 2027-04-12 | 2027-04-27 | 356d |  | Mariana V | 96h | 5.22 | Primer Piso |
| 287 | 1.3.6.1.25 | Cableado PA | 12d | 2027-09-14 | 2027-09-29 | 275 | 2027-09-14 | 2027-09-29 | 12d | 2027-09-14 | 2027-09-29 | 243d | 0d | Mariana V | 96h |  | Primer Piso |
| 288 | 1.3.6.1.26 | Tablero (por T.M y disyuntores) | 3d | 2027-09-30 | 2027-10-04 | 287 | 2027-09-30 | 2027-10-04 | 3d | 2027-09-30 | 2027-10-04 | 245d |  | Mariana V | 24h | 5.23 | Primer Piso |
| 289 | 1.3.6.1.27 | Toma individul A.A | 1d? | 2026-06-24 | 2026-06-24 |  | 2026-06-22 | 2026-06-22 | 1d? | 2026-06-22 | 2026-06-22 | 565d |  | Mariana V | 8h | 5.24 | Primer Piso |
| 290 | 1.3.6.1.28 | Termostatos | 1d? | 2026-06-24 | 2026-06-24 |  | 2026-06-22 | 2026-06-22 | 1d? | 2026-06-22 | 2026-06-22 | 565d |  | Mariana V | 8h | 5.25 | Primer Piso |
| 291 | 1.3.6.1.29 | Tiras Led aleros/nichos/espejos/placares/baso alacena mesada, etc* | 1d? | 2026-06-24 | 2026-06-24 |  | 2026-06-22 | 2026-06-22 | 1d? | 2026-06-22 | 2026-06-22 | 565d |  | Mariana V | 8h | 5.26 | Primer Piso |
| 292 | 1.3.6.1.30 | Instalación artefactos comunes* | 1d? | 2027-09-30 | 2027-09-30 | 287 | 2027-09-30 | 2027-09-30 | 1d? | 2027-09-30 | 2027-09-30 | 247d |  | Mariana V | 8h | 5.27 | Primer Piso |

| ID | WBS | Task | Duration | Start | Finish | Predecessors | Baseline start | Baseline finish | Baseline duration | Baseline 1 start | Baseline 1 finish | Total slack | Free slack | Resources | Work | Texto2 | Texto4 |
| --- | --- | --- | --- | --- | --- | --- | --- | --- | --- | --- | --- | --- | --- | --- | --- | --- | --- |
| 293 | 1.3.6.2 | **Instalación y configuración de Alarma (Señales Débiles)*** | 5d | 2027-09-30 | 2027-10-06 |  | 2027-09-30 | 2027-10-06 | 5d | 2027-09-30 | 2027-10-06 | 243d |  |  | 200h |  |  |
| 294 | 1.3.6.2.1 | Instalación de sensor inalámbrico - PSS | 5d | 2027-09-30 | 2027-10-06 | 287 | 2027-09-30 | 2027-10-06 | 5d | 2027-09-30 | 2027-10-06 | 243d |  | Mariana V | 40h | Subsuelo 1 | 5.28 |
| 295 | 1.3.6.2.2 | Instalación de sensor inalámbrico - PB | 5d | 2027-09-30 | 2027-10-06 | 287 | 2027-09-30 | 2027-10-06 | 5d | 2027-09-30 | 2027-10-06 | 243d |  | Mariana V | 40h | Planta Baja | 5.29 |
| 296 | 1.3.6.2.3 | Central de Alarma | 5d | 2027-09-30 | 2027-10-06 | 287 | 2027-09-30 | 2027-10-06 | 5d | 2027-09-30 | 2027-10-06 | 243d |  | Mariana V | 40h | Planta Baja | 5.30 |
| 297 | 1.3.6.2.4 | Instalación de sensor inalámbrico - PA | 5d | 2027-09-30 | 2027-10-06 | 287 | 2027-09-30 | 2027-10-06 | 5d | 2027-09-30 | 2027-10-06 | 243d |  | Mariana V | 40h | Primer Piso | 5.31 |
| 298 | 1.3.6.2.5 | Sirena | 5d | 2027-09-30 | 2027-10-06 | 287 | 2027-09-30 | 2027-10-06 | 5d | 2027-09-30 | 2027-10-06 | 243d |  | Mariana V | 40h | Primer Piso | 5.32 |
| 299 | 1.3.6.3 | **Instalación y configuración de Red de Datos (Señales Débiles)** | 5d | 2027-09-30 | 2027-10-06 |  | 2027-09-30 | 2027-10-06 | 5d | 2027-09-30 | 2027-10-06 | 243d |  |  | 160h |  |  |
| 300 | 1.3.6.3.1 | Instalación de Acces Point (repetidor) - PSS | 5d | 2027-09-30 | 2027-10-06 | 287 | 2027-09-30 | 2027-10-06 | 5d | 2027-09-30 | 2027-10-06 | 243d |  | Mariana V | 40h | Subsuelo 1 | 5.33 |
| 301 | 1.3.6.3.2 | Instalación de Acces Point (repetidor) - PB | 5d | 2027-09-30 | 2027-10-06 | 287 | 2027-09-30 | 2027-10-06 | 5d | 2027-09-30 | 2027-10-06 | 243d |  | Mariana V | 40h | Planta Baja | 5.34 |
| 302 | 1.3.6.3.3 | Instalación de Switch POE (central derivador de datos)* | 5d | 2027-09-30 | 2027-10-06 | 287 | 2027-09-30 | 2027-10-06 | 5d | 2027-09-30 | 2027-10-06 | 243d |  | Mariana V | 40h | Planta Baja | 5.35 |
| 303 | 1.3.6.3.4 | Instalación de Acces Point (repetidor) - PSS | 5d | 2027-09-30 | 2027-10-06 | 287 | 2027-09-30 | 2027-10-06 | 5d | 2027-09-30 | 2027-10-06 | 243d |  | Mariana V | 40h | Primer Piso | 5.36 |
| 304 | 1.3.7 | **PISOS Y REVESTIMIENTOS** | 339d? | 2026-06-24 | 2027-10-29 |  | 2026-06-22 | 2027-10-29 | 341d? | 2026-06-22 | 2027-10-29 | 198d |  |  | 4848h |  | 6 |
| 305 | 1.3.7.1 | **Pisos Interiores** | 305d | 2026-06-24 | 2027-09-10 |  | 2026-06-22 | 2027-09-10 | 307d | 2026-06-22 | 2027-09-10 | 261d |  |  | 616h |  |  |
| 306 | 1.3.7.1.1 | S11 - Porcelanato Gris - (Cochera/ingreso/cine/gym/dºservicio/quincho) | 20d | 2027-07-14 | 2027-08-10 | 133 | 2027-07-14 | 2027-08-10 | 20d | 2027-07-14 | 2027-08-10 | 243d | 0d | Mariana V | 160h | Subsuelo 1 | 6.01 |
| 307 | 1.3.7.1.2 | S1 - Porcelanato Gris (interior y exterior de casa) | 30d | 2027-07-28 | 2027-09-08 | 306FS-10d | 2027-07-28 | 2027-09-08 | 30d | 2027-07-28 | 2027-09-08 | 243d | 0d | Mariana V | 240h | Planta Baja | 6.02 |
| 308 | 1.3.7.1.3 | S4 - Entablonado PVC Simil Madera (estar exterior) | 10d | 2026-06-24 | 2026-07-07 |  | 2026-06-22 | 2026-07-03 | 10d | 2026-06-22 | 2026-07-03 | 556d |  | Mariana V | 80h | Planta Baja | 6.03 |
| 309 | 1.3.7.1.4 | S1 - Porcelanato Gris (interior de casa) | 5d | 2027-08-19 | 2027-08-25 | 307FS-15d | 2027-08-19 | 2027-08-25 | 5d | 2027-08-19 | 2027-08-25 | 251d | 0d | Mariana V | 40h | Primer Piso | 6.04 |
| 310 | 1.3.7.1.5 | S3 - Porcelanato Simil Madera (interior de casa) | 12d | 2027-08-26 | 2027-09-10 | 309 | 2027-08-26 | 2027-09-10 | 12d | 2027-08-26 | 2027-09-10 | 261d |  | Mariana V | 96h | Primer Piso | 6.05 |
| 311 | 1.3.7.2 | **Pisos Exteriores** | 12d | 2026-06-24 | 2026-07-10 |  | 2026-06-22 | 2026-07-07 | 12d | 2026-06-22 | 2026-07-07 | 554d |  |  | 400h |  |  |
| 312 | 1.3.7.2.1 | S1 - Porcelanato Gris (galeria quincho/fogonero) | 12d | 2026-06-24 | 2026-07-10 |  | 2026-06-22 | 2026-07-07 | 12d | 2026-06-22 | 2026-07-07 | 554d |  | Mariana V | 96h | Subsuelo 1 | 6.06 |
| 313 | 1.3.7.2.2 | S4 - Entablonado PVC Simil Madera (deck pileta) | 7d | 2026-06-24 | 2026-07-02 |  | 2026-06-22 | 2026-06-30 | 7d | 2026-06-22 | 2026-06-30 | 559d |  | Mariana V | 56h | Subsuelo 1 | 6.07 |
| 314 | 1.3.7.2.3 | S8 - Adoquines (ingreso cochera) | 7d | 2026-06-24 | 2026-07-02 |  | 2026-06-22 | 2026-06-30 | 7d | 2026-06-22 | 2026-06-30 | 559d |  | Mariana V | 56h | Subsuelo 1 | 6.08 |
| 315 | 1.3.7.2.4 | S12 - Piedra Bola (patio interior y fogon) | 5d | 2026-06-24 | 2026-06-30 |  | 2026-06-22 | 2026-06-26 | 5d | 2026-06-22 | 2026-06-26 | 561d |  | Mariana V | 40h | Subsuelo 1 | 6.09 |
| 316 | 1.3.7.2.5 | S2 - Hormigon alisado (Ingreso peatonal/ingreso secundario cochera) | 7d | 2026-06-24 | 2026-07-02 |  | 2026-06-22 | 2026-06-30 | 7d | 2026-06-22 | 2026-06-30 | 559d |  | Mariana V | 56h | Planta Baja | 6.10 |
| 317 | 1.3.7.2.6 | S4 - Entablonado PVC Simil Madera (terraza balcon) | 7d | 2026-06-24 | 2026-07-02 |  | 2026-06-22 | 2026-06-30 | 7d | 2026-06-22 | 2026-06-30 | 559d |  | Mariana V | 56h | Primer Piso | 6.11 |
| 318 | 1.3.7.2.7 | S7 - Granza Exterior (terraza balcon) | 5d | 2026-06-24 | 2026-06-30 |  | 2026-06-22 | 2026-06-26 | 5d | 2026-06-22 | 2026-06-26 | 561d |  | Mariana V | 40h | Primer Piso | 6.12 |

| ID | WBS | Task | Duration | Start | Finish | Predecessors | Baseline start | Baseline finish | Baseline duration | Baseline 1 start | Baseline 1 finish | Total slack | Free slack | Resources | Work | Texto2 | Texto4 |
| --- | --- | --- | --- | --- | --- | --- | --- | --- | --- | --- | --- | --- | --- | --- | --- | --- | --- |
| 319 | 1.3.7.3 | **Zócalos** | 10d | 2027-08-11 | 2027-08-25 |  | 2027-08-11 | 2027-08-25 | 10d | 2027-08-11 | 2027-08-25 | 273d |  |  | 216h |  |  |
| 320 | 1.3.7.3.1 | Zócalo en Interior PSS - Porcelanato | 7d | 2027-08-16 | 2027-08-25 | 363FF+8d | 2027-08-16 | 2027-08-25 | 7d | 2027-08-16 | 2027-08-25 | 273d | 0d | Mariana V | 56h | Subsuelo 1 | 6.13 |
| 321 | 1.3.7.3.2 | Zócalo en (Interior PB/interior quincho/exterior galeria/veredas) | 10d | 2027-08-11 | 2027-08-25 | 320FF | 2027-08-11 | 2027-08-25 | 10d | 2027-08-11 | 2027-08-25 | 273d |  | Mariana V | 80h | Planta Baja | 6.14 |
| 322 | 1.3.7.3.3 | Zócalo en (Interior PA) - Porcelanato Simil Madera | 10d | 2027-08-11 | 2027-08-25 | 320FF | 2027-08-11 | 2027-08-25 | 10d | 2027-08-11 | 2027-08-25 | 273d |  | Mariana V | 80h | Primer Piso | 6.15 |
| 323 | 1.3.7.4 | **Banquina** | 12d | 2027-07-06 | 2027-07-22 |  | 2027-07-06 | 2027-07-22 | 12d | 2027-07-06 | 2027-07-22 | 296d |  |  | 120h |  |  |
| 324 | 1.3.7.4.1 | Bajo cocina e isla PSS - H: 0,12cm (6,20 m2) | 5d | 2027-07-06 | 2027-07-13 | 133FF | 2027-07-06 | 2027-07-13 | 5d | 2027-07-06 | 2027-07-13 | 303d |  | Mariana V | 40h | Subsuelo 1 | 6.16 |
| 325 | 1.3.7.4.2 | Bajo cocina e isla PB - H: 0,12cm (12,30 m2) | 5d | 2027-07-16 | 2027-07-22 | 137FF | 2027-07-16 | 2027-07-22 | 5d | 2027-07-16 | 2027-07-22 | 296d |  | Mariana V | 40h | Planta Baja | 6.17 |
| 326 | 1.3.7.4.3 | Bajo lavadero PB - H: 0,12cm (3,10 m2) | 5d | 2027-07-16 | 2027-07-22 | 137FF | 2027-07-16 | 2027-07-22 | 5d | 2027-07-16 | 2027-07-22 | 296d |  | Mariana V | 40h | Planta Baja | 6.18 |
| 327 | 1.3.7.5 | **Revestimientos Interiores** | 56d | 2027-08-11 | 2027-10-29 |  | 2027-08-11 | 2027-10-29 | 56d | 2027-08-11 | 2027-10-29 | 227d |  |  | 800h |  |  |
| 328 | 1.3.7.5.1 | Porcelanato - Baños y cocina quincho (definir medidas y tipo) | 10d | 2027-08-11 | 2027-08-25 | 306 | 2027-08-11 | 2027-08-25 | 10d | 2027-08-11 | 2027-08-25 | 270d | 0d | Mariana V | 80h | Subsuelo 1 | 6.19 |
| 329 | 1.3.7.5.2 | Revestimiento Simil Madera | 5d | 2027-08-13 | 2027-08-20 | 363 | 2027-08-13 | 2027-08-20 | 5d | 2027-08-13 | 2027-08-20 | 246d | 0d | Mariana V | 40h | Subsuelo 1 | 6.20 |
| 330 | 1.3.7.5.3 | Porcelanato - Cocina, baños y lavadero (definir medidas y tipo) | 12d | 2027-09-09 | 2027-09-24 | 307 | 2027-09-09 | 2027-09-24 | 12d | 2027-09-09 | 2027-09-24 | 244d | 0d | Mariana V | 96h | Planta Baja | 6.21 |
| 331 | 1.3.7.5.4 | Revestimiento Microcemento | 7d | 2027-09-27 | 2027-10-05 | 330 | 2027-09-27 | 2027-10-05 | 7d | 2027-09-27 | 2027-10-05 | 244d |  | Mariana V | 56h | Planta Baja | 6.22 |
| 332 | 1.3.7.5.5 | Revestimiento Simil Madera | 15d | 2027-08-23 | 2027-09-10 | 329 | 2027-08-23 | 2027-09-10 | 15d | 2027-08-23 | 2027-09-10 | 246d | 0d | Mariana V | 120h | Planta Baja | 6.23 |
| 333 | 1.3.7.5.6 | Revestimiento Simil Roca Viva | 12d | 2027-09-27 | 2027-10-12 | 369 | 2027-09-27 | 2027-10-12 | 12d | 2027-09-27 | 2027-10-12 | 227d | 0d | Mariana V | 96h | Planta Baja | 6.24 |
| 334 | 1.3.7.5.7 | Porcelanato - Baños (definir medidas y tipo) | 15d | 2027-08-26 | 2027-09-15 | 309 | 2027-08-26 | 2027-09-15 | 15d | 2027-08-26 | 2027-09-15 | 251d | 0d | Mariana V | 120h | Primer Piso | 6.25 |
| 335 | 1.3.7.5.8 | Revestimiento Microcemento | 7d | 2027-09-16 | 2027-09-24 | 334 | 2027-09-16 | 2027-09-24 | 7d | 2027-09-16 | 2027-09-24 | 251d |  | Mariana V | 56h | Primer Piso | 6.26 |
| 336 | 1.3.7.5.9 | Revestimiento Simil Madera | 5d | 2027-09-13 | 2027-09-17 | 332 | 2027-09-13 | 2027-09-17 | 5d | 2027-09-13 | 2027-09-17 | 246d | 0d | Mariana V | 40h | Primer Piso | 6.27 |
| 337 | 1.3.7.5.10 | Revestimiento Simil Roca Viva | 12d | 2027-10-14 | 2027-10-29 | 333 | 2027-10-14 | 2027-10-29 | 12d | 2027-10-14 | 2027-10-29 | 227d |  | Mariana V | 96h | Primer Piso | 6.28 |
| 338 | 1.3.7.6 | **Revestimientos Exteriores** | 248d | 2026-10-06 | 2027-10-01 |  | 2026-10-06 | 2027-10-01 | 248d | 2026-10-06 | 2027-10-01 | 246d |  |  | 1560h |  |  |
| 339 | 1.3.7.6.1 | Revestimiento de Piedra - (definir tipo) | 35d | 2026-11-05 | 2026-12-28 | 153 | 2026-11-13 | 2027-01-06 | 35d | 2026-11-13 | 2027-01-06 | 418d | 0d | Mariana V | 280h | Subsuelo 1 | 6.29 |
| 340 | 1.3.7.6.2 | Revestimiento de Ladrillos Refractarios - (Asador) | 3d | 2027-08-26 | 2027-08-30 | 328 | 2027-08-26 | 2027-08-30 | 3d | 2027-08-26 | 2027-08-30 | 270d |  | Mariana V | 24h | Subsuelo 1 | 6.30 |
| 341 | 1.3.7.6.3 | Revestimiento de Piedra en muro de contención - (definir tipo) | 20d | 2026-12-29 | 2027-01-26 | 339 | 2027-01-07 | 2027-02-03 | 20d | 2027-01-07 | 2027-02-03 | 418d |  | Mariana V | 160h | Subsuelo 1 | 6.31 |
| 342 | 1.3.7.6.4 | Revestimiento plástico - (definir color) | 3d | 2027-09-08 | 2027-09-10 | 164 | 2027-09-08 | 2027-09-10 | 3d | 2027-09-08 | 2027-09-10 | 247d | 0d | Mariana V | 24h | Planta Baja | 6.32 |
| 343 | 1.3.7.6.5 | Revestimiento de Piedra - (definir tipo) | 15d | 2026-11-04 | 2026-11-25 | 154 | 2026-11-04 | 2026-11-25 | 15d | 2026-11-04 | 2026-11-25 | 459d |  | Mariana V | 120h | Planta Baja | 6.33 |
| 344 | 1.3.7.6.6 | Revestimiento de Hormigón Visto | 30d | 2026-10-06 | 2026-11-17 | 104 | 2026-10-06 | 2026-11-17 | 30d | 2026-10-06 | 2026-11-17 | 464d |  | Mariana V | 240h | Planta Baja | 6.34 |
| 345 | 1.3.7.6.7 | Revestimiento plástico en tanque de agua - (definir color) | 7d | 2027-09-13 | 2027-09-21 | 342 | 2027-09-13 | 2027-09-21 | 7d | 2027-09-13 | 2027-09-21 | 247d | 0d | Mariana V | 56h | Primer Piso | 6.35 |
| 346 | 1.3.7.6.8 | Revestimiento plástico en canteros - (definir color) | 7d | 2027-09-22 | 2027-09-30 | 345 | 2027-09-22 | 2027-09-30 | 7d | 2027-09-22 | 2027-09-30 | 247d |  | Mariana V | 56h | Primer Piso | 6.36 |
| 347 | 1.3.7.6.9 | Revestimiento de Piedra - (definir tipo) | 15d | 2027-03-18 | 2027-04-09 | 155 | 2027-03-18 | 2027-04-09 | 15d | 2027-03-18 | 2027-04-09 | 368d |  | Mariana V | 120h | Primer Piso | 6.37 |
| 348 | 1.3.7.6.10 | Revestimiento de Hormigón Visto | 50d | 2027-02-25 | 2027-05-07 | 107 | 2027-02-25 | 2027-05-07 | 50d | 2027-02-25 | 2027-05-07 | 348d |  | Mariana V | 400h | Primer Piso | 6.38 |
| 349 | 1.3.7.6.11 | Revestimiento de Alistonado WPC* | 10d | 2027-09-20 | 2027-10-01 | 336 | 2027-09-20 | 2027-10-01 | 10d | 2027-09-20 | 2027-10-01 | 246d |  | Mariana V | 80h | Primer Piso | 6.39 |

| ID | WBS | Task | Type | Duration | Start | Finish | Predecessors | Baseline start | Baseline finish | Baseline duration | Baseline 1 start | Baseline 1 finish | Total slack | Resources | Work | Texto4 | Texto2 | Texto1 | Texto3 |
| --- | --- | --- | --- | --- | --- | --- | --- | --- | --- | --- | --- | --- | --- | --- | --- | --- | --- | --- | --- |
| 350 | 1.3.7.7 | **PINTURA** |  | 285d | 2026-08-19 | 2027-10-06 |  | 2026-08-19 | 2027-10-06 | 285d | 2026-08-19 | 2027-10-06 | 243d |  | 616h | 7 |  |  |  |
| 351 | 1.3.7.7.1 | **Pintura Interior en pared y cielorraso** |  | 40d | 2027-08-11 | 2027-10-06 |  | 2027-08-11 | 2027-10-06 | 40d | 2027-08-11 | 2027-10-06 | 243d |  | 440h |  |  |  |  |
| 352 | 1.3.7.7.1.1 | Latex Interior PSS |  | 15d | 2027-08-11 | 2027-09-01 | 306 | 2027-08-11 | 2027-09-01 | 15d | 2027-08-11 | 2027-09-01 | 268d | Mariana V | 120h | 7.01 | Subsuelo 1 |  |  |
| 353 | 1.3.7.7.1.2 | Latex Interior PB |  | 20d | 2027-09-09 | 2027-10-06 | 307 | 2027-09-09 | 2027-10-06 | 20d | 2027-09-09 | 2027-10-06 | 243d | Mariana V | 160h | 7.02 | Planta Baja |  |  |
| 354 | 1.3.7.7.1.3 | Latex Interior PA |  | 20d | 2027-08-26 | 2027-09-22 | 309 | 2027-08-26 | 2027-09-22 | 20d | 2027-08-26 | 2027-09-22 | 253d | Mariana V | 160h | 7.03 | Primer Piso |  |  |
| 355 | 1.3.7.7.2 | **Pintura Exterior** |  | 98d | 2026-08-19 | 2027-01-08 |  | 2026-08-19 | 2027-01-18 | 104d | 2026-08-19 | 2027-01-18 | 430d |  | 176h |  |  |  |  |
| 356 | 1.3.7.7.2.1 | Esmalte Sintetico en columnas y vigas metalicas* |  | 10d | 2026-12-07 | 2026-12-22 | 203FF | 2026-12-07 | 2026-12-22 | 10d | 2026-12-07 | 2026-12-22 | 441.5d | Mariana V | 80h | 7.04 |  |  |  |
| 357 | 1.3.7.7.2.2 | Esmalte Sintetico en pérgola* |  | 10d | 2026-08-19 | 2026-09-01 | 207FF | 2026-08-19 | 2026-09-01 | 10d | 2026-08-19 | 2026-09-01 | 518d | Mariana V | 80h | 7.05 |  |  |  |
| 358 | 1.3.7.7.2.3 | Esmalte Sintetico en conductos metalicos* |  | 2d | 2027-01-07 | 2027-01-08 | 212 | 2027-01-15 | 2027-01-18 | 2d | 2027-01-15 | 2027-01-18 | 430d | Mariana V | 16h | 7.06 |  |  |  |
| 359 | 1.3.7.8 | **CARPINTERIAS** |  | 135d | 2027-04-12 | 2027-10-21 |  | 2027-04-12 | 2027-10-21 | 135d | 2027-04-12 | 2027-10-21 | 0d |  | 360h | 8 |  |  |  |
| 360 | 1.3.7.8.1 | Colocación de premarcos |  | 10d | 2027-04-12 | 2027-04-23 | 160 | 2027-04-12 | 2027-04-23 | 10d | 2027-04-12 | 2027-04-23 | 0d | Mariana V | 80h | 8.01 |  |  |  |
| 361 | 1.3.7.8.2 | Puertas de madera* |  | 15d | 2027-09-30 | 2027-10-21 | 160FS+120d | 2027-09-30 | 2027-10-21 | 15d | 2027-09-30 | 2027-10-21 | 233d | Mariana V | 120h | 8.02 |  |  |  |
| 362 | 1.3.7.8.3 | Puertas de aluminio* |  | 5d | 2027-08-13 | 2027-08-20 | 363 | 2027-08-13 | 2027-08-20 | 5d | 2027-08-13 | 2027-08-20 | 276d | Mariana V | 40h | 8.03 |  |  |  |
| 363 | 1.3.7.8.4 | Aberturas de aluminio* |  | 15d | 2027-07-23 | 2027-08-12 | 360FS+90ed | 2027-07-23 | 2027-08-12 | 15d | 2027-07-23 | 2027-08-12 | 0d | Mariana V | 120h | 8.04 |  |  |  |
| 364 | 1.3.7.9 | **LIMPIEZA DE OBRA** |  | 322d? | 2026-06-24 | 2027-10-05 |  | 2026-06-22 | 2027-10-05 | 324d? | 2026-06-22 | 2027-10-05 | 244d |  | 40h | 9 |  |  |  |
| 365 | 1.3.7.9.1 | Limpieza periodica |  | 1d? | 2026-06-24 | 2026-06-24 |  | 2026-06-22 | 2026-06-22 | 1d? | 2026-06-22 | 2026-06-22 | 565d | Mariana V | 8h | 9.01 |  |  |  |
| 366 | 1.3.7.9.2 | Limpieza final |  | 4d | 2027-09-30 | 2027-10-05 | 247 | 2027-09-30 | 2027-10-05 | 4d | 2027-09-30 | 2027-10-05 | 244d | Mariana V | 32h | 9.02 |  |  |  |
| 367 | 1.3.7.10 | **VARIOS** |  | 15d | 2027-09-06 | 2027-09-24 |  | 2027-09-06 | 2027-09-24 | 15d | 2027-09-06 | 2027-09-24 | 0d |  | 120h | 10 |  |  |  |
| 368 | 1.3.7.10.1 | Muebles |  | 10d | 2027-09-06 | 2027-09-17 | 363FS+15d | 2027-09-06 | 2027-09-17 | 10d | 2027-09-06 | 2027-09-17 | 0d | Mariana V | 80h |  |  | Externo | Seguimiento |
| 369 | 1.3.7.10.2 | Mesadas |  | 5d | 2027-09-20 | 2027-09-24 | 368 | 2027-09-20 | 2027-09-24 | 5d | 2027-09-20 | 2027-09-24 | 0d | Mariana V | 40h |  |  | Externo | Seguimiento |
| 370 | 1.4 | Firma Acta recepcion Provisoria | milestone | 0d | 2027-09-29 | 2027-09-29 | 247 | 2027-09-29 | 2027-09-29 |  | 2027-09-29 | 2027-09-29 | 0d | Mariana V |  |  |  |  |  |
| 371 | 1.5 | Posventa |  | 12emo | 2027-09-29 | 2028-09-23 | 370 | 2027-09-29 | 2028-09-23 | 12emo | 2027-09-29 | 2028-09-23 | 0d | Posventa | 8640h |  |  |  |  |
