# Vivienda Giaveno - Remodelación

Schedule from MS Project XML, 2024-09-30 to 2026-02-04, A marks actual dates.

## Calendars

- Calendario Argentino 2024: Mon-Fri 09:00-13:00, 15:00-19:00; Sat-Sun off. Exceptions (off unless hours are given): 2024-10-11 (Feriado con fines turísticos), 2024-11-18 (Día de la Soberanía Nacional (20/11)), 2024-12-25 to 2033-12-25 (Navidad, recurring), 2025-01-01 to 2034-01-01 (Año nuevo 2025, recurring), 2025-02-10 to 2034-02-10 (Carnaval 2025, recurring), 2025-03-24 to 2034-03-24 (Día Nacional de la Memoria por la Verdad y la Justicia, recurring), 2025-03-28 (Viernes Santo), 2025-04-02 to 2034-04-02 (Día del Veterano y de los Caídos en la Guerra de Malvinas, recurring), 2025-05-01 to 2034-05-01 (Día del Trabajador, recurring), 2025-05-25 to 2034-05-25 (Dia de la revolucion de Mayo, recurring), 2025-06-20 to 2034-06-20 (Día de la Bandera, recurring), 2025-07-09 to 2034-07-09 (Día de la Independencia, recurring), 2025-08-18 to 2034-08-18 (Paso a la Inmortalidad del Gral. José de San Martín (17/08), recurring), 2025-10-13 to 2034-10-13 (Día del Respeto a la Diversidad Cultural (12/10), recurring), 2025-11-18 to 2034-11-18 (Día de la Soberanía Nacional (20/11), recurring), 2025-12-08 to 2034-12-08 (Día de la Virgen, recurring).

## Resources

| Resource |
| --- |
| Gabriela Rojo |
| Posventa |
| Proyectos |
| Julian Steib |
| Alexandra Arevalo |

## Schedule

| ID | WBS | Task | Type | Duration | Start | Finish | Predecessors | Complete | Baseline start | Baseline finish | Baseline duration | Baseline 1 start | Baseline 1 finish | Constraint | Deadline | Resources | Work | Actual work |
| --- | --- | --- | --- | --- | --- | --- | --- | --- | --- | --- | --- | --- | --- | --- | --- | --- | --- | --- |
| 1 | 1 | **Vivienda GIAVENO CAÑUELAS** |  | 330d | 2024-09-30 A | 2026-02-04 A |  | 100% |  |  |  | 2024-09-30 | 2025-09-18 |  |  |  | 4304h | 4304h |
| 2 | 1.1 | **REMODELACIÓN Interior- VIVIENDA GIAVENO-CAÑUELAS** |  | 330d | 2024-09-30 A | 2026-02-04 A |  | 100% | 2024-09-30 | 2025-03-03 | 100d | 2024-09-30 | 2025-08-08 |  |  |  | 2816h | 2816h |
| 3 | 1.1.1 | ✔Gestion Remodelacion Vivienda Giaveno-Cañuelas |  | 22d | 2024-09-30 A | 2024-10-30 A |  | 100% | 2024-09-30 | 2024-10-30 | 22d | 2024-09-30 | 2024-10-30 |  |  | Gabriela Rojo | 176h | 176h |
| 4 | 1.1.2 | ✔Obra Remodelación - Vivienda Giaveno-Cañuelas |  | 180d | 2024-10-31 A | 2025-07-09 A | 3 | 100% | 2024-10-31 | 2025-01-30 | 66d | 2024-10-31 | 2025-07-09 |  |  | Julian Steib | 1440h | 1440h |
| 5 | 1.1.3 | ✔Fin de Obra Interior | milestone | 0d | 2025-07-09 A | 2025-07-09 A | 4 | 100% | 2025-01-30 | 2025-01-30 |  | 2025-07-09 | 2025-07-09 |  | 2025-02-13 | Julian Steib |  |  |
| 6 | 1.1.4 | Postventa Pasiva |  | 150d | 2025-07-10 A | 2026-02-04 A | 4 | 100% | 2025-01-31 | 2025-03-03 | 22d | 2025-07-10 | 2025-08-08 |  |  | Posventa | 1200h | 1200h |
| 7 | 1.2 | **REMODELACIÓN Exterior- VIVIENDA GIAVENO-CAÑUELAS** |  | 178d | 2025-05-20 A | 2026-02-03 A |  | 100% | 2024-09-30 | 2025-03-03 | 100d | 2025-05-20 | 2025-09-18 |  |  |  | 1488h | 1488h |
| 8 | 1.2.1 | ✔Obra Exterior Remodelación - Vivienda Giaveno-Cañuelas |  | 66d | 2025-05-20 A | 2025-08-19 A |  | 100% | 2024-10-31 | 2025-01-30 | 66d | 2025-05-20 | 2025-08-19 | start no earlier than 2025-05-20 |  | Julian Steib | 528h | 528h |
| 9 | 1.2.2 | ✔Fin de Obra Exterior | milestone | 0d | 2025-08-19 A | 2025-08-19 A | 8 | 100% | 2025-01-30 | 2025-01-30 |  | 2025-08-19 | 2025-08-19 |  | 2025-02-13 | Julian Steib |  |  |
| 10 | 1.2.3 | Postventa Pasiva |  | 120d | 2025-08-20 A | 2026-02-03 A | 8 | 100% | 2025-01-31 | 2025-03-03 | 22d | 2025-08-20 | 2025-09-18 |  |  | Posventa | 960h | 960h |
