# Vivienda Potrerillo Fernando Arzola

Schedule from MS Project XML, 2024-11-01 to 2026-07-10, A marks actual dates.

## Calendars

- Calendario Argentino 2024: Mon-Fri 09:00-13:00, 15:00-19:00; Sat-Sun off. Exceptions (off unless hours are given): 2024-11-18 (Día de la Soberanía Nacional (20/11)), 2024-12-25 to 2033-12-25 (Navidad, recurring), 2025-01-01 to 2034-01-01 (Año nuevo 2025, recurring), 2025-02-10 to 2034-02-10 (Carnaval 2025, recurring), 2025-03-24 to 2034-03-24 (Día Nacional de la Memoria por la Verdad y la Justicia, recurring), 2025-03-28 (Viernes Santo), 2025-04-02 to 2034-04-02 (Día del Veterano y de los Caídos en la Guerra de Malvinas, recurring), 2025-05-01 to 2034-05-01 (Día del Trabajador, recurring), 2025-05-25 to 2034-05-25 (Dia de la revolucion de Mayo, recurring), 2025-06-20 to 2034-06-20 (Día de la Bandera, recurring), 2025-07-09 to 2034-07-09 (Día de la Independencia, recurring), 2025-08-18 to 2034-08-18 (Paso a la Inmortalidad del Gral. José de San Martín (17/08), recurring), 2025-10-13 to 2034-10-13 (Día del Respeto a la Diversidad Cultural (12/10), recurring), 2025-11-18 to 2034-11-18 (Día de la Soberanía Nacional (20/11), recurring), 2025-12-08 to 2034-12-08 (Día de la Virgen, recurring).

## Resources

| Resource |
| --- |
| Gabriela Rojo |
| Obras |
| Posventa |
| Proyectos |

## Schedule

| ID | WBS | Task | Type | Duration | Start | Finish | Predecessors | Complete | Baseline start | Baseline finish | Baseline duration | Baseline 1 start | Baseline 1 finish | Constraint | Resources | Work | Actual work |
| --- | --- | --- | --- | --- | --- | --- | --- | --- | --- | --- | --- | --- | --- | --- | --- | --- | --- |
| 1 | 1 | **VIVIENDA POTRERILLO FERNANDO ARZOLA** |  | 413d | 2024-11-01 A | 2026-07-10 A |  | 100% | 2024-11-01 | 2028-07-24 | 924d | 2024-11-01 | 2028-02-08 |  |  | 1392h | 1392h |
| 2 | 1.1 | **✔Presupuestación Proyecto y Obra Vivienda** |  | 4d | 2024-11-01 A | 2024-11-06 A |  | 100% | 2024-11-01 | 2024-11-06 | 4d | 2024-11-01 | 2024-11-06 |  |  | 32h | 32h |
| 3 | 1.1.1 | ✔Presupuestacion Proyecto |  | 4d | 2024-11-01 A | 2024-11-06 A |  | 100% | 2024-11-01 | 2024-11-06 | 4d | 2024-11-01 | 2024-11-06 | start no earlier than 2024-11-01 | Proyectos | 32h | 32h |
| 4 | 1.1.2 | ✔Aceptación Cliente | milestone | 0d | 2024-11-06 A | 2024-11-06 A | 3 | 100% | 2024-11-06 | 2024-11-06 |  | 2024-11-06 | 2024-11-06 |  | Proyectos |  |  |
| 5 | 1.2 | **✔Proyecto Vivienda** |  | 33d | 2024-11-07 A | 2025-01-03 A |  | 100% | 2024-11-07 | 2025-01-03 | 33d | 2024-11-07 | 2025-01-03 |  |  | 288h | 288h |
| 6 | 1.2.1 | **✔Diseño Vivienda F. Arzola Potrerillo** |  | 33d | 2024-11-07 A | 2025-01-03 A |  | 100% | 2024-11-07 | 2025-01-03 | 33d | 2024-11-07 | 2025-01-03 |  |  | 288h | 288h |
| 7 | 1.2.1.1 | ✔Fase 1 Diseño Conceptual |  | 10d | 2024-11-07 A | 2024-11-20 A | 4 | 100% | 2024-11-07 | 2024-11-20 | 10d | 2024-11-07 | 2024-11-20 |  | Proyectos | 80h | 80h |
| 8 | 1.2.1.2 | ✔Validacion Cliente |  | 2d | 2024-11-21 A | 2024-11-22 A | 7 | 100% | 2024-11-21 | 2024-11-22 | 2d | 2024-11-21 | 2024-11-22 |  | Gabriela Rojo | 16h | 16h |
| 9 | 1.2.1.3 | ✔Fase 2 Diseño conceptual |  | 10d | 2024-11-25 A | 2024-12-06 A | 8 | 100% | 2024-11-25 | 2024-12-06 | 10d | 2024-11-25 | 2024-12-06 |  | Proyectos | 80h | 80h |
| 10 | 1.2.1.4 | ✔Validación Cliente |  | 2d | 2024-12-09 A | 2024-12-10 A | 9 | 100% | 2024-12-09 | 2024-12-10 | 2d | 2024-12-09 | 2024-12-10 |  | Gabriela Rojo | 16h | 16h |
| 11 | 1.2.1.5 | ✔Fase 3 - Diseño Final |  | 10d | 2024-12-11 A | 2024-12-24 A | 10 | 100% | 2024-12-11 | 2024-12-24 | 10d | 2024-12-11 | 2024-12-24 |  | Proyectos | 80h | 80h |
| 12 | 1.2.1.6 | ✔Validación Cliente |  | 2d | 2025-01-02 A | 2025-01-03 A | 11 | 100% | 2025-01-02 | 2025-01-03 | 2d | 2025-01-02 | 2025-01-03 |  | Gabriela Rojo | 16h | 16h |
| 13 | 1.2.1.7 | ✔Plano Apto Gestiones y Licitación | milestone | 0d | 2025-01-03 A | 2025-01-03 A | 12 | 100% | 2025-01-03 | 2025-01-03 |  | 2025-01-03 | 2025-01-03 |  | Proyectos |  |  |
| 14 | 1.3 | ✔StandBy por definición de Cliente |  | 113d | 2025-01-06 A | 2025-06-18 A | 13 | 100% | 2025-01-03 | 2025-12-29 | 1080d | 2025-01-06 | 2025-06-18 |  |  |  |  |
| 15 | 1.4 | **Presupuesto y Contratación de obra** |  | 133d | 2025-01-06 A | 2025-07-18 A | 14 | 100% | 2025-12-30 | 2026-02-05 | 27d | 2025-06-19 | 2025-08-22 |  |  | 840h | 840h |
| 16 | 1.4.1 | Computo Métrico General |  | 12d | 2025-06-19 A | 2025-07-04 A | 12 | 100% | 2025-12-30 | 2026-01-14 | 12d | 2025-06-19 | 2025-07-04 |  | Proyectos | 96h | 96h |
| 17 | 1.4.2 | Cotización de Mano de Obra |  | 12d | 2025-06-19 A | 2025-07-04 A | 12 | 100% | 2025-12-30 | 2026-01-14 | 12d | 2025-06-19 | 2025-07-04 |  | Proyectos | 96h | 96h |
| 18 | 1.4.3 | Cotizacion de Honorarios Empresa | milestone | 0d | 2025-07-04 A | 2025-07-04 A | 16, 17 | 100% | 2026-01-14 | 2026-01-14 |  | 2025-07-04 | 2025-07-04 |  | Proyectos |  |  |
| 19 | 1.4.4 | Cancelado - Contratación Mano de Obra |  | 10d | 2025-07-07 A | 2025-07-18 A | 17 | 100% | 2026-01-15 | 2026-01-28 | 10d | 2025-07-07 | 2025-07-18 |  | Proyectos | 80h | 80h |
| 20 | 1.4.5 | **Cancelado - Gestion Vivienda F. Arzola Potrerillo** |  | 44d | 2025-01-06 A | 2025-03-07 A |  | 100% | 2025-12-30 | 2026-02-05 | 27d | 2025-06-19 | 2025-08-22 |  |  | 568h | 568h |
| 21 | 1.4.5.1 | Gestiones CAPC |  | 22d | 2025-01-06 A | 2025-02-04 A | 13 | 100% | 2025-12-30 | 2026-01-13 | 10d | 2025-06-19 | 2025-07-22 |  | Gabriela Rojo | 176h | 176h |
| 22 | 1.4.5.2 | Gestiones municipales |  | 22d | 2025-02-05 A | 2025-03-07 A | 21 | 100% | 2026-01-14 | 2026-01-27 | 10d | 2025-07-23 | 2025-08-22 |  | Gabriela Rojo | 176h | 176h |
| 23 | 1.4.5.3 | Gestiones de personal. |  | 10d | 2025-02-24 A | 2025-03-07 A | 22FF | 100% | 2026-01-14 | 2026-01-27 | 10d | 2025-08-08 | 2025-08-22 |  | Gabriela Rojo | 80h | 80h |
| 24 | 1.4.5.4 | Solicitudes de Servicios |  | 17d | 2025-02-05 A | 2025-02-27 A | 21 | 100% | 2026-01-14 | 2026-02-05 | 17d | 2025-07-23 | 2025-08-14 |  | Proyectos | 136h | 136h |

| ID | WBS | Task | Type | Duration | Start | Finish | Predecessors | Complete | Actual finish | Baseline start | Baseline finish | Baseline duration | Baseline 1 start | Baseline 1 finish | Resources | Work | Actual work |
| --- | --- | --- | --- | --- | --- | --- | --- | --- | --- | --- | --- | --- | --- | --- | --- | --- | --- |
| 25 | 1.5 | **Armado de Documetación Y Compra materiales Para inicio de Obra** |  | 21d | 2025-07-07 A | 2025-08-05 A |  | 100% |  | 2026-01-15 | 2026-02-13 | 21d | 2025-07-07 | 2025-08-05 |  | 232h | 232h |
| 26 | 1.5.1 | Armado de documentación Apto para Contrucción |  | 22d | 2025-07-07 A | 2025-08-05 A | 18 | 100% |  | 2026-01-15 | 2026-02-13 | 22d | 2025-07-07 | 2025-08-05 | Proyectos | 176h | 176h |
| 27 | 1.5.2 | Confeccion de presupuestos para materiales y Acopio |  | 7d | 2025-07-07 A | 2025-07-15 A | 18 | 100% |  | 2026-01-15 | 2026-01-23 | 7d | 2025-07-07 | 2025-07-15 | Proyectos | 56h | 56h |
| 28 | 1.6 | **Cancelado - Obra Vivienda F. Arzola Potrerillo** |  | 246d | 2025-07-15 A | 2025-07-15 |  | 100% | 2026-07-10 | 2026-02-05 | 2028-07-24 | 616d | 2025-08-22 | 2028-02-08 |  |  |  |
| 29 | 1.6.1 | Firma Acta Inicio Obra | milestone | 0d | 2025-07-15 A | 2025-07-15 A | 20, 27 | 100% |  | 2026-02-05 | 2026-02-05 |  | 2025-08-22 | 2025-08-22 | Obras |  |  |
| 30 | 1.6.2 | Cancelado - Obra Vivienda | milestone | 0emo | 2025-07-15 A | 2025-07-15 A | 29 | 100% |  | 2026-02-05 | 2027-07-30 | 18emo | 2025-08-22 | 2027-02-13 | Obras |  |  |
| 31 | 1.6.3 | Fin Obra | milestone | 0d | 2025-07-15 A | 2025-07-15 A | 30 | 100% |  | 2027-07-30 | 2027-07-30 |  | 2027-02-13 | 2027-02-13 | Obras |  |  |
| 32 | 1.6.4 | Interiorismo | milestone | 0emo | 2025-07-15 A | 2025-07-15 A | 31FF | 100% |  | 2027-05-31 | 2027-07-30 | 2emo | 2026-12-15 | 2027-02-13 | Obras |  |  |
| 33 | 1.6.5 | Postventa Pasiva | milestone | 0d | 2025-07-15 A | 2025-07-15 A | 30 | 100% |  | 2027-08-02 | 2027-08-31 | 22d | 2027-02-15 | 2027-03-16 | Posventa |  |  |
| 34 | 1.6.6 | Fin Postventa | milestone | 0d | 2025-07-15 A | 2025-07-15 A | 33 | 100% |  | 2027-08-31 | 2027-08-31 |  | 2027-03-16 | 2027-03-16 | Posventa |  |  |
| 35 | 1.6.7 | Firma Acta recepción Provisoria | milestone | 0d | 2025-07-15 A | 2025-07-15 A | 30 | 100% |  | 2027-07-30 | 2027-07-30 |  | 2027-02-13 | 2027-02-13 | Obras |  |  |
| 36 | 1.6.8 | Firma Acta recepcion Definitiva | milestone | 0d | 2026-07-10 A | 2026-07-10 A | 35FS+12emo | 100% |  | 2028-07-24 | 2028-07-24 |  | 2028-02-08 | 2028-02-08 | Posventa |  |  |
