# Vivienda RC

Schedule from MS Project XML, 2025-03-14 to 2026-03-25, A marks actual dates.

## Calendars

- Calendario Argentino 2024: Mon-Fri 09:00-13:00, 15:00-19:00; Sat-Sun off. Exceptions (off unless hours are given): 2024-12-25 to 2033-12-25 (Navidad, recurring), 2025-01-01 to 2034-01-01 (Año nuevo 2025, recurring), 2025-02-10 to 2034-02-10 (Carnaval 2025, recurring), 2025-03-24 to 2034-03-24 (Día Nacional de la Memoria por la Verdad y la Justicia, recurring), 2025-03-28 (Viernes Santo), 2025-04-02 to 2034-04-02 (Día del Veterano y de los Caídos en la Guerra de Malvinas, recurring), 2025-05-01 to 2034-05-01 (Día del Trabajador, recurring), 2025-05-25 to 2034-05-25 (Dia de la revolucion de Mayo, recurring), 2025-06-20 to 2034-06-20 (Día de la Bandera, recurring), 2025-07-09 to 2034-07-09 (Día de la Independencia, recurring), 2025-08-18 to 2034-08-18 (Paso a la Inmortalidad del Gral. José de San Martín (17/08), recurring), 2025-10-13 to 2034-10-13 (Día del Respeto a la Diversidad Cultural (12/10), recurring), 2025-11-18 to 2034-11-18 (Día de la Soberanía Nacional (20/11), recurring), 2025-12-08 to 2034-12-08 (Día de la Virgen, recurring).

## Resources

| Resource |
| --- |
| Gabriela Rojo |
| Julian Steib |
| Posventa |
| Proyectos |
| Alexandra Arevalo |

## Schedule

| ID | WBS | Task | Type | Duration | Start | Finish | Predecessors | Complete | Baseline start | Baseline finish | Baseline duration | Baseline 1 start | Baseline 1 finish | Resources | Work | Actual work |
| --- | --- | --- | --- | --- | --- | --- | --- | --- | --- | --- | --- | --- | --- | --- | --- | --- |
| 1 | 1 | **VIVIENDA ROBERTO CONDE** |  | 255d | 2025-03-14 A | 2026-03-25 A |  | 100% | 2025-03-14 | 2028-10-01 | 887d | 2025-03-14 | 2028-01-30 |  | 3480h | 3480h |
| 2 | 1.1 | **Proyecto Vivienda RC** |  | 255d | 2025-03-14 A | 2026-03-25 A |  | 100% | 2025-03-14 | 2026-03-25 | 255d | 2025-03-14 | 2025-08-13 |  | 3480h | 3480h |
| 3 | 1.1.1 | **✔Presupuestación** |  | 31d | 2025-03-14 A | 2025-04-30 A |  | 100% | 2025-03-14 | 2025-04-30 | 31d | 2025-03-14 | 2025-04-30 |  | 272h | 272h |
| 4 | 1.1.1.1 | ✔Recepción de Legajo | milestone | 0d | 2025-03-14 A | 2025-03-14 A |  | 100% | 2025-03-14 | 2025-03-14 |  | 2025-03-14 | 2025-03-14 | Gabriela Rojo |  |  |
| 5 | 1.1.1.2 | ✔Cómputo Métrico |  | 15d | 2025-03-14 A | 2025-04-03 A | 4 | 100% | 2025-03-14 | 2025-04-03 | 15d | 2025-03-14 | 2025-04-03 | Proyectos | 120h | 120h |
| 6 | 1.1.1.3 | ✔Cotización Mano de Obra |  | 12d | 2025-04-04 A | 2025-04-21 A | 5 | 100% | 2025-04-04 | 2025-04-21 | 12d | 2025-04-04 | 2025-04-21 | Proyectos | 96h | 96h |
| 7 | 1.1.1.4 | ✔Aceptación Obra y Firma de Contrato |  | 7d | 2025-04-22 A | 2025-04-30 A | 6 | 100% | 2025-04-22 | 2025-04-30 | 7d | 2025-04-22 | 2025-04-30 | Proyectos | 56h | 56h |
| 8 | 1.1.2 | **Diseño** |  | 175d | 2025-05-02 A | 2026-01-13 A |  | 100% | 2025-05-02 | 2026-01-13 | 175d | 2025-05-01 | 2025-07-03 |  | 2096h | 2096h |
| 9 | 1.1.2.1 | **✔Diseño Vivienda Roberto Conde** |  | 87d | 2025-05-02 A | 2025-09-04 A | 7 | 100% | 2025-05-02 | 2025-09-04 | 87d | 2025-05-01 | 2025-05-30 | Proyectos | 1392h | 1392h |
| 10 | 1.1.2.1.1 | ✔Fase 1 Diseño Conceptual - Vivienda Roberto Conde |  | 10d | 2025-05-02 A | 2025-05-15 A |  | 100% | 2025-05-02 | 2025-05-15 | 10d | 2025-06-02 | 2025-06-06 | Proyectos | 80h | 80h |
| 11 | 1.1.2.1.2 | ✔Validacion Cliente - Vivienda Roberto Conde |  | 22d | 2025-05-16 A | 2025-06-16 A | 10 | 100% | 2025-05-16 | 2025-06-16 | 22d | 2025-06-09 | 2025-06-10 | Proyectos | 176h | 176h |
| 12 | 1.1.2.1.3 | ✔Fase 2 Diseño conceptual - Vivienda Roberto Conde |  | 11d | 2025-06-17 A | 2025-07-02 A | 11 | 100% | 2025-06-17 | 2025-07-02 | 11d | 2025-06-11 | 2025-06-17 | Proyectos | 88h | 88h |
| 13 | 1.1.2.1.4 | ✔Validación Cliente - Vivienda Roberto Conde |  | 11d | 2025-07-03 A | 2025-07-18 A | 12 | 100% | 2025-07-03 | 2025-07-18 | 11d | 2025-06-18 | 2025-06-19 | Proyectos | 88h | 88h |
| 14 | 1.1.2.1.5 | ✔Fase 3 - Diseño Final - Vivienda Roberto Conde |  | 22d | 2025-07-21 A | 2025-08-20 A | 13 | 100% | 2025-07-21 | 2025-08-20 | 22d | 2025-06-20 | 2025-07-01 | Proyectos | 176h | 176h |
| 15 | 1.1.2.1.6 | ✔Validación Cliente Vivienda Roberto Conde |  | 11d | 2025-08-21 A | 2025-09-04 A | 14 | 100% | 2025-08-21 | 2025-09-04 | 11d | 2025-07-02 | 2025-07-03 | Proyectos | 88h | 88h |
| 16 | 1.1.2.2 | Plano Apto Gestiones y Licitación |  | 88d | 2025-09-05 A | 2026-01-13 A | 9 | 100% | 2025-09-05 | 2026-01-13 | 88d | 2025-07-03 | 2025-07-03 | Proyectos | 704h | 704h |
| 17 | 1.1.3 | **Armado de Documentación y Compra Materiales** |  | 28d | 2026-01-14 A | 2026-02-23 A |  | 100% | 2026-01-14 | 2026-02-23 | 28d | 2025-07-04 | 2025-08-12 |  | 488h | 488h |
| 18 | 1.1.3.1 | Armado de Documentacion - Apto para Gestiones |  | 5d | 2026-01-14 A | 2026-01-20 A | 8 | 100% | 2026-01-14 | 2026-01-20 | 5d | 2025-07-04 | 2025-07-10 | Proyectos | 40h | 40h |
| 19 | 1.1.3.2 | Armado de Documentación - Apto para Construcción |  | 28d | 2026-01-14 A | 2026-02-23 A | 8 | 100% | 2026-01-14 | 2026-02-23 | 28d | 2025-07-04 | 2025-08-12 | Proyectos | 224h | 224h |
| 20 | 1.1.3.3 | Confeccion de presupuestos de materiales y acopios. |  | 28d | 2026-01-14 A | 2026-02-23 A | 8 | 100% | 2026-01-14 | 2026-02-23 | 28d | 2025-07-04 | 2025-08-12 | Proyectos | 224h | 224h |
| 21 | 1.1.4 | **Gestiones** |  | 44d | 2026-01-21 A | 2026-03-25 A | 18 | 100% | 2026-01-21 | 2026-03-25 | 44d | 2025-07-11 | 2025-08-13 |  | 624h | 624h |
| 22 | 1.1.4.1 | Gestiones CAPC |  | 24d | 2026-01-21 A | 2026-02-24 A | 18 | 100% | 2026-01-21 | 2026-02-24 | 24d | 2025-07-11 | 2025-08-13 | Gabriela Rojo | 192h | 192h |
| 23 | 1.1.4.2 | Gestiones Municipales |  | 44d | 2026-01-21 A | 2026-03-25 A | 18 | 100% | 2026-01-21 | 2026-03-25 | 44d | 2025-07-11 | 2025-08-13 | Gabriela Rojo | 352h | 352h |
| 24 | 1.1.4.3 | Gestiones de Personal |  | 10d | 2026-03-11 A | 2026-03-25 A | 23FF | 100% | 2026-03-11 | 2026-03-25 | 10d | 2025-07-31 | 2025-08-13 | Gabriela Rojo | 80h | 80h |
| 25 | 1.2 | Suspensión por decision de cliente | milestone | 0d | 2026-03-25 A | 2026-03-25 A | 2 | 100% |  |  |  |  |  |  |  |  |
