# Vivienda Venturelli - Bernal

Schedule from MS Project XML, 2026-06-01 to 2028-01-09, A marks actual dates.

## Calendars

- Calendario Argentino 2024: Mon-Fri 09:00-13:00, 15:00-19:00; Sat-Sun off. Exceptions (off unless hours are given): 2024-12-25 to 2033-12-25 (Navidad, recurring), 2025-01-01 to 2034-01-01 (Año nuevo 2025, recurring), 2025-02-10 to 2034-02-10 (Carnaval 2025, recurring), 2025-03-24 to 2034-03-24 (Día Nacional de la Memoria por la Verdad y la Justicia, recurring), 2025-04-02 to 2034-04-02 (Día del Veterano y de los Caídos en la Guerra de Malvinas, recurring), 2025-05-01 to 2034-05-01 (Día del Trabajador, recurring), 2025-05-25 to 2034-05-25 (Dia de la revolucion de Mayo, recurring), 2025-06-20 to 2034-06-20 (Día de la Bandera, recurring), 2025-07-09 to 2034-07-09 (Día de la Independencia, recurring), 2025-08-18 to 2034-08-18 (Paso a la Inmortalidad del Gral. José de San Martín (17/08), recurring), 2025-10-13 to 2034-10-13 (Día del Respeto a la Diversidad Cultural (12/10), recurring), 2025-11-18 to 2034-11-18 (Día de la Soberanía Nacional (20/11), recurring), 2025-12-08 to 2034-12-08 (Día de la Virgen, recurring).

## Resources

| Resource |
| --- |
| Gabriela Rojo |
| Posventa |
| Proyectos |
| Mariana V |

## Schedule

| ID | WBS | Task | Type | Duration | Start | Finish | Predecessors | Complete | Remaining | Total slack | Free slack | Constraint | Resources | Work | Actual work |
| --- | --- | --- | --- | --- | --- | --- | --- | --- | --- | --- | --- | --- | --- | --- | --- |
| 1 | 1 | **Vivienda Venturelli - Bernal** |  | 404d? | 2026-06-01 A | 2028-01-09 |  | 1% | 399.41d? | 0d |  |  |  | 13460h | 154.4h |
| 2 | 1.1 | Obra Vivienda Venturelli - Bernal Contratada |  | 210d | 2026-06-01 | 2027-04-01 | 4SS |  |  | 0d |  | must start on 2026-06-01 | Gabriela Rojo | 1680h |  |
| 3 | 1.2 | Obra Vivienda Venturelli - Bernal | milestone | 0d | 2026-06-01 A | 2026-06-01 A | 4FF | 100% |  |  |  |  |  |  |  |
| 4 | 1.3 | **OBRA VIVIENDA VENTURELLI - BERNAL** |  | 156.4d? | 2026-06-01 A | 2027-01-14 |  | 5% | 148.99d? | 247.6d | 0d |  |  | 3140h | 154.4h |
| 5 | 1.3.1 | **TAREAS PRELIMINARES** |  | 4.5d | 2026-06-01 A | 2026-06-05 A |  | 100% |  |  |  |  |  | 76h | 76h |
| 6 | 1.3.1.1 | Estudio de Suelos |  | 3d | 2026-06-01 A | 2026-06-03 A |  | 100% |  |  |  | start no earlier than 2026-06-01 | Mariana V | 24h | 24h |
| 7 | 1.3.1.2 | Calculo Estructural |  | 3d | 2026-06-01 A | 2026-06-03 A |  | 100% |  |  |  | start no earlier than 2026-06-01 | Mariana V | 24h | 24h |
| 8 | 1.3.1.3 | Cerco Perimetral |  | 2d | 2026-06-02 A | 2026-06-03 A |  | 100% |  |  |  |  | Mariana V | 16h | 16h |
| 9 | 1.3.1.4 | Replanteo de Obra |  | 1.5d | 2026-06-04 A | 2026-06-05 A | 13 | 100% |  |  |  | start no earlier than 2026-04-27 | Mariana V | 12h | 12h |
| 10 | 1.3.2 | **CONFORMACIÓN DE TERRENO** |  | 58.4d | 2026-06-02 A | 2026-08-25 |  | 36% | 37.54d | 325.6d |  |  |  | 80h | 40h |
| 11 | 1.3.2.1 | Extracción de árboles |  | 2d | 2026-06-02 A | 2026-06-03 A |  | 100% |  |  |  | start no earlier than 2026-06-02 | Mariana V | 16h | 16h |
| 12 | 1.3.2.2 | Demora por clima |  | 4d | 2026-06-04 | 2026-06-09 | 11 |  |  | 0d |  |  |  |  |  |
| 13 | 1.3.2.3 | Excavación terreno |  | 3d | 2026-06-10 A | 2026-06-12 A | 12 | 100% |  |  |  |  | Mariana V | 24h | 24h |
| 14 | 1.3.2.4 | Relleno de terreno |  | 5d | 2026-08-17 | 2026-08-25 | 74 |  |  | 325.6d | 0d |  | Mariana V | 40h |  |
| 15 | 1.3.3 | **ESTRUCTURA Y ALBAÑILERIA** |  | 151.9d | 2026-06-05 A | 2027-01-14 |  | 1% | 149.98d | 247.6d |  |  |  | 2944h | 38.4h |
| 16 | 1.3.3.1 | **Pilotes de H°** |  | 23.5d | 2026-06-05 A | 2026-07-08 |  | 14% | 20.18d | 376d |  |  |  | 184h | 38.4h |
| 17 | 1.3.3.1.1 | EXCAVACIÓN DE PILOTES* (presupuesto prov. por empresa tercerizada) - 41 pilotes con ensanche mecánico p/ campana |  | 9d | 2026-06-25 | 2026-07-07 | 18 |  |  | 0d |  |  | Mariana V | 72h |  |
| 18 | 1.3.3.1.2 | Demora por conflicto externo con empresa pilotera |  | 11d | 2026-06-10 | 2026-06-24 | 12 |  |  | 0d |  |  |  |  |  |
| 19 | 1.3.3.1.3 | Armadura y llenado de H° |  | 12d | 2026-06-05 A | 2026-06-23 | 9 | 40% | 7.2d | 387.5d |  |  | Mariana V | 96h | 38.4h |
| 20 | 1.3.3.1.4 | Hormigón de pozos |  | 1d | 2026-07-01 | 2026-07-02 | 17SF+6% |  |  | 0d |  |  | Mariana V | 8h |  |
| 21 | 1.3.3.1.5 | Hormigón de pozos 2da etapa |  | 1d | 2026-07-08 | 2026-07-08 | 17 |  |  | 376d |  |  | Mariana V | 8h |  |
| 22 | 1.3.3.2 | **Zapata Continua** |  | 8d | 2026-07-08 | 2026-07-21 |  |  |  | 368.6d |  |  |  | 192h |  |
| 23 | 1.3.3.2.1 | CAB 01 - 60x60 |  | 8d | 2026-07-08 | 2026-07-21 | 28FF |  |  | 368.6d |  |  | Mariana V | 64h |  |
| 24 | 1.3.3.2.2 | CAB 02 - 110x80 |  | 8d | 2026-07-08 | 2026-07-21 | 28FF |  |  | 368.6d |  |  | Mariana V | 64h |  |
| 25 | 1.3.3.2.3 | CAB 03 - 120x80 |  | 8d | 2026-07-08 | 2026-07-21 | 28FF |  |  | 368.6d |  |  | Mariana V | 64h |  |

| ID | WBS | Task | Duration | Start | Finish | Predecessors | Total slack | Resources | Work |
| --- | --- | --- | --- | --- | --- | --- | --- | --- | --- |
| 26 | 1.3.3.3 | **Vigas de Fundación y Riostra** | 13d | 2026-07-02 | 2026-07-22 |  | 0d |  | 264h |
| 27 | 1.3.3.3.1 | Excavación de vigas | 7d | 2026-07-02 | 2026-07-14 | 20 | 0d | Mariana V | 56h |
| 28 | 1.3.3.3.2 | Viga de Fundación - VF1 - (25x40) | 5d | 2026-07-14 | 2026-07-21 | 27 | 0d | Mariana V | 40h |
| 29 | 1.3.3.3.3 | Viga de Fundación - VF2 - (40x25) | 5d | 2026-07-14 | 2026-07-21 | 27 | 368.6d | Mariana V | 40h |
| 30 | 1.3.3.3.4 | Viga de Fundación - VF3 - (60x25) | 5d | 2026-07-14 | 2026-07-21 | 27 | 368.6d | Mariana V | 40h |
| 31 | 1.3.3.3.5 | Viga de Fundación - VF4 - (60x40) | 5d | 2026-07-14 | 2026-07-21 | 27 | 368.6d | Mariana V | 40h |
| 32 | 1.3.3.3.6 | Viga Riostra VR01 (25x25) | 5d | 2026-07-14 | 2026-07-21 | 27 | 368.6d | Mariana V | 40h |
| 33 | 1.3.3.3.7 | Hormigón de riostra | 1d | 2026-07-21 | 2026-07-22 | 28 | 0d | Mariana V | 8h |
| 34 | 1.3.3.4 | **Columnas.** | 5d | 2026-08-13 | 2026-08-21 |  | 346.6d |  | 280h |
| 35 | 1.3.3.4.1 | **Planta Baja** | 5d | 2026-08-13 | 2026-08-21 |  | 346.6d |  | 280h |
| 36 | 1.3.3.4.1.1 | C01 - (0,18x0,25) - 12 unid | 5d | 2026-08-13 | 2026-08-21 | 68 | 346.6d | Mariana V | 40h |
| 37 | 1.3.3.4.1.2 | C02 - (0,18x0,76) - 5 unid | 5d | 2026-08-13 | 2026-08-21 | 68 | 346.6d | Mariana V | 40h |
| 38 | 1.3.3.4.1.3 | C03 - (0,20x0,20) - 26 unid | 5d | 2026-08-13 | 2026-08-21 | 68 | 346.6d | Mariana V | 40h |
| 39 | 1.3.3.4.1.4 | C04 - (0,18x0,38) - 1 unid | 5d | 2026-08-13 | 2026-08-21 | 68 | 346.6d | Mariana V | 40h |
| 40 | 1.3.3.4.1.5 | C05 - (0,18x0,58) - 2 unid | 5d | 2026-08-13 | 2026-08-21 | 68 | 346.6d | Mariana V | 40h |
| 41 | 1.3.3.4.1.6 | C06 - (0,27x0,20) - 2 unid | 5d | 2026-08-13 | 2026-08-21 | 68 | 346.6d | Mariana V | 40h |
| 42 | 1.3.3.4.1.7 | C07 - (0,40x0,40) - 2 unid | 5d | 2026-08-13 | 2026-08-21 | 68 | 346.6d | Mariana V | 40h |
| 43 | 1.3.3.5 | **Encadenado Vertical** | 5d | 2026-08-13 | 2026-08-21 |  | 346.6d |  | 40h |
| 44 | 1.3.3.5.1 | **Planta Baja** | 5d | 2026-08-13 | 2026-08-21 |  | 346.6d |  | 40h |
| 45 | 1.3.3.5.1.1 | CE1 - (0,18x0,18) - 52 unid | 5d | 2026-08-13 | 2026-08-21 | 68 | 346.6d | Mariana V | 40h |
| 46 | 1.3.3.6 | **Encadenado Horizontal** | 5d | 2026-08-13 | 2026-08-21 |  | 346.6d |  | 120h |
| 47 | 1.3.3.6.1 | **Planta Baja** | 5d | 2026-08-13 | 2026-08-21 |  | 346.6d |  | 120h |
| 48 | 1.3.3.6.1.1 | VE - (0,18x0,20) | 5d | 2026-08-13 | 2026-08-21 | 68 | 346.6d | Mariana V | 40h |
| 49 | 1.3.3.6.1.2 | VE2 - (0,20x0,20) | 5d | 2026-08-13 | 2026-08-21 | 68 | 346.6d | Mariana V | 40h |
| 50 | 1.3.3.6.1.3 | VE3 - (0,20x0,30) | 5d | 2026-08-13 | 2026-08-21 | 68 | 346.6d | Mariana V | 40h |

| ID | WBS | Task | Duration | Start | Finish | Predecessors | Total slack | Free slack | Resources | Work |
| --- | --- | --- | --- | --- | --- | --- | --- | --- | --- | --- |
| 51 | 1.3.3.7 | **Vigas Estructurales** | 34d | 2026-09-08 | 2026-10-27 |  | 0d |  |  | 136h |
| 52 | 1.3.3.7.1 | **Planta Baja** | 5d | 2026-09-08 | 2026-09-15 |  | 0d |  |  | 120h |
| 53 | 1.3.3.7.1.1 | Vigas estructurales - (18x15),(18x21),(18x25),(18x36),(18x40),(18x46),(18x50),(18x54),(18x54),(18x60),(18x68),(18x74) | 5d | 2026-09-08 | 2026-09-15 | 69 | 0d |  | Mariana V | 40h |
| 54 | 1.3.3.7.1.2 | Vigas estructurales - (20x110),(20x150) | 5d | 2026-09-08 | 2026-09-15 | 69 | 329.6d |  | Mariana V | 40h |
| 55 | 1.3.3.7.1.3 | Vigas estructurales - (27x21),(29x110),(38x20),(50x21) | 5d | 2026-09-08 | 2026-09-15 | 69 | 329.6d |  | Mariana V | 40h |
| 56 | 1.3.3.7.2 | **Planta Tanque** | 2d | 2026-10-23 | 2026-10-27 |  | 300.6d |  |  | 16h |
| 57 | 1.3.3.7.2.1 | Viga estructural - (18x30) | 2d | 2026-10-23 | 2026-10-27 | 70 | 300.6d |  | Mariana V | 16h |
| 58 | 1.3.3.8 | **Losas** | 42d | 2026-09-15 | 2026-11-13 |  | 0d |  |  | 576h |
| 59 | 1.3.3.8.1 | Losa Vigueta Simple - 21 cm | 21d | 2026-09-15 | 2026-10-15 | 53 | 308.6d |  | Mariana V | 168h |
| 60 | 1.3.3.8.2 | Losa Maciza - 10 cm | 21d | 2026-09-15 | 2026-10-15 | 53 | 308.6d |  | Mariana V | 168h |
| 61 | 1.3.3.8.3 | Losa Maciza - 15 cm | 21d | 2026-09-15 | 2026-10-15 | 53 | 0d |  | Mariana V | 168h |
| 62 | 1.3.3.8.4 | Hormigón de losas | 1d | 2026-10-15 | 2026-10-16 | 61 | 0d |  | Mariana V | 8h |
| 63 | 1.3.3.8.5 | Desencofrados y devoluciones de equipo | 5d | 2026-11-06 | 2026-11-13 | 62SF+21d | 287.6d |  | Mariana V | 40h |
| 64 | 1.3.3.8.6 | Losa Vigueta Simple - 21 cm - Tanque | 3d | 2026-10-23 | 2026-10-28 | 70 | 299.6d |  | Mariana V | 24h |
| 65 | 1.3.3.9 | **Mampostería** | 65d | 2026-07-22 | 2026-10-23 |  | 0d |  |  | 256h |
| 66 | 1.3.3.9.1 | Mampostería de fundación | 3d | 2026-07-22 | 2026-07-27 | 33 | 0d |  | Mariana V | 24h |
| 67 | 1.3.3.9.2 | Mamposteria Ladrillo Hueco no Portante 08x18x33 PB | 1d | 2026-08-10 | 2026-08-11 | 72 | 353.6d |  | Mariana V | 8h |
| 68 | 1.3.3.9.3 | Mamposteria Ladrillo Hueco Portante 12x18x33 PB | 3d | 2026-08-10 | 2026-08-13 | 72 | 346.6d | 0d | Mariana V | 24h |
| 69 | 1.3.3.9.4 | Mamposteria Ladrillo Hueco Portante 18x18x33 PB | 20d | 2026-08-10 | 2026-09-08 | 72 | 0d |  | Mariana V | 160h |
| 70 | 1.3.3.9.5 | Parapetos + tanque | 5d | 2026-10-16 | 2026-10-23 | 62 | 0d |  | Mariana V | 40h |
| 71 | 1.3.3.10 | **Tabique de Contención** | 10d | 2026-07-27 | 2026-08-10 |  | 0d |  |  | 80h |
| 72 | 1.3.3.10.1 | Muro de contención: Muro Bloque H° armado + llenado de hormigón - esp:20cm | 10d | 2026-07-27 | 2026-08-10 | 66 | 0d |  | Mariana V | 80h |
| 73 | 1.3.3.11 | **Aislación en Muros y Contrapiso** | 101d | 2026-08-10 | 2027-01-06 |  | 253.6d |  |  | 160h |
| 74 | 1.3.3.11.1 | Capa Aisladora Horizontal Mampostería | 5d | 2026-08-10 | 2026-08-17 | 72 | 325.6d | 0d | Mariana V | 40h |
| 75 | 1.3.3.11.2 | Capa Aisladora Horizontal sobre Contrapiso | 2d | 2026-09-01 | 2026-09-03 | 80 | 325.6d | 0d | Mariana V | 16h |
| 76 | 1.3.3.11.3 | Capa Aisladora Vertical Mampostería - H: 50cm | 5d | 2026-08-10 | 2026-08-17 | 72 | 349.6d |  | Mariana V | 40h |
| 77 | 1.3.3.11.4 | Capa Aisladora Vertical en muro de piedra - Monotop | 8d | 2026-12-23 | 2027-01-06 | 89 | 253.6d |  | Mariana V | 64h |

| ID | WBS | Task | Duration | Start | Finish | Predecessors | Total slack | Free slack | Constraint | Resources | Work |
| --- | --- | --- | --- | --- | --- | --- | --- | --- | --- | --- | --- |
| 78 | 1.3.3.12 | **Contrapiso** | 19d | 2026-08-25 | 2026-09-21 |  | 325.6d |  |  |  | 136h |
| 79 | 1.3.3.12.1 | Hormigón p/contrapiso Interior Casa e=10cm (PB) | 12d | 2026-09-03 | 2026-09-21 | 75 | 325.6d |  |  | Mariana V | 96h |
| 80 | 1.3.3.12.2 | Contrapiso 020 | 5d | 2026-08-25 | 2026-09-01 | 14 | 325.6d | 0d |  | Mariana V | 40h |
| 81 | 1.3.3.13 | **Carpeta de Nivelación** | 44d | 2026-11-09 | 2027-01-14 |  | 0d |  |  |  | 104h |
| 82 | 1.3.3.13.1 | Carpeta de Nivelación Interior Casa e=4cm (PB) | 8d | 2027-01-04 | 2027-01-14 | 94 | 0d |  |  | Mariana V | 64h |
| 83 | 1.3.3.13.2 | Carpeta de Nivelación de Cubierta Casa e= 4 cm | 5d | 2026-11-09 | 2026-11-16 | 86 | 0d |  |  | Mariana V | 40h |
| 84 | 1.3.3.14 | **Cubierta** | 21d | 2026-10-23 | 2026-11-24 |  | 0d |  |  |  | 128h |
| 85 | 1.3.3.14.1 | Base de Pintura Asfaltica. | 1d | 2026-10-23 | 2026-10-26 | 70 | 0d |  |  | Mariana V | 8h |
| 86 | 1.3.3.14.2 | Cubierta común sobre Losa con perlas de Telgopor - Hormigón de Pendiente - 10 cm | 10d | 2026-10-26 | 2026-11-09 | 85 | 0d |  |  | Mariana V | 80h |
| 87 | 1.3.3.14.3 | Impermeabilización en cubierta Casa* (con parapeto-h:20cm) | 5d | 2026-11-16 | 2026-11-24 | 83 | 281.6d |  |  | Mariana V | 40h |
| 88 | 1.3.3.15 | **Azotado Hidrófugo + Revoque Grueso exterior** | 15d | 2026-12-01 | 2026-12-23 |  | 0d |  |  |  | 120h |
| 89 | 1.3.3.15.1 | Revoque c/ azotado hidrof. cementicio en mamp. | 15d | 2026-12-01 | 2026-12-23 | 91 | 0d |  |  | Mariana V | 120h |
| 90 | 1.3.3.16 | **Azotado Cementicio Interior** | 10d | 2026-11-16 | 2026-12-01 |  | 0d |  |  |  | 80h |
| 91 | 1.3.3.16.1 | Azotado Cementicio Interior | 10d | 2026-11-16 | 2026-12-01 | 83 | 0d |  |  | Mariana V | 80h |
| 92 | 1.3.3.17 | **Escaleras** | 6d | 2026-12-23 | 2027-01-04 |  | 0d |  |  |  | 48h |
| 93 | 1.3.3.17.1 | Escalera Int. de Hormigon in situ - ancho: 1,60m | 3d | 2026-12-23 | 2026-12-29 | 89 | 0d |  |  | Mariana V | 24h |
| 94 | 1.3.3.17.2 | Escalera Int. de Hormigon in situ - ancho 1,35m | 3d | 2026-12-29 | 2027-01-04 | 93 | 0d |  |  | Mariana V | 24h |
| 95 | 1.3.3.18 | **Asador** | 5d | 2026-08-13 | 2026-08-21 |  | 346.6d |  |  |  | 40h |
| 96 | 1.3.3.18.1 | Asador (1,70 m de largo) | 5d | 2026-08-13 | 2026-08-21 | 68 | 346.6d |  |  | Mariana V | 40h |
| 97 | 1.3.4 | **CARPINTERIAS** | 130.4d? | 2026-06-01 | 2026-12-04 |  | 273.6d |  |  |  | 40h |
| 98 | 1.3.4.1 | **Aberturas** | 130.4d? | 2026-06-01 | 2026-12-04 |  | 273.6d |  |  |  | 40h |
| 99 | 1.3.4.1.1 | Colocación de premarcos | 3d | 2026-12-01 | 2026-12-04 | 91 | 273.6d |  |  | Mariana V | 24h |
| 100 | 1.3.4.1.2 | Puertas de madera* | 1d? | 2026-06-01 | 2026-06-01 |  | 403d |  | start no earlier than 2026-06-01 | Mariana V | 8h |
| 101 | 1.3.4.1.3 | Aberturas de aluminio* | 1d? | 2026-06-01 | 2026-06-01 |  | 403d |  | start no earlier than 2026-06-01 | Mariana V | 8h |

| ID | WBS | Task | Type | Duration | Start | Finish | Predecessors | Baseline 1 start | Baseline 1 finish | Total slack | Constraint | Resources | Work |
| --- | --- | --- | --- | --- | --- | --- | --- | --- | --- | --- | --- | --- | --- |
| 102 | 1.3.5 | **VARIOS** |  | 0d | 2026-06-01 | 2026-06-01 |  |  |  | 404d |  |  |  |
| 103 | 1.3.5.1 | Muebles | milestone | 0d | 2026-06-01 | 2026-06-01 |  |  |  | 404d | start no earlier than 2026-06-01 | Mariana V |  |
| 104 | 1.3.5.2 | Mesadas | milestone | 0d | 2026-06-01 | 2026-06-01 |  |  |  | 404d | start no earlier than 2026-06-01 | Mariana V |  |
| 105 | 1.4 | Firma Acta recepcion Provisoria | milestone | 0d | 2027-01-14 | 2027-01-14 | 82 | 2027-02-04 | 2027-02-04 | 0d |  | Mariana V |  |
| 106 | 1.5 | Posventa |  | 12emo | 2027-01-14 | 2028-01-09 | 105 | 2027-02-04 | 2028-01-30 | 0d |  | Posventa | 8640h |
